# HRM Detail Plan

How a schedule from MS Project changed from version to version. A marks actual dates.

## Version 1 (data date 2012-03-09, saved 2012-03-09)

Note of the change: Update plan

| ID | WBS | Task | Duration | Start | Finish | Predecessors | Complete | Total float | Constraint |
| --- | --- | --- | --- | --- | --- | --- | --- | --- | --- |
| 1 | 1 | **Human Resource Management** | 125.75d? | 2011-09-27 A | 2012-05-01 |  | 1% | 0d |  |
| 2 |  | Kick off meeting | 0d | 2011-09-27 | 2011-09-27 |  |  | 57.25d | start no earlier than 2011-09-27 |
| 3 | 1.2 | **Project Management** | 68.5d? | 2011-09-27 A | 2012-01-21 | 2 |  | 57.25d |  |
| 4 | 1.2.1 | **Start Up** | 68.5d? | 2011-09-27 A | 2012-01-21 |  |  | 57.25d |  |
| 5 | 1.2.1.1 | **Research process** | 35.75d? | 2011-09-27 A | 2011-11-25 |  |  | 87.94d |  |
| 6 |  | Requirement Process | 3d? | 2011-09-27 | 2011-10-01 |  |  | 120.19d | finish no earlier than 2011-10-01 |
| 7 |  | Architect process | 3d? | 2011-09-27 A | 2011-10-01 | 6SS |  | 120.19d | finish no earlier than 2011-10-01 |
| 8 |  | Detail design process | 3d? | 2011-09-27 | 2011-10-01 | 6SS |  | 120.19d | finish no earlier than 2011-10-01 |
| 9 |  | Testing process | 3d? | 2011-09-27 | 2011-10-01 | 6SS |  | 106.81d | start no earlier than 2011-09-27 |
| 10 |  | Risk management | 3d? | 2011-09-27 | 2011-10-01 | 6SS |  | 109.06d | finish no earlier than 2011-10-01 |
| 11 |  | Measurement management | 3d? | 2011-11-16 | 2011-11-22 | 10 |  | 82.56d | start no earlier than 2011-11-16 |
| 12 |  | Change management | 1.5d? | 2011-11-23 | 2011-11-25 | 11 |  | 81.81d | start no earlier than 2011-11-23 |
| 13 | 1.2.1.2 | **Develop Project Plan** | 62.25d? | 2011-10-01 | 2012-01-17 |  |  | 60d |  |
| 14 |  | Requirement Process | 4d? | 2011-10-02 | 2011-10-05 | 6 |  | 120.19d | start no earlier than 2011-10-02 |
| 15 |  | Architect process | 4d? | 2011-10-01 | 2011-10-05 | 7 |  | 120.19d |  |
| 16 |  | Detail design process | 4d? | 2011-10-02 | 2011-10-05 | 8 |  | 120.19d | start no earlier than 2011-10-02 |
| 17 |  | Testing process | 2d? | 2011-10-04 | 2011-10-05 | 9 |  | 120.44d | finish no earlier than 2011-10-05 |
| 18 |  | Risk management | 1.94d? | 2011-11-26 | 2011-11-27 | 12 |  | 81.75d | start no earlier than 2011-11-26 |
| 19 |  | Measurement management | 8d? | 2012-01-03 | 2012-01-10 | 18 |  | 61.69d | finish no earlier than 2012-01-10 |
| 20 |  | Change management | 1d? | 2012-01-17 | 2012-01-17 | 19 |  | 58.44d | finish no earlier than 2012-01-17 |
| 21 |  | Develop Detail Plan | 3.25d | 2012-01-18 | 2012-01-21 | 20 |  | 57.25d | finish no earlier than 2012-01-21 |
| 22 | 1.3 | **Requirement Analysis** | 65.75d? | 2011-09-27 | 2012-01-17 | 2 |  | 60d |  |
| 23 |  | Elicitate requirement | 2.81d? | 2011-09-27 | 2011-09-30 |  |  | 66.06d | start no earlier than 2011-09-27 |
| 24 |  | Analysis requirement | 3d? | 2011-10-01 | 2011-10-06 | 23 |  | 66.06d | finish no earlier than 2011-10-06 |
| 25 | 1.3.3 | **Develop Concept of Operation** | 25.06d? | 2011-10-01 | 2011-11-13 |  |  | 91.25d |  |
| 26 | 1.3.3.1 | **Document ConsOpt( Draft version)** | 13.12d? | 2011-10-01 | 2011-10-25 |  |  | 106.81d |  |
| 27 |  | Introduction | 8d? | 2011-10-07 | 2011-10-14 | 24 |  | 111.44d | finish no earlier than 2011-10-14 |
| 28 |  | Current system | 8d? | 2011-10-07 | 2011-10-14 |  |  | 109.75d | start no earlier than 2011-10-07 |
| 29 |  | Reason for improvement | 4d? | 2011-10-15 | 2011-10-18 | 28 |  | 109.75d | finish no earlier than 2011-10-18 |
| 30 | 1.3.3.1.4 | **System future** | 7.31d? | 2011-10-01 | 2011-10-14 |  |  | 104.19d |  |
| 31 |  | Information Catgegories | 6d? | 2011-10-07 | 2011-10-12 | 24 |  | 104d | finish no earlier than 2011-10-12 |
| 32 |  | Processes | 1d? | 2011-10-13 | 2011-10-13 | 31 |  | 104.25d |  |
| 33 |  | Processes: Mô hình phân rã chức năng hồ sơ nhân sự | 1d? | 2011-10-14 | 2011-10-14 | 32 |  | 104d |  |
| 34 |  | Scenario | 2d? | 2011-10-01 | 2011-10-03 | 9 |  | 106.81d |  |
| 35 |  | Effect | 2d? | 2011-10-15 | 2011-10-16 | 27 |  | 111.5d | finish no earlier than 2011-10-16 |
| 36 |  | Analysis system future | 18.75d? | 2011-10-07 | 2011-10-25 | 24 |  | 109d |  |
| 37 |  | Review | 9.5d? | 2011-10-15 | 2011-11-01 | 30 |  | 104.19d | finish no earlier than 2011-10-18 |
| 38 |  | Send Concept Operation to customer | 0d | 2011-11-10 | 2011-11-10 |  |  | 68.44d | start no earlier than 2011-11-10 |
| 39 | 1.3.3.4 | **Update ConsOpt** | 2.25d? | 2011-11-10 | 2011-11-13 |  |  | 68.44d |  |
| 40 |  | Update Information Catgegories | 2d? | 2011-11-10 | 2011-11-13 | 38 |  | 97.19d |  |
| 41 |  | Update Processes | 2d? | 2011-11-10 | 2011-11-13 | 38 |  | 68.44d |  |
| 42 | 1.3.4 | **Develop SRS** | 60.44d? | 2011-10-06 | 2012-01-17 |  |  | 60d |  |
| 43 | 1.3.4.1 | **Document Software Requirement Specification (Draft version)** | 51.69d? | 2011-10-06 | 2012-01-01 |  |  | 68.75d |  |
| 44 | 1.3.4.1.1 | **Develop use case specification** | 11d? | 2011-10-06 | 2011-10-25 |  |  | 106.5d |  |
| 45 |  | Draw use cases | 2.75d? | 2011-10-19 | 2011-10-23 | 29 |  | 109.75d | finish no earlier than 2011-10-23 |
| 46 |  | Draw activity diagram for use cases | 2d? | 2011-10-21 | 2011-10-25 | 35 |  | 109.44d | start no earlier than 2011-10-21 |
| 47 |  | Descripe use case | 1d? | 2011-10-06 | 2011-10-07 | 34 |  | 106.25d | start no earlier than 2011-10-06 |
| 48 |  | Develop interfaces | 17.5d? | 2011-11-29 | 2012-01-01 | 41 |  | 60d | start no earlier than 2011-11-29 |
| 49 |  | Review | 8d? | 2011-10-07 | 2011-10-23 | 47 |  | 106.25d |  |
| 50 |  | Update SRS | 1d? | 2011-10-23 | 2011-10-25 | 49 |  | 106.5d |  |
| 51 |  | Software Requirement Specification (Final version) | 4.75d? | 2011-10-28 | 2011-11-01 | 50 |  | 104d | finish no earlier than 2011-11-01 |
| 52 |  | Upadate interfaces | 7.75d? | 2012-01-03 | 2012-01-17 | 48 |  | 60d | finish no earlier than 2012-01-17 |
| 53 | 1.4 | **Architect Design Analysis** | 50.19d? | 2011-10-07 | 2011-12-31 |  |  | 61.25d |  |
| 54 | 1.4.1 | **Develop architecture driver document (ADD)** | 20d? | 2011-10-07 | 2011-11-09 |  |  | 61.5d |  |
| 55 |  | Discover architecture drivers | 8.69d | 2011-10-07 | 2011-10-23 | 24 |  | 66.06d | finish no earlier than 2011-10-23 |
| 56 |  | Document ADD(Draft version) | 0d | 2011-10-31 | 2011-10-31 | 55 |  | 61.31d | finish no earlier than 2011-10-31 |
| 57 |  | Review | 0d | 2011-10-31 | 2011-10-31 | 56 |  | 61.31d | finish no earlier than 2011-10-27 |
| 58 |  | Document ADD(Final version) | 9d? | 2011-11-01 | 2011-11-09 | 57 |  | 61.31d | finish no earlier than 2011-11-05 |
| 59 | 1.4.2 | **Develop architecture design** | 30.19d | 2011-11-10 | 2011-12-31 |  |  | 61.25d |  |
| 60 |  | Research about new pattern | 6.25d | 2011-11-10 | 2011-11-22 | 58 |  | 61.5d | finish no earlier than 2011-11-13 |
| 61 |  | Document AD (Draft version) | 3.5d | 2011-11-22 | 2011-11-29 | 60 |  | 61.5d | finish no earlier than 2011-11-13 |
| 62 |  | Review | 3.5d | 2011-11-29 | 2011-12-06 | 61 |  | 61.5d | finish no earlier than 2011-11-20 |
| 63 |  | Document AD (Final version) | 13.19d | 2011-12-06 | 2011-12-31 | 62 |  | 61.25d | finish no earlier than 2011-12-31 |
| 64 | 1.5 | **Detail Design Analysis** | 40d | 2011-12-25 | 2012-03-03 |  |  | 33.25d |  |
| 65 |  | Design Database | 7d | 2012-01-01 | 2012-01-14 | 63 |  | 61.25d | start no earlier than 2011-11-17 |
| 66 | 1.5.2 | **Analysis** | 20.5d | 2011-12-25 | 2012-01-29 |  |  | 36.5d |  |
| 67 |  | Design class diagram | 9d | 2011-12-25 | 2012-01-12 |  |  | 36.5d | start no earlier than 2011-12-25 |
| 68 |  | Design sequence diagram | 9d | 2012-01-12 | 2012-01-29 | 67 |  | 36.5d | start no earlier than 2012-01-03 |
| 69 | 1.5.3 | **SDS(Draft version)** | 15d | 2012-01-31 | 2012-02-25 |  |  | 36.5d |  |
| 70 |  | Class diagram | 9d | 2012-01-31 | 2012-02-17 | 68 |  | 36.5d | finish no earlier than 2012-02-01 |

| ID | WBS | Task | Duration | Start | Finish | Predecessors | Complete | Total float | Constraint |
| --- | --- | --- | --- | --- | --- | --- | --- | --- | --- |
| 71 |  | Sequence diagram | 4d | 2012-02-17 | 2012-02-25 | 70 |  | 36.5d | start no earlier than 2012-02-17 |
| 72 |  | Review | 1.25d | 2012-02-26 | 2012-02-28 | 71 |  | 36d | finish no earlier than 2012-02-28 |
| 73 |  | SDS(Final version) | 0d | 2012-03-03 | 2012-03-03 | 72 |  | 33.25d | finish no earlier than 2012-03-03 |
| 74 | 1.6 | **Programming** | 92.75d? | 2011-11-10 A | 2012-04-20 |  | 2% | 6.44d |  |
| 75 | 1.6.1 | **Training** | 92.75d? | 2011-11-10 A | 2012-04-20 |  | 2% | 6.44d |  |
| 76 |  | ID generate | 18d? | 2011-11-10 | 2011-12-15 |  |  | 78.69d | finish no earlier than 2011-12-15 |
| 77 |  | Programming: Manage Catalog | 7.5d? | 2012-01-07 | 2012-01-14 |  |  | 61.19d | finish no earlier than 2012-01-14 |
| 78 | 1.6.1.3 | **Programming** | 32.81d? | 2012-02-29 A | 2012-04-20 |  | 2% | 7.44d |  |
| 79 | 1.6.1.3.1 | **Programming: Quản lý nhân lực** | 32.81d? | 2012-02-29 A | 2012-04-20 |  | 3% | 7.44d |  |
| 80 | 1.6.1.3.1.1 | **Programming: Overview Information** | 29.31d? | 2012-03-06 A | 2012-04-20 |  |  | 7.44d |  |
| 81 |  | Programming: Employee | 14d? | 2012-03-06 A | 2012-04-01 |  |  | 18.75d | finish no earlier than 2012-04-01 |
| 82 |  | Programming: Staff History | 4d? | 2012-03-21 | 2012-03-28 | 91 |  | 21.75d | start no earlier than 2012-03-21 |
| 83 |  | Programming: Family Relationship Management | 3.5d? | 2012-03-06 A | 2012-03-11 |  |  | 21.5d | finish no earlier than 2012-03-12 |
| 84 |  | Programming: Supported People Management | 3.5d? | 2012-03-06 A | 2012-03-11 |  |  | 22.25d | finish no earlier than 2012-03-12 |
| 85 |  | Programming: Certificate Management | 22.06d? | 2012-03-07 | 2012-04-20 | 117 |  | 7.44d | finish no earlier than 2012-04-12 |
| 86 | 1.6.1.3.1.2 | **Programming: Expand Information** | 18.75d? | 2012-02-29 A | 2012-03-28 |  | 4% | 21.5d |  |
| 87 | 1.6.1.3.1.2.1 | **Programming: Quản lý đào tạo** | 10.75d? | 2012-03-13 | 2012-03-28 |  |  | 21.5d |  |
| 88 | 1.6.1.3.1.2.1.1 | **Programming: Quản lý đào tạo bên ngoài** | 10.75d? | 2012-03-13 | 2012-03-28 |  |  | 21.5d |  |
| 89 |  | Programming: Traning Course Information | 4.25d? | 2012-03-13 | 2012-03-20 | 83 |  | 21.5d | finish no earlier than 2012-03-20 |
| 90 |  | Programming: Training Result Information | 4.25d? | 2012-03-21 | 2012-03-28 | 100 |  | 21.5d | finish no earlier than 2012-03-28 |
| 91 |  | Programming: Quản lý đào tạo nội bộ | 4d? | 2012-03-13 | 2012-03-20 | 84 |  | 22.25d | finish no earlier than 2012-03-19 |
| 92 | 1.6.1.3.1.2.2 | **Programming: Quản lý quá trình công tác** | 5.25d? | 2012-03-21 | 2012-03-28 |  |  | 21.5d |  |
| 93 |  | Programming: Task Management | 4.25d? | 2012-03-21 | 2012-03-28 | 89 |  | 21.5d | finish no earlier than 2012-03-28 |
| 94 |  | Programming: Appoint Management | 3.75d? | 2012-03-21 | 2012-03-28 | 101 |  | 22d | start no earlier than 2012-03-21 |
| 95 | 1.6.1.3.1.2.3 | **Programming: Hoạt động khoa học - Công nghệ** | 9.5d? | 2012-03-06 A | 2012-03-20 |  |  | 27.25d |  |
| 96 |  | Programming: Subject Management | 3.5d? | 2012-03-06 A | 2012-03-11 |  |  | 21.75d | start no earlier than 2012-03-06 |
| 97 |  | Programming: Article Management | 3.5d? | 2012-03-06 A | 2012-03-11 |  |  | 21.75d | start no earlier than 2012-03-06 |
| 98 |  | Programming: Syllabus Management | 3.5d? | 2012-03-06 A | 2012-03-11 |  |  | 22.5d | start no earlier than 2012-03-06 |
| 99 |  | Programming: Product Management | 4d? | 2012-03-13 | 2012-03-20 | 97 |  | 27.25d | finish no earlier than 2012-03-19 |
| 100 |  | Programming: Master Thesis Guideline | 4d? | 2012-03-13 | 2012-03-20 | 97 |  | 22d | finish no earlier than 2012-03-19 |
| 101 |  | Programming: Science Research Guideline Of Student | 4d? | 2012-03-13 | 2012-03-20 | 98 |  | 22.5d | finish no earlier than 2012-03-19 |
| 102 | 1.6.1.3.1.2.4 | **Programming: Khen thưởng - Kỷ luật - Danh hiệu thi đua** | 5d? | 2012-03-13 | 2012-03-20 |  |  | 22d |  |
| 103 |  | Programming: RewardManagement | 4d? | 2012-03-13 | 2012-03-20 | 113 |  | 22d | finish no earlier than 2012-03-19 |
| 104 |  | Programming: Penalty Management | 4d? | 2012-03-13 | 2012-03-20 | 113 |  | 27.25d | finish no earlier than 2012-03-19 |
| 105 |  | Programming: Awarded Title Management | 4d? | 2012-03-13 | 2012-03-20 | 84 |  | 27.25d | finish no earlier than 2012-03-19 |
| 106 | 1.6.1.3.1.2.5 | **Programming: Quản lý tập sự/Thử việc** | 5.25d? | 2012-03-13 | 2012-03-20 |  |  | 27d |  |
| 107 |  | Programming: Lecturer Probation Management | 4.25d? | 2012-03-13 | 2012-03-20 | 83 |  | 27d | finish no earlier than 2012-03-20 |
| 108 |  | Programming: Staff Internship Management | 4.25d? | 2012-03-13 | 2012-03-20 | 98 |  | 27d | finish no earlier than 2012-03-20 |
| 109 |  | Programming: Income Management | 4.25d? | 2012-03-21 | 2012-03-28 | 111 |  | 21.5d | finish no earlier than 2012-03-28 |
| 110 |  | Programming: Professor Position Management | 4.25d? | 2012-03-21 | 2012-03-28 | 103 |  | 21.5d | start no earlier than 2012-03-21 |
| 111 |  | Programming: Facilitate Management | 4d? | 2012-03-13 | 2012-03-20 | 96 |  | 22d | finish no earlier than 2012-03-19 |
| 112 | 1.6.1.3.1.2.9 | **Programming: Quản lý công tác Đoàn Thể** | 12.5d? | 2012-02-29 A | 2012-03-19 |  | 36% | 17.25d |  |
| 113 |  | Programming: Communist Party Management | 6.25d? | 2012-02-29 | 2012-03-11 |  |  | 21.75d | start no earlier than 2012-02-29 |
| 114 |  | Programming: Union Management | 1.5d? | 2012-03-06 A | 2012-03-08 A |  | 100% |  | start no earlier than 2012-03-06 |
| 115 |  | Programming: Trade Union Management | 2d? | 2012-03-08 A | 2012-03-19 A | 114 | 100% |  | finish no earlier than 2012-03-19 |
| 116 | 1.6.1.3.2 | **Programming: Quản trị hệ thống** | 2.19d? | 2012-03-03 | 2012-03-06 |  |  | 7.44d |  |
| 117 |  | Programming: Employee Code Setting | 1.94d? | 2012-03-03 | 2012-03-06 |  |  | 7.44d | finish no earlier than 2012-03-06 |
| 118 |  | PROGRAMMING: Report | 8.5d? | 2012-04-03 | 2012-04-15 |  |  | 9.75d | finish no earlier than 2012-04-15 |
| 119 |  | Conduct Unit testing | 1.25d? | 2012-04-01 | 2012-04-03 |  |  | 0.5d | finish no earlier than 2012-04-03 |
| 120 |  | Intergration | 1.5d? | 2012-04-04 | 2012-04-06 | 119 |  | 0.5d | finish no earlier than 2012-04-06 |
| 121 | 1.7 | **Testing** | 20.81d? | 2012-03-11 | 2012-04-13 |  |  | 11.94d |  |
| 122 | 1.7.1 | **Design test case** | 20.81d? | 2012-03-11 | 2012-04-13 |  |  | 11.94d |  |
| 123 |  | Acceptance test case | 4d? | 2012-03-11 | 2012-03-18 |  |  | 11.94d | finish no earlier than 2012-03-18 |
| 124 |  | System test case | 10.62d? | 2012-03-20 | 2012-04-10 | 123 |  | 12.19d | finish no earlier than 2012-03-14 |
| 125 |  | Integration test case | 1.69d? | 2012-04-10 | 2012-04-13 | 124 |  | 11.94d | finish no earlier than 2012-04-01 |
| 126 |  | Unit test case | 0d? | 2012-04-13 | 2012-04-13 | 125 |  | 11.94d | finish no earlier than 2012-03-29 |
| 127 | 1.7.2 | **Conduct test case** | 3.25d? | 2012-04-07 | 2012-04-11 |  |  | 0.5d |  |
| 128 |  | Integration test case | 1.25d? | 2012-04-07 | 2012-04-08 | 120 |  | 0.5d | finish no earlier than 2012-04-08 |
| 129 |  | System test case | 0.75d? | 2012-04-10 | 2012-04-10 | 128 |  | 0.5d | finish no earlier than 2012-03-06 |
| 130 |  | Acceptance test case | 0.75d? | 2012-04-11 | 2012-04-11 | 129 |  | 0.5d | finish no earlier than 2012-03-06 |
| 131 |  | Rework | 4.25d? | 2012-04-13 | 2012-04-20 | 130 |  | 0.5d | finish no earlier than 2012-04-20 |
| 132 |  | Deployment | 1.31d? | 2012-04-21 | 2012-04-24 | 131 |  | 0.5d | finish no earlier than 2012-03-07 |
| 133 |  | Deliver to customer | 2.94d? | 2012-04-24 | 2012-04-30 | 132 |  | 0d | finish no earlier than 2012-04-30 |
| 134 |  | Maintaining | 0.75d? | 2012-05-01 | 2012-05-01 | 133 |  | 0d | finish no earlier than 2012-03-06 |

## Version 2 (data date 2012-03-09, saved 2012-03-13)

Last finish 2012-05-01 → 2012-05-04 (+3d). Complete tasks 2 → 50.

Changed:

| ID | Task | Start | Finish | Duration | Complete | Total float | Other |
| --- | --- | --- | --- | --- | --- | --- | --- |
| 1 | **Human Resource Management** |  | 2012-05-01 → 2012-05-04 (+3d) | 125.75d? → 111.19d? | 1% → 69% |  |  |
| 3 | **Project Management** |  | 2012-01-21 → 2012-01-25 A (+4d) | 68.5d? → 60.81d? | 0% → 100% | 57.25d → none |  |
| 4 | **Start Up** |  | 2012-01-21 → 2012-01-25 A (+4d) | 68.5d? → 60.81d? | 0% → 100% | 57.25d → none |  |
| 5 | **Research process** |  | 2011-11-25 A | 35.75d? → 30.81d? | 0% → 100% | 87.94d → none |  |
| 6 | Requirement Process | 2011-09-27 A | 2011-10-01 A |  | 0% → 100% | 120.19d → none |  |
| 7 | Architect process |  | 2011-10-01 A |  | 0% → 100% | 120.19d → none |  |
| 8 | Detail design process | 2011-09-27 A | 2011-10-01 A |  | 0% → 100% | 120.19d → none |  |
| 9 | Testing process | 2011-09-27 A | 2011-10-01 A |  | 0% → 100% | 106.81d → none |  |
| 10 | Risk management | 2011-09-27 A | 2011-10-01 A |  | 0% → 100% | 109.06d → none |  |
| 11 | Measurement management | 2011-11-16 A | 2011-11-22 A |  | 0% → 100% | 82.56d → none |  |
| 12 | Change management | 2011-11-23 A | 2011-11-25 A | 1.5d? → 1.56d? | 0% → 100% | 81.81d → none |  |
| 13 | **Develop Project Plan** | 2011-10-01 → 2011-10-04 A (+3d) | 2012-01-17 A | 62.25d? → 53.25d? | 0% → 100% | 60d → none |  |
| 14 | Requirement Process | 2011-10-02 → 2011-10-04 A (+2d) | 2011-10-05 → 2011-10-06 A (+1d) | 4d? → 1.81d? | 0% → 100% | 120.19d → none | constraint start no earlier than 2011-10-02 → finish no earlier than 2011-10-05 |
| 15 | Architect process | 2011-10-01 → 2011-10-04 A (+3d) | 2011-10-05 → 2011-10-06 A (+1d) | 4d? → 1.81d? | 0% → 100% | 120.19d → none | constraint none → finish no earlier than 2011-10-05 |
| 16 | Detail design process | 2011-10-02 → 2011-10-04 A (+2d) | 2011-10-05 → 2011-10-06 A (+1d) | 4d? → 1.81d? | 0% → 100% | 120.19d → none | constraint start no earlier than 2011-10-02 → finish no earlier than 2011-10-05 |
| 17 | Testing process | 2011-10-04 A | 2011-10-05 → 2011-10-06 A (+1d) | 2d? → 1.81d? | 0% → 100% | 120.44d → none |  |
| 18 | Risk management | 2011-11-26 A | 2011-11-27 → 2011-12-01 A (+4d) | 1.94d? → 2.5d? | 0% → 100% | 81.75d → none |  |
| 19 | Measurement management | 2012-01-03 → 2011-12-22 A (-12d) | 2012-01-10 A |  | 0% → 100% | 61.69d → none |  |
| 20 | Change management | 2012-01-17 → 2012-01-14 A (-3d) | 2012-01-17 A |  | 0% → 100% | 58.44d → none |  |
| 21 | Develop Detail Plan | 2012-01-18 A | 2012-01-21 → 2012-01-25 A (+4d) | 3.25d → 3.31d | 0% → 100% | 57.25d → none |  |
| 22 | **Requirement Analysis** | 2011-09-27 A | 2012-01-17 A | 65.75d? → 56.75d? | 0% → 100% | 60d → none |  |
| 23 | Elicitate requirement | 2011-09-27 A | 2011-09-30 A |  | 0% → 100% | 66.06d → none |  |
| 24 | Analysis requirement | 2011-10-01 A | 2011-10-06 → 2011-10-07 A (+1d) |  | 0% → 100% | 66.06d → none |  |
| 25 | **Develop Concept of Operation** | 2011-10-01 → 2011-10-04 A (+3d) | 2011-11-13 → 2011-12-08 A (+25d) | 25.06d? → 33.56d? | 0% → 100% | 91.25d → none |  |
| 26 | **Document ConsOpt( Draft version)** | 2011-10-01 → 2011-10-04 A (+3d) | 2011-10-25 → 2011-11-16 A (+22d) | 13.12d? → 22.31d? | 0% → 100% | 106.81d → none |  |
| 27 | Introduction | 2011-10-07 → 2011-10-08 A (+1d) | 2011-10-14 → 2011-10-18 A (+4d) | 8d? → 4.44d? | 0% → 100% | 111.44d → none | constraint finish no earlier than 2011-10-14 → start no earlier than 2011-10-07 |
| 28 | Current system | 2011-10-07 → 2011-10-06 A (-1d) | 2011-10-14 A | 8d? → 4d? | 0% → 100% | 109.75d → none | constraint start no earlier than 2011-10-07 → finish no earlier than 2011-10-14 |
| 29 | Reason for improvement | 2011-10-15 A | 2011-10-18 → 2011-10-20 A (+2d) | 4d? → 2.5d? | 0% → 100% | 109.75d → none | constraint finish no earlier than 2011-10-18 → start no earlier than 2011-10-15 |
| 30 | **System future** | 2011-10-01 → 2011-10-04 A (+3d) | 2011-10-14 → 2011-11-16 A (+33d) | 7.31d? → 22.31d? | 0% → 100% | 104.19d → none |  |
| 31 | Information Catgegories | 2011-10-07 → 2011-10-08 A (+1d) | 2011-10-12 → 2011-10-14 A (+2d) | 6d? → 3d? | 0% → 100% | 104d → none | constraint finish no earlier than 2011-10-12 → start no earlier than 2011-10-07 |
| 32 | Processes | 2011-10-13 → 2011-10-14 A (+1d) | 2011-10-13 → 2011-10-16 A (+3d) | 1d? → 3d? | 0% → 100% | 104.25d → none | resources Nhung → Dang [50%] |
| 33 | Processes: Mô hình phân rã chức năng hồ sơ nhân sự | 2011-10-14 → 2011-10-18 A (+4d) | 2011-10-14 → 2011-11-16 A (+33d) | 1d? → 13.06d? | 0% → 100% | 104d → none | constraint none → finish no earlier than 2011-11-09 |
| 34 | Scenario | 2011-10-01 → 2011-10-04 A (+3d) | 2011-10-03 → 2011-10-07 A (+4d) | 2d? → 2.31d? | 0% → 100% | 106.81d → none | constraint none → finish no earlier than 2011-10-06 |
| 35 | Effect | 2011-10-15 → 2011-10-19 A (+4d) | 2011-10-16 → 2011-10-22 A (+6d) | 2d? → 2.25d? | 0% → 100% | 111.5d → none |  |
| 36 | Analysis system future | 2011-10-07 → 2011-10-25 A (+18d) | 2011-10-25 A | 18.75d? → 0d? | 0% → 100% | 109d → none | constraint none → finish no earlier than 2011-10-25 |
| 37 | Review | 2011-10-15 → 2011-11-16 A (+32d) | 2011-11-01 → 2011-12-08 A (+37d) | 9.5d? → 10.06d? | 0% → 100% | 104.19d → none |  |
| 38 | Send Concept Operation to customer | 2011-11-10 A | 2011-11-10 A | 0d → 0.75d | 0% → 100% | 68.44d → none |  |
| 39 | **Update ConsOpt** | 2011-11-10 → 2011-11-11 A (+1d) | 2011-11-13 → 2011-11-16 A (+3d) | 2.25d? → 2.5d? | 0% → 100% | 68.44d → none |  |
| 40 | Update Information Catgegories | 2011-11-10 → 2011-11-11 A (+1d) | 2011-11-13 → 2011-11-16 A (+3d) | 2d? → 2.25d? | 0% → 100% | 97.19d → none |  |
| 41 | Update Processes | 2011-11-10 → 2011-11-11 A (+1d) | 2011-11-13 → 2011-11-16 A (+3d) | 2d? → 2.25d? | 0% → 100% | 68.44d → none |  |
| 42 | **Develop SRS** | 2011-10-06 → 2011-10-08 A (+2d) | 2012-01-17 A | 60.44d? → 50.44d? | 0% → 100% | 60d → none |  |
| 43 | **Document Software Requirement Specification (Draft version)** | 2011-10-06 → 2011-10-08 A (+2d) | 2012-01-01 → 2012-01-07 A (+6d) | 51.69d? → 46.19d? | 0% → 100% | 68.75d → none |  |
| 44 | **Develop use case specification** | 2011-10-06 → 2011-10-08 A (+2d) | 2011-10-25 → 2011-10-28 A (+3d) | 11d? → 10.5d? | 0% → 100% | 106.5d → none |  |
| 45 | Draw use cases | 2011-10-19 → 2011-10-21 A (+2d) | 2011-10-23 → 2011-10-27 A (+4d) | 2.75d? → 3d? | 0% → 100% | 109.75d → none |  |
| 46 | Draw activity diagram for use cases | 2011-10-21 → 2011-10-25 A (+4d) | 2011-10-25 → 2011-10-28 A (+3d) | 2d? → 2.31d? | 0% → 100% | 109.44d → none |  |
| 47 | Descripe use case | 2011-10-06 → 2011-10-08 A (+2d) | 2011-10-07 → 2011-10-11 A (+4d) | 1d? → 1.44d? | 0% → 100% | 106.25d → none |  |
| 48 | Develop interfaces | 2011-11-29 A | 2012-01-01 → 2012-01-07 A (+6d) | 17.5d? → 18d? | 0% → 100% | 60d → none |  |
| 49 | Review | 2011-10-07 → 2011-10-11 A (+4d) | 2011-10-23 → 2011-10-28 A (+5d) | 8d? → 8.31d? | 0% → 100% | 106.25d → none |  |
| 50 | Update SRS | 2011-10-23 → 2011-10-29 A (+6d) | 2011-10-25 → 2011-11-01 A (+7d) | 1d? → 1.44d? | 0% → 100% | 106.5d → none |  |
| 51 | Software Requirement Specification (Final version) | 2011-10-28 → 2011-11-01 A (+4d) | 2011-11-01 → 2011-11-06 A (+5d) | 4.75d? → 6d? | 0% → 100% | 104d → none |  |
| 52 | Upadate interfaces | 2012-01-03 → 2012-01-07 A (+4d) | 2012-01-17 A | 7.75d? → 4.44d? | 0% → 100% | 60d → none |  |
| 53 | **Architect Design Analysis** | 2011-10-07 → 2011-10-08 A (+1d) | 2011-12-31 → 2012-01-10 A (+10d) | 50.19d? → 46.94d? | 0% → 100% | 61.25d → none |  |
| 54 | **Develop architecture driver document (ADD)** | 2011-10-07 → 2011-10-08 A (+1d) | 2011-11-09 A | 20d? → 16d? | 0% → 100% | 61.5d → none |  |
| 55 | Discover architecture drivers | 2011-10-07 → 2011-10-08 A (+1d) | 2011-10-23 → 2011-10-28 A (+5d) | 8.69d → 9d | 0% → 100% | 66.06d → none |  |
| 56 | Document ADD(Draft version) | 2011-10-31 A | 2011-10-31 A |  | 0% → 100% | 61.31d → none |  |
| 57 | Review | 2011-10-31 A | 2011-10-31 A |  | 0% → 100% | 61.31d → none |  |
| 58 | Document ADD(Final version) | 2011-11-01 A | 2011-11-09 A |  | 0% → 100% | 61.31d → none |  |
| 59 | **Develop architecture design** | 2011-11-10 A | 2011-12-31 → 2012-01-10 A (+10d) | 30.19d → 30.94d | 0% → 100% | 61.25d → none |  |
| 60 | Research about new pattern | 2011-11-10 A | 2011-11-22 → 2011-11-24 A (+2d) | 6.25d → 6.75d | 0% → 100% | 61.5d → none |  |
| 61 | Document AD (Draft version) | 2011-11-22 → 2011-11-24 A (+2d) | 2011-11-29 → 2011-12-01 A (+2d) | 3.5d → 3.75d | 0% → 100% | 61.5d → none |  |
| 62 | Review | 2011-11-29 → 2011-12-02 A (+3d) | 2011-12-06 → 2011-12-09 A (+3d) |  | 0% → 100% | 61.5d → none |  |
| 63 | Document AD (Final version) | 2011-12-06 → 2011-12-10 A (+4d) | 2011-12-31 → 2012-01-10 A (+10d) | 13.19d → 13.44d | 0% → 100% | 61.25d → none |  |
| 64 | **Detail Design Analysis** | 2011-12-25 → 2011-12-27 A (+2d) | 2012-03-03 → 2012-03-10 (+7d) | 40d → 37.82d | 0% → 99% | 33.25d → 27.87d |  |
| 65 | Design Database | 2012-01-01 → 2012-01-11 A (+10d) | 2012-01-14 → 2012-01-26 (+12d) | 7d → 7.06d | 0% → 99% | 61.25d → 49.62d |  |
| 66 | **Analysis** | 2011-12-25 → 2011-12-27 A (+2d) | 2012-01-29 → 2012-02-04 (+6d) | 20.5d → 21d | 0% → 99% | 36.5d → 44.54d |  |
| 67 | Design class diagram | 2011-12-25 → 2011-12-27 A (+2d) | 2012-01-12 → 2012-01-14 (+2d) |  | 0% → 99% | 36.5d → 54.95d |  |
| 68 | Design sequence diagram | 2012-01-12 → 2012-01-17 A (+5d) | 2012-01-29 → 2012-02-04 (+6d) |  | 0% → 99% | 36.5d → 44.54d |  |
| 69 | **SDS(Draft version)** | 2012-01-31 → 2012-02-07 A (+7d) | 2012-02-25 → 2012-03-07 (+11d) | 15d → 15.31d | 0% → 99% | 36.5d → 29.35d |  |
| 70 | Class diagram | 2012-01-31 → 2012-02-07 A (+7d) | 2012-02-17 → 2012-02-25 (+8d) |  | 0% → 99% | 36.5d → 34.13d |  |
| 71 | Sequence diagram | 2012-02-17 → 2012-02-28 A (+11d) | 2012-02-25 → 2012-03-07 (+11d) | 4d → 4.06d | 0% → 99% | 36.5d → 29.35d |  |

| ID | Task | Start | Finish | Duration | Complete | Total float | Other |
| --- | --- | --- | --- | --- | --- | --- | --- |
| 72 | Review | 2012-02-26 → 2012-03-07 A (+10d) | 2012-02-28 → 2012-03-09 (+10d) | 1.25d → 1.56d | 0% → 99% | 36d → 27.87d |  |
| 73 | SDS(Final version) | 2012-03-03 → 2012-03-09 A (+6d) | 2012-03-03 → 2012-03-10 (+7d) | 0d → 0.5d | 0% → 99% | 33.25d → 27.87d |  |
| 74 | **Programming** |  | 2012-04-20 → 2012-04-07 (-13d) | 92.75d? → 75.69d? | 2% → 48% | 6.44d → 13.19d |  |
| 75 | **Training** |  | 2012-04-20 → 2012-03-03 A (-48d) | 92.75d? → 58.19d? | 2% → 100% | 6.44d → none |  |
| 76 | ID generate | 2011-11-10 A | 2011-12-15 → 2012-03-03 A (+79d) | 18d? → 49.94d? | 0% → 100% | 78.69d → none | constraint finish no earlier than 2011-12-15 → start no earlier than 2011-11-10; resources All → Dang [50%]; Loc; Nguyen; Nhung; Quyet; Tan [50%]; Tung; Tuong |
| 77 | Programming: Manage Catalog | 2012-01-07 → 2011-12-31 A (-7d) | 2012-01-14 → 2012-03-03 A (+49d) | 7.5d? → 64d? | 0% → 100% | 61.19d → none | constraint finish no earlier than 2012-01-14 → finish no earlier than 2012-03-03; resources Tan → Tan [50%] |
| 78 | **Programming** |  | 2012-04-20 → 2012-04-07 (-13d) | 32.81d? → 22.75d? | 2% → 3% | 7.44d → 15d |  |
| 79 | **Programming: Quản lý nhân lực** |  | 2012-04-20 → 2012-04-03 (-17d) | 32.81d? → 19.25d? |  | 7.44d → 18.5d |  |
| 80 | **Programming: Overview Information** |  | 2012-04-20 → 2012-03-31 (-20d) | 29.31d? → 15.75d? |  | 7.44d → 19d |  |
| 81 | Programming: Employee |  | 2012-04-01 → 2012-03-31 (-1d) | 14d? → 12d? |  | 18.75d → 19d | constraint finish no earlier than 2012-04-01 → finish no earlier than 2012-03-31 |
| 82 | Programming: Staff History | 2012-03-21 → 2012-03-23 (+2d) | 2012-03-28 → 2012-03-31 (+3d) |  |  | 21.75d → 19.5d |  |
| 83 | Programming: Family Relationship Management |  | 2012-03-11 → 2012-03-13 (+2d) |  |  | 21.5d → 19d |  |
| 84 | Programming: Supported People Management |  | 2012-03-11 → 2012-03-13 (+2d) |  |  | 22.25d → 19.75d |  |
| 85 | Programming: Certificate Management |  | 2012-04-20 → 2012-03-31 (-20d) | 22.06d? → 11.25d? |  | 7.44d → 19d | constraint finish no earlier than 2012-04-12 → finish no earlier than 2012-03-31 |
| 86 | **Programming: Expand Information** |  | 2012-03-28 → 2012-04-03 (+6d) | 18.75d? → 19.25d? |  | 21.5d → 18.5d |  |
| 87 | **Programming: Quản lý đào tạo** |  | 2012-03-28 → 2012-03-31 (+3d) | 10.75d? → 11d? |  | 21.5d → 19d |  |
| 88 | **Programming: Quản lý đào tạo bên ngoài** |  | 2012-03-28 → 2012-03-31 (+3d) | 10.75d? → 11d? |  | 21.5d → 19d |  |
| 89 | Programming: Traning Course Information |  | 2012-03-20 → 2012-03-23 (+3d) |  |  | 21.5d → 19d |  |
| 90 | Programming: Training Result Information | 2012-03-21 → 2012-03-23 (+2d) | 2012-03-28 → 2012-03-31 (+3d) |  |  | 21.5d → 19.25d |  |
| 91 | Programming: Quản lý đào tạo nội bộ |  | 2012-03-20 → 2012-03-21 (+1d) |  |  | 22.25d → 19.75d |  |
| 92 | **Programming: Quản lý quá trình công tác** | 2012-03-21 → 2012-03-23 (+2d) | 2012-03-28 → 2012-03-31 (+3d) | 5.25d? → 5.75d? |  | 21.5d → 19d |  |
| 93 | Programming: Task Management | 2012-03-21 → 2012-03-23 (+2d) | 2012-03-28 → 2012-03-31 (+3d) |  |  | 21.5d → 19d |  |
| 94 | Programming: Appoint Management | 2012-03-21 → 2012-03-23 (+2d) | 2012-03-28 → 2012-03-30 (+2d) |  |  | 22d → 20d |  |
| 95 | **Programming: Hoạt động khoa học - Công nghệ** |  | 2012-03-20 → 2012-03-21 (+1d) | 9.5d? → 9.75d? |  | 27.25d → 25d |  |
| 96 | Programming: Subject Management |  | 2012-03-11 → 2012-03-13 (+2d) |  |  | 21.75d → 19.25d |  |
| 97 | Programming: Article Management |  | 2012-03-11 → 2012-03-13 (+2d) |  |  | 21.75d → 19.25d |  |
| 98 | Programming: Syllabus Management |  | 2012-03-11 → 2012-03-13 (+2d) |  |  | 22.5d → 20d |  |
| 99 | Programming: Product Management |  | 2012-03-20 → 2012-03-21 (+1d) |  |  | 27.25d → 25d |  |
| 100 | Programming: Master Thesis Guideline |  | 2012-03-20 → 2012-03-21 (+1d) |  |  | 22d → 19.5d |  |
| 101 | Programming: Science Research Guideline Of Student |  | 2012-03-20 → 2012-03-21 (+1d) |  |  | 22.5d → 20d |  |
| 102 | **Programming: Khen thưởng - Kỷ luật - Danh hiệu thi đua** |  | 2012-03-20 → 2012-03-23 (+3d) | 5d? → 6d? |  | 22d → 19.5d |  |
| 103 | Programming: RewardManagement | 2012-03-13 → 2012-03-14 (+1d) | 2012-03-20 → 2012-03-23 (+3d) |  |  | 22d → 18.75d |  |
| 104 | Programming: Penalty Management | 2012-03-13 → 2012-03-14 (+1d) | 2012-03-20 → 2012-03-23 (+3d) |  |  | 27.25d → 24.25d |  |
| 105 | Programming: Awarded Title Management |  | 2012-03-20 → 2012-03-21 (+1d) |  |  | 27.25d → 25d |  |
| 106 | **Programming: Quản lý tập sự/Thử việc** |  | 2012-03-20 → 2012-03-23 (+3d) | 5.25d? → 5.75d? |  | 27d → 24.5d |  |
| 107 | Programming: Lecturer Probation Management |  | 2012-03-20 → 2012-03-23 (+3d) |  |  | 27d → 24.5d |  |
| 108 | Programming: Staff Internship Management |  | 2012-03-20 → 2012-03-23 (+3d) |  |  | 27d → 24.5d |  |
| 109 | Programming: Income Management | 2012-03-21 → 2012-03-23 (+2d) | 2012-03-28 → 2012-03-31 (+3d) |  |  | 21.5d → 19.25d |  |
| 110 | Programming: Professor Position Management | 2012-03-21 → 2012-03-23 (+2d) | 2012-03-28 → 2012-04-03 (+6d) |  |  | 21.5d → 18.5d |  |
| 111 | Programming: Facilitate Management |  | 2012-03-20 → 2012-03-21 (+1d) |  |  | 22d → 19.5d |  |
| 112 | **Programming: Quản lý công tác Đoàn Thể** |  | 2012-03-19 → 2012-03-14 (-5d) | 12.5d? → 8.25d? |  | 17.25d → 18.5d |  |
| 113 | Programming: Communist Party Management |  | 2012-03-11 → 2012-03-14 (+3d) |  |  | 21.75d → 18.5d |  |
| 114 | Programming: Union Management |  | 2012-03-08 A → 2012-03-07 A (-1d) |  |  |  |  |
| 115 | Programming: Trade Union Management |  | 2012-03-19 A → 2012-03-11 A (-8d) |  |  |  |  |
| 116 | **Programming: Quản trị hệ thống** | 2012-03-03 → 2012-03-02 (-1d) |  | 2.19d? → 2.44d? |  | 7.44d → 19d |  |
| 117 | Programming: Employee Code Setting | 2012-03-03 → 2012-03-02 (-1d) |  |  |  | 7.44d → 19d |  |
| 118 | PROGRAMMING: Report | 2012-04-03 → 2012-03-31 (-3d) | 2012-04-15 → 2012-04-07 (-8d) | 8.5d? → 4.25d? |  | 9.75d → 15d | constraint finish no earlier than 2012-04-15 → finish no earlier than 2012-04-07 |
| 119 | Conduct Unit testing | 2012-04-01 → 2012-03-31 (-1d) |  |  |  | 0.5d → 0d |  |
| 121 | **Testing** | 2012-03-11 → 2012-03-09 (-2d) | 2012-04-13 → 2012-04-17 (+4d) | 20.81d? → 21.81d? |  | 11.94d → 10.44d |  |
| 122 | **Design test case** | 2012-03-11 → 2012-03-09 (-2d) | 2012-04-13 → 2012-04-17 (+4d) | 20.81d? → 21.81d? |  | 11.94d → 10.44d |  |
| 123 | Acceptance test case | 2012-03-11 → 2012-03-09 (-2d) |  |  |  | 11.94d → 10.44d |  |
| 124 | System test case |  | 2012-04-10 → 2012-04-13 (+3d) |  |  | 12.19d → 10.44d |  |
| 125 | Integration test case | 2012-04-10 → 2012-04-13 (+3d) | 2012-04-13 → 2012-04-17 (+4d) |  |  | 11.94d → 10.44d |  |
| 126 | Unit test case | 2012-04-13 → 2012-04-17 (+4d) | 2012-04-13 → 2012-04-17 (+4d) |  |  | 11.94d → 10.44d |  |
| 127 | **Conduct test case** |  | 2012-04-11 → 2012-04-13 (+2d) | 3.25d? → 3.5d? |  | 0.5d → 0d |  |
| 128 | Integration test case |  | 2012-04-08 → 2012-04-10 (+2d) |  |  | 0.5d → 0d |  |
| 129 | System test case |  | 2012-04-10 → 2012-04-11 (+1d) |  |  | 0.5d → 0d |  |
| 130 | Acceptance test case |  | 2012-04-11 → 2012-04-13 (+2d) |  |  | 0.5d → 0d |  |
| 131 | Rework |  | 2012-04-20 → 2012-04-24 (+4d) |  |  | 0.5d → 0d |  |
| 132 | Deployment | 2012-04-21 → 2012-04-24 (+3d) | 2012-04-24 → 2012-04-27 (+3d) |  |  | 0.5d → 0d |  |
| 133 | Deliver to customer | 2012-04-24 → 2012-04-27 (+3d) | 2012-04-30 → 2012-05-02 (+2d) |  |  |  |  |
| 134 | Maintaining | 2012-05-01 → 2012-05-04 (+3d) | 2012-05-01 → 2012-05-04 (+3d) |  |  |  |  |

## Version 3 (data date 2012-03-09, saved 2012-04-24)

Note of the change: Update Increment for Project Plan/HRM Detail Plan.mpp

Last finish 2012-05-04 → 2012-05-02 (-2d). Complete tasks 50 → 49.

Added:

| ID | Task | Duration | Start | Finish | Predecessors | Constraint | Resources |
| --- | --- | --- | --- | --- | --- | --- | --- |
| 72 | Test Manage Catalog | 2d | 2012-02-09 | 2012-02-14 | 71 |  | Tung |
| 73 | **Increment 1: Detail Information Management** | 15.75d? | 2012-02-14 | 2012-03-09 |  |  |  |
| 74 | **Detail Information Management** | 7.25d | 2012-02-14 | 2012-02-24 |  |  |  |
| 75 | Design Detail Information Management | 2d | 2012-02-14 | 2012-02-17 | 72 | start no earlier than 2012-02-13 | Dang |
| 76 | Code Detail Information Management | 2d | 2012-02-17 | 2012-02-22 | 75 |  | Tan |
| 77 | Test Detail Information Management | 1d | 2012-02-22 | 2012-02-24 | 76 |  | Nguyen |
| 78 | **Employee Code Setting** | 3d | 2012-02-24 | 2012-02-29 |  |  |  |
| 79 | Design Employee Code Setting | 0.5d | 2012-02-24 | 2012-02-25 | 74 |  | Dang |
| 80 | Code Employee Code Setting | 1d | 2012-02-25 | 2012-02-28 | 76, 79 |  | Tan |
| 81 | Test Employee Code Setting | 0.5d | 2012-02-28 | 2012-02-29 | 80 |  | Nguyen |
| 82 | **Column Setting** | 3.25d? | 2012-02-25 | 2012-03-02 |  |  |  |
| 83 | Design Column Setting | 0.5d? | 2012-02-25 | 2012-02-28 | 78SS+1d |  | Dang |
| 84 | Code Column Setting | 1d? | 2012-02-28 | 2012-02-29 | 83 |  | Tan |
| 85 | Test Column Setting | 0.5d? | 2012-02-29 | 2012-03-02 | 84 |  | Nguyen |
| 86 | **Certificate Management** | 3.5d | 2012-02-28 | 2012-03-03 |  |  |  |
| 87 | Design Certificate Management | 0.5d | 2012-02-28 | 2012-02-29 | 82SS+1d |  | Dang |
| 88 | Code Certificate Management | 1d | 2012-02-29 | 2012-03-03 | 84, 87 |  | Tan |
| 89 | Test Certificate Management | 0.5d | 2012-03-03 | 2012-03-03 | 88 |  | Nguyen |
| 90 | **Supported People Management** | 3d? | 2012-02-24 | 2012-02-29 |  |  |  |
| 91 | Design Supported People Management | 0.5d? | 2012-02-24 | 2012-02-25 | 74 |  | Nguyen |
| 92 | Code Supported People Management | 1d? | 2012-02-25 | 2012-02-28 | 91 |  | Nguyen |
| 93 | Test Supported People Management | 0.5d? | 2012-02-28 | 2012-02-29 | 92 |  | Dang |
| 94 | **Family Relationship Management** | 5.25d? | 2012-02-24 | 2012-03-03 |  |  |  |
| 95 | Design Family Relationship Management | 1d | 2012-02-24 | 2012-02-28 | 74 |  | Nhung |
| 96 | Code Family Relationship Management | 2d | 2012-02-28 | 2012-03-02 | 95 |  | Nhung |
| 97 | Test Family Relationship Management | 0.5d? | 2012-03-02 | 2012-03-03 | 96 |  | Tung |
| 98 | **Staff History** | 3.25d? | 2012-02-29 | 2012-03-06 |  |  |  |
| 99 | Design Staff History | 0.5d? | 2012-02-29 | 2012-03-02 | 93 |  | Nguyen |
| 100 | Code Staff History | 1d? | 2012-03-02 | 2012-03-03 | 99 |  | Nguyen |
| 101 | Test Staff History | 0.5d? | 2012-03-03 | 2012-03-06 | 100 |  | Dang |
| 102 | Integrate | 0.5d | 2012-03-06 | 2012-03-06 | 74, 78, 82, 86, 90, 94, 98 |  | Tan; Nguyen; Nhung |
| 103 | Testing | 1d | 2012-03-06 | 2012-03-09 | 102 |  | Tung; Nguyen [50%] |
| 104 | **Increment 2: Training Management** | 16.5d? | 2012-02-28 | 2012-03-24 |  |  |  |
| 105 | **Reward Management** | 3d? | 2012-02-28 | 2012-03-03 |  |  |  |
| 106 | Design Reward Management | 0.5d? | 2012-02-28 | 2012-02-29 | 74FS+2d |  | Tuong |
| 107 | Code Reward Management | 1d? | 2012-02-29 | 2012-03-02 | 106 |  | Tuong |
| 108 | Test Reward Management | 0.5d? | 2012-03-02 | 2012-03-03 | 107 |  | Loc |
| 109 | **Staff Internship Management** | 3d? | 2012-02-28 | 2012-03-03 |  |  |  |
| 110 | Design Staff Internship Management | 0.5d? | 2012-02-28 | 2012-02-29 | 74FS+2d |  | Loc |
| 111 | Code Staff Internship Management | 1d? | 2012-02-29 | 2012-03-02 | 110 |  | Loc |
| 112 | Test Staff Internship Management | 0.5d? | 2012-03-02 | 2012-03-03 | 111 |  | Nhung |
| 113 | **Training Result Management** | 3d? | 2012-02-28 | 2012-03-03 |  |  |  |
| 114 | Design Training Result Management | 0.5d? | 2012-02-28 | 2012-02-29 | 74FS+2d |  | Quyet |
| 115 | Code Training Result Management | 1d? | 2012-02-29 | 2012-03-02 | 114 |  | Quyet |
| 116 | Test Training Result Management | 0.5d? | 2012-03-02 | 2012-03-03 | 115 |  | Tuong |
| 117 | **Facilitate Management** | 2.75d? | 2012-02-29 | 2012-03-03 |  |  |  |
| 118 | Design Facilitate Management | 0.5d? | 2012-02-29 | 2012-02-29 | 87 |  | Dang |
| 119 | Code Facilitate Management | 1d? | 2012-02-29 | 2012-03-03 | 118 |  | Dang |
| 120 | Test Facilitate Management | 0.5d? | 2012-03-03 | 2012-03-03 | 119 |  | Tuong |
| 121 | **Union Management** | 2.75d? | 2012-03-09 | 2012-03-13 |  |  |  |
| 122 | Design Union Management | 0.5d? | 2012-03-09 | 2012-03-09 | 73 |  | Tung |
| 123 | Code Union Management | 1d? | 2012-03-09 | 2012-03-13 | 122 |  | Tung |
| 124 | Test Union Management | 0.5d? | 2012-03-13 | 2012-03-13 | 123 |  | Nhung |
| 125 | **Task Note Book Management** | 2.75d? | 2012-03-09 | 2012-03-13 |  |  |  |
| 126 | Design Task Note Book Management | 0.5d? | 2012-03-09 | 2012-03-09 | 73 |  | Nhung |
| 127 | Code Task Note Book Management | 1d? | 2012-03-09 | 2012-03-13 | 126 |  | Nhung |
| 128 | Test Task Note Book Management | 0.5d? | 2012-03-13 | 2012-03-13 | 127 |  | Tung |
| 129 | **Training Course Management** | 3d | 2012-03-13 | 2012-03-17 |  |  |  |
| 130 | Design Training Course Management | 0.5d | 2012-03-13 | 2012-03-14 | 125 | start no earlier than 2012-02-28 | Nhung |
| 131 | Code Training Course Management | 1d | 2012-03-14 | 2012-03-16 | 130 |  | Nhung |
| 132 | Test Training Course Management | 0.5d | 2012-03-16 | 2012-03-17 | 131 |  | Quyet |
| 133 | **Internal Training Management** | 2.75d? | 2012-03-10 | 2012-03-14 |  |  |  |
| 134 | Design Internal Training Management | 0.5d? | 2012-03-10 | 2012-03-10 | 73FS+1d |  | Nguyen |
| 135 | Code Internal Training Management | 1d? | 2012-03-10 | 2012-03-14 | 134 |  | Nguyen |
| 136 | Test Internal Training Management | 0.5d? | 2012-03-14 | 2012-03-14 | 135 |  | Quyet |
| 137 | **Emulation Management** | 3.25d? | 2012-03-14 | 2012-03-20 |  |  |  |
| 138 | Design Emulation Management | 0.5d? | 2012-03-14 | 2012-03-16 | 133 |  | Nguyen |
| 139 | Code Emulation Management | 1d? | 2012-03-16 | 2012-03-17 | 138 |  | Nguyen |
| 140 | Test Emulation Management | 0.5d? | 2012-03-17 | 2012-03-20 | 139 |  | Dang |
| 141 | **Lecture Probation Management** | 3.25d? | 2012-03-17 | 2012-03-23 |  |  |  |
| 142 | Design Lecture Probation Management | 0.5d? | 2012-03-17 | 2012-03-20 | 129 |  | Nhung |
| 143 | Code Lecture Probation Management | 1d? | 2012-03-20 | 2012-03-21 | 142 |  | Nhung |
| 144 | Test Lecture Probation Management | 0.5d? | 2012-03-21 | 2012-03-23 | 143 |  | Tung |
| 145 | **Mobilization Management** | 2.75d? | 2012-03-03 | 2012-03-07 |  |  |  |
| 146 | Design Mobilization Management | 0.5d? | 2012-03-03 | 2012-03-03 | 109 |  | Loc |
| 147 | Code Mobilization Management | 1d? | 2012-03-03 | 2012-03-07 | 146 |  | Loc |
| 148 | Test Mobilization Management | 0.5d? | 2012-03-07 | 2012-03-07 | 147 |  | Nhung |
| 149 | **Penalty Management** | 2.75d? | 2012-03-06 | 2012-03-09 |  |  |  |
| 150 | Design Penalty Management | 0.5d? | 2012-03-06 | 2012-03-06 | 105FS+1d |  | Tuong |
| 151 | Code Penalty Management | 1d? | 2012-03-06 | 2012-03-07 | 150 |  | Tuong |
| 152 | Test Penalty Management | 0.5d? | 2012-03-09 | 2012-03-09 | 151 |  | Loc |
| 153 | **Lecture Position Management** | 3d? | 2012-03-09 | 2012-03-14 | 149 |  |  |
| 154 | Design Lecture Position Management | 0.5d? | 2012-03-09 | 2012-03-10 | 149 |  | Tuong |
| 155 | Code Lecture Position Management | 1d? | 2012-03-10 | 2012-03-13 | 154 |  | Tuong |
| 156 | Test Lecture Position Management | 0.5d? | 2012-03-13 | 2012-03-14 | 155 |  | Loc |
| 157 | **Communist Party Management** | 2.75d? | 2012-03-16 | 2012-03-20 |  |  |  |
| 158 | Design Communist Party Management | 0.5d? | 2012-03-16 | 2012-03-16 | 153FS+1d |  | Tuong |
| 159 | Code Communist Party Management | 1d? | 2012-03-16 | 2012-03-17 | 158 |  | Tuong |
| 160 | Test Communist Party Management | 0.5d? | 2012-03-20 | 2012-03-20 | 159 |  | Loc |
| 161 | **Trade Union Management** | 3d? | 2012-03-13 | 2012-03-17 | 121 |  |  |
| 162 | Design Trade Union Management | 0.5d? | 2012-03-13 | 2012-03-14 | 121 |  | Tung |
| 163 | Code Trade Union Management | 1d? | 2012-03-14 | 2012-03-16 | 162 |  | Tung |
| 164 | Test Trade Union Management | 0.5d? | 2012-03-16 | 2012-03-17 | 163 |  | Nhung |
| 165 | **Syllabus Management** | 3.25d? | 2012-03-07 | 2012-03-13 |  |  |  |
| 166 | Design Syllabus Management | 0.5d? | 2012-03-07 | 2012-03-09 | 145 |  | Loc |
| 167 | Code Syllabus Management | 1d? | 2012-03-09 | 2012-03-10 | 166 |  | Loc |
| 168 | Test Syllabus Management | 0.5d? | 2012-03-10 | 2012-03-13 | 167 |  | Quyet |
| 169 | **Science Research Management** | 3d? | 2012-03-13 | 2012-03-17 | 165 |  |  |
| 170 | Design Science Research Management | 0.5d? | 2012-03-13 | 2012-03-14 | 165 |  | Loc |
| 171 | Code Science Research Management | 1d? | 2012-03-14 | 2012-03-16 | 170 |  | Loc |
| 172 | Test Science Research Management | 0.5d? | 2012-03-16 | 2012-03-17 | 171 |  | Quyet |
| 173 | **Other Management** | 2.75d? | 2012-03-03 | 2012-03-07 |  |  |  |
| 174 | Design Other Management | 0.5d? | 2012-03-03 | 2012-03-03 | 113 |  | Quyet |
| 175 | Code Other Management | 1d? | 2012-03-03 | 2012-03-07 | 174 |  | Quyet |
| 176 | Test Other Management | 0.5d? | 2012-03-07 | 2012-03-07 | 175 |  | Tan |
| 177 | **Work Management** | 3.25d? | 2012-03-07 | 2012-03-13 |  |  |  |
| 178 | Design Work Management | 0.5d? | 2012-03-07 | 2012-03-09 | 173 |  | Quyet |
| 179 | Code Work Management | 1d? | 2012-03-09 | 2012-03-10 | 178 |  | Quyet |
| 180 | Test Work Management | 0.5d? | 2012-03-10 | 2012-03-13 | 179 |  | Tan |
| 181 | **Master Thesis Guideline Management** | 3d? | 2012-03-13 | 2012-03-17 |  |  |  |
| 182 | Design Master Thesis Guideline Management | 0.5d? | 2012-03-13 | 2012-03-14 | 177 |  | Quyet |
| 183 | Code Master Thesis Guideline Management | 1d? | 2012-03-14 | 2012-03-16 | 182 |  | Quyet |
| 184 | Test Master Thesis Guideline Management | 0.5d? | 2012-03-16 | 2012-03-17 | 183 |  | Tan |
| 185 | **Article Management** | 2.75d? | 2012-03-17 | 2012-03-21 |  |  |  |
| 186 | Design Article Management | 0.5d? | 2012-03-17 | 2012-03-17 | 181 |  | Quyet |
| 187 | Code Article Management | 1d? | 2012-03-17 | 2012-03-21 | 186 |  | Quyet |
| 188 | Test Article Management | 0.5d? | 2012-03-21 | 2012-03-21 | 187 |  | Tan |
| 189 | **Subject Management** | 4d? | 2012-03-03 | 2012-03-10 |  |  |  |
| 190 | Design Subject Management | 1d? | 2012-03-03 | 2012-03-07 | 117 |  | Dang |
| 191 | Code Subject Management | 1d? | 2012-03-07 | 2012-03-09 | 190 |  | Dang |
| 192 | Test Subject Management | 0.5d? | 2012-03-09 | 2012-03-10 | 191 |  | Tuong |
| 193 | **Income Management** | 2.75d? | 2012-03-10 | 2012-03-14 |  |  |  |
| 194 | Design Income Management | 0.5d? | 2012-03-10 | 2012-03-10 | 189 |  | Dang |
| 195 | Code Income Management | 1d? | 2012-03-10 | 2012-03-14 | 194 |  | Dang |
| 196 | Test Income Management | 0.5d? | 2012-03-14 | 2012-03-14 | 195 |  | Tuong |
| 197 | **Salary Coefficient Management** | 3.25d? | 2012-03-14 | 2012-03-20 |  |  |  |
| 198 | Design Salary Coefficient Management | 0.5d? | 2012-03-14 | 2012-03-16 | 193 |  | Dang |
| 199 | Code Salary Coefficient Management | 1d? | 2012-03-16 | 2012-03-17 | 198 |  | Dang |
| 200 | Test Salary Coefficient Management | 0.5d? | 2012-03-17 | 2012-03-20 | 199 |  | Tuong |
| 201 | Integrate | 0.5d? | 2012-03-21 | 2012-03-23 | 94, 117, 137, 157, 185, 193, 197 |  | Dang; Loc; Nguyen; Nhung; Quyet; Tan; Tung; Tuong |
| 202 | Testing | 0.5d? | 2012-03-23 | 2012-03-24 | 201 |  | Tuong; Tung; Dang; Loc; Nguyen; Nhung; Quyet; Tan |
| 203 | **Increment 6: Report** | 10.5d | 2012-03-24 | 2012-04-10 |  |  |  |
| 204 | **Report Management** | 7.25d | 2012-03-24 | 2012-04-04 |  |  |  |
| 205 | Design Report | 1d | 2012-03-24 | 2012-03-27 | 104 |  | Loc |
| 206 | Code Report | 3d | 2012-03-27 | 2012-04-03 | 188, 202, 205 |  | Tan |
| 207 | Test Report | 1d | 2012-04-03 | 2012-04-04 | 206 |  | Dang |
| 208 | Integrate | 1d | 2012-04-04 | 2012-04-07 | 207 |  | Tan |
| 209 | Test | 1d | 2012-04-07 | 2012-04-10 | 208 |  | Dang; Tung |
| 210 | Conduct System test | 2d | 2012-04-10 | 2012-04-14 | 203 |  | Dang; Loc; Nguyen; Nhung; Quyet; Tan; Tung; Tuong |
| 211 | Conduct Acceptance test | 2d | 2012-04-14 | 2012-04-18 | 210 |  | Dang; Loc; Nguyen; Nhung; Quyet; Tan; Tung; Tuong |

Removed: 64 Detail Design Analysis; 66 Analysis; 67 Design class diagram; 68 Design sequence diagram; 69 SDS(Draft version); 70 Class diagram; 71 Sequence diagram; 72 Review; 73 SDS(Final version); 74 Programming; 78 Programming; 79 Programming: Quản lý nhân lực; 80 Programming: Overview Information; 81 Programming: Employee; 82 Programming: Staff History; 83 Programming: Family Relationship Management; 84 Programming: Supported People Management; 85 Programming: Certificate Management; 86 Programming: Expand Information; 87 Programming: Quản lý đào tạo; 88 Programming: Quản lý đào tạo bên ngoài; 89 Programming: Traning Course Information; 90 Programming: Training Result Information; 91 Programming: Quản lý đào tạo nội bộ; 92 Programming: Quản lý quá trình công tác; 93 Programming: Task Management; 94 Programming: Appoint Management; 95 Programming: Hoạt động khoa học - Công nghệ; 96 Programming: Subject Management; 97 Programming: Article Management; 98 Programming: Syllabus Management; 99 Programming: Product Management; 100 Programming: Master Thesis Guideline; 101 Programming: Science Research Guideline Of Student; 102 Programming: Khen thưởng - Kỷ luật - Danh hiệu thi đua; 103 Programming: RewardManagement; 104 Programming: Penalty Management; 105 Programming: Awarded Title Management; 106 Programming: Quản lý tập sự/Thử việc; 107 Programming: Lecturer Probation Management; 108 Programming: Staff Internship Management; 109 Programming: Income Management; 110 Programming: Professor Position Management; 111 Programming: Facilitate Management; 112 Programming: Quản lý công tác Đoàn Thể; 113 Programming: Communist Party Management; 114 Programming: Union Management; 115 Programming: Trade Union Management; 116 Programming: Quản trị hệ thống; 117 Programming: Employee Code Setting; 118 PROGRAMMING: Report; 119 Conduct Unit testing; 120 Intergration; 125 Integration test case; 126 Unit test case; 127 Conduct test case; 128 Integration test case; 129 System test case; 130 Acceptance test case; 131 Rework

Changed:

| ID | Task | Start | Finish | Duration | Complete | Total float | Predecessors | Other |
| --- | --- | --- | --- | --- | --- | --- | --- | --- |
| 1 | **Human Resource Management** |  | 2012-05-04 → 2012-05-02 (-2d) | 111.19d? → 109.69d? | 69% → 72% |  |  |  |
| 2 | Kick off meeting |  |  |  |  | 111.19d → 109.69d |  | resources All → Dang; Loc; Nguyen; Nhung; Quyet; Tan; Tung; Tuong |
| 13 | **Develop Project Plan** |  |  | 53.25d? → 52.81d? |  |  |  |  |
| 37 | Review |  |  |  |  |  |  | resources All [10%] → Dang; Loc; Nguyen; Nhung; Quyet; Tan; Tung; Tuong |
| 49 | Review |  |  |  |  |  |  | resources All → Dang; Loc; Nguyen; Nhung; Quyet; Tan; Tung; Tuong |
| 64 | Design Database | 2012-01-11 A → 2011-12-27 A (-15d) | 2012-01-26 → 2012-01-10 A (-16d) | 7.06d → 6.25d | 99% → 100% | 49.62d → none |  | constraint start no earlier than 2011-11-17 → none |
| 65 | **Testing** | 2012-03-09 → 2012-01-18 (-51d) | 2012-04-17 → 2012-03-14 (-34d) | 21.81d? → 36.75d |  | 10.44d → 31.31d |  |  |
| 66 | **Design test case** | 2012-03-09 → 2012-01-18 (-51d) | 2012-04-17 → 2012-03-14 (-34d) | 21.81d? → 36.75d |  | 10.44d → 31.31d |  |  |
| 67 | Acceptance test case | 2012-03-09 → 2012-01-18 (-51d) | 2012-03-18 → 2012-02-10 (-37d) | 4d? → 10d |  | 10.44d → 53.06d | none → 22 | constraint finish no earlier than 2012-03-18 → none |
| 68 | System test case | 2012-03-20 → 2012-03-03 (-17d) | 2012-04-13 → 2012-03-14 (-30d) | 10.62d? → 5d |  | 10.44d → 31.31d | 67 → 53 | resources Tung [50%] → Tung |
| 69 | **Training Code** |  | 2012-03-03 A → 2012-02-14 (-18d) | 58.19d? → 47.75d | 100% → 97% | none → 0d |  | was named Training |
| 70 | ID generate |  | 2012-03-03 A → 2012-01-27 A (-36d) | 49.94d? → 34d |  |  | none → 22, 53 | resources Dang [50%]; Loc; Nguyen; Nhung; Quyet; Tan [50%]; Tung; Tuong → Dang; Loc; Nguyen; Nhung; Quyet; Tan [50%]; Tung; Tuong |
| 71 | Programming: Manage Catalog |  | 2012-03-03 A → 2012-02-08 A (-24d) | 64d? → 40d |  |  | none → 70 | constraint finish no earlier than 2012-03-03 → none |
| 212 | Deployment | 2012-04-24 → 2012-04-18 (-6d) | 2012-04-27 → 2012-04-24 (-3d) | 1.31d? → 2d |  |  | Rework → 211 |  |
| 213 | Deliver to customer | 2012-04-27 → 2012-04-24 (-3d) | 2012-05-02 → 2012-05-01 (-1d) | 2.94d? → 3d |  |  |  | constraint finish no earlier than 2012-04-30 → none |
| 214 | Maintaining | 2012-05-04 → 2012-05-01 (-3d) | 2012-05-04 → 2012-05-02 (-2d) | 0.75d? → 1d |  |  |  | constraint finish no earlier than 2012-03-06 → none |

## Version 4 (data date 2012-03-09, saved 2012-05-03)

Note of the change: Update Test plan

Last finish 2012-05-02 → 2012-05-29 (+27d). Complete tasks 49 → 0.

Added:

| ID | Task | Duration | Start | Finish | Predecessors | Resources |
| --- | --- | --- | --- | --- | --- | --- |
| 6 | Research phases in process | 1d | 2011-09-28 | 2011-09-30 | 2 | Nguyen |
| 7 | Research tool and document templates | 1d | 2011-09-28 | 2011-09-30 | 2 | Quyet |
| 9 | Research phases in process | 1d | 2011-09-28 | 2011-09-30 | 2 | Tuong |
| 10 | Research tool and document templates | 1d | 2011-09-28 | 2011-09-30 | 2 | Tan |
| 12 | Research phases in process | 1d | 2011-09-28 | 2011-09-30 | 2 | Dang |
| 13 | Research tool and document templates | 1d | 2011-09-28 | 2011-09-30 | 2 | Loc |
| 18 | Draw process | 1d | 2011-09-30 | 2011-10-01 | 7 | Quyet |
| 19 | Describe stage in process | 1d | 2011-09-30 | 2011-10-01 | 6 | Nguyen |
| 21 | Draw process | 1d | 2011-09-30 | 2011-10-01 | 9 | Tuong |
| 22 | Describe stage in process | 1d | 2011-09-30 | 2011-10-01 | 10 | Tan |
| 24 | Draw process | 1d | 2011-09-30 | 2011-10-01 | 13 | Loc |
| 25 | Describe stage in process | 1d | 2011-09-30 | 2011-10-01 | 12 | Dang |
| 29 | **Conference with cus 1** | 2.31d? | 2011-10-04 | 2011-10-06 | 3 |  |
| 30 | **Prepare 1** | 0.38d? | 2011-10-04 | 2011-10-04 | 3 |  |
| 31 | C1: Research HRM processes | 0.25d? | 2011-10-04 | 2011-10-04 | 3 | Nguyen |
| 32 | C1: Research business, role | 0.25d? | 2011-10-04 | 2011-10-04 | 3 | Quyet |
| 33 | C1: Prepare questions to ask customer | 0.25d? | 2011-10-04 | 2011-10-04 | 3 | Loc |
| 34 | C1: Send mail for customer | 0.12d? | 2011-10-04 | 2011-10-04 | 31, 32, 33 | Nhung |
| 36 | C1: Write down meeting 1 | 0.44d? | 2011-10-04 | 2011-10-05 | 30 | Tung |
| 37 | C1: Support write down meeting 1 | 0.44d? | 2011-10-04 | 2011-10-05 | 30 | Tuong |
| 38 | C1: Manage meeting 1 | 0.44d? | 2011-10-04 | 2011-10-05 | 30 | Nguyen |
| 39 | C1: Attending conference 1 | 0.44d? | 2011-10-04 | 2011-10-05 | 30 | Dang; Loc; Nhung; Quyet; Tan |
| 41 | C1: Doc ConsOpt: Introduction | 0.25d? | 2011-10-05 | 2011-10-05 | 35 | Loc |
| 42 | C1: Doc ConsOpt: Current System & Reason for improvement | 0.25d | 2011-10-05 | 2011-10-05 | 35 | Dang |
| 43 | C1: Doc Qui trinh nghiep vu tong quat | 1d | 2011-10-05 | 2011-10-06 | 35 | Nhung |
| 44 | C1: Guide doc Concept | 1d? | 2011-10-05 | 2011-10-06 | 35 | Nguyen |
| 45 | C1: Review document | 1d | 2011-10-05 | 2011-10-06 | 35 | Nguyen |
| 46 | C1: Fix error in document | 1d | 2011-10-05 | 2011-10-06 | 35 | Quyet |
| 47 | **Conference with cus 2** | 13.5d? | 2011-10-05 | 2011-10-27 | 30 |  |
| 48 | **Prepare 2** | 0.62d? | 2011-10-05 | 2011-10-06 | 30, 35 |  |
| 49 | C2: Đọc và phân tích biểu mẫu Sơ yếu lí lịch | 0.25d? | 2011-10-05 | 2011-10-05 | 30 | Quyet |
| 50 | C2: Thu thập và chuẩn bị các câu hỏi về Tuyển dụng và làm mới HSNS | 0.25d? | 2011-10-05 | 2011-10-05 | 30 | Nguyen |
| 51 | C2: Send mail for customer | 0.12d? | 2011-10-06 | 2011-10-06 | 49, 50 | Nhung |
| 52 | **Elicitate Requirement 2** | 0.5d? | 2011-10-07 | 2011-10-07 | 48, 40 |  |
| 53 | C2: Write down meeting 2 | 0.5d? | 2011-10-07 | 2011-10-07 | 48 | Dang |
| 54 | C2: Support write down meeting 2 | 0.5d? | 2011-10-07 | 2011-10-07 | 48 | Loc |
| 55 | C2: Manage meeting 2 | 0.5d? | 2011-10-07 | 2011-10-07 | 48 | Quyet |
| 56 | C2: Attending conference 2 | 0.5d? | 2011-10-07 | 2011-10-07 |  | Nguyen; Nhung; Tan; Tung; Tuong |
| 57 | **Analyze requirement** | 11.25d | 2011-10-08 | 2011-10-27 | 52 |  |
| 58 | C2: Doc Mô hình phân rã chức năng HSNS | 4d | 2011-10-08 | 2011-10-18 | 52 | Dang |
| 59 | C2: Draw process qui trinh nghiep vu tong quat | 2d | 2011-10-08 | 2011-10-13 | 52 | Nhung |
| 60 | C2: Phân tích hệ thống dự kiến | 4d | 2011-10-08 | 2011-10-18 | 52 | Nguyen |
| 61 | C2: Doc Information Catalog: Thông tin chung | 2d | 2011-10-13 | 2011-10-18 | 59 | Nhung |
| 62 | C2: Review document | 2d | 2011-10-18 | 2011-10-21 | 58, 59, 60, 61 | Nguyen |
| 63 | C2: Fix error in document | 2d | 2011-10-22 | 2011-10-27 | 62 | Quyet |
| 64 | **Conference with cus 3** | 9.38d? | 2011-10-27 | 2011-11-11 |  |  |
| 65 | **Prepare 3** | 1.62d? | 2011-10-27 | 2011-10-29 | 48, 52, 57 |  |
| 66 | C3: Research HRM processes | 1d? | 2011-10-27 | 2011-10-28 |  | Nguyen |
| 67 | C3: Research business, role | 1d? | 2011-10-27 | 2011-10-28 |  | Loc |
| 68 | C3: Prepare questions to ask customer | 1d? | 2011-10-27 | 2011-10-28 |  | Quyet |
| 69 | C3: Send mail for customer | 0.12d? | 2011-10-29 | 2011-10-29 | 66, 67, 68 | Nhung |
| 70 | **Elicitate Requirement 3** | 0.5d? | 2011-10-29 | 2011-10-29 | 65, 57 |  |
| 71 | C3: Write down meeting 3 | 0.5d? | 2011-10-29 | 2011-10-29 |  | Nhung |
| 72 | C3: Support write down meeting 3 | 0.5d? | 2011-10-29 | 2011-10-29 |  | Tan |
| 73 | C3: Manage meeting 3 | 0.5d? | 2011-10-29 | 2011-10-29 |  | Nguyen |
| 74 | C3: Attending conference 3 | 0.5d? | 2011-10-29 | 2011-10-29 |  | Dang; Loc; Quyet; Tung; Tuong |
| 75 | **Analyze requirement** | 7.25d | 2011-10-29 | 2011-11-11 | 70 |  |
| 76 | C3: Doc Information Category: Thông tin mở rộng | 2d | 2011-10-29 | 2011-11-04 |  | Nhung |
| 77 | C3: Doc Mo hinh phan ra chuc nang HSNS | 4d | 2011-10-29 | 2011-11-09 |  | Dang |
| 78 | C3: Scenerio | 4d | 2011-10-29 | 2011-11-09 |  | Tung |
| 79 | C3: Processes | 2d | 2011-11-04 | 2011-11-09 | 76 | Nhung |
| 80 | C3: Effect | 4d | 2011-10-29 | 2011-11-09 |  | Loc |
| 81 | C3: Review document | 0.5d | 2011-11-09 | 2011-11-10 | 76, 77, 78, 79, 80 | Nguyen |
| 82 | C3: Fix error in document | 0.5d | 2011-11-10 | 2011-11-11 | 81 | Quyet |
| 84 | C3: Update Information Category | 26d | 2011-11-11 | 2012-01-12 | 83 | Quyet |
| 85 | C3: Update Process | 26d | 2011-11-11 | 2012-01-12 | 83 | Nhung |
| 86 | C3: Review and fix Concept | 26d | 2011-11-11 | 2012-01-12 | 83 | Nguyen |
| 87 | **Conference with cus 4 (review)** | 6.12d? | 2012-01-12 | 2012-01-21 | 83, 70, 64, 84, 85, 86 |  |
| 88 | **Prepare 4** | 1.12d? | 2012-01-12 | 2012-01-13 | 70, 64 |  |
| 89 | C4: Research HRM processes | 0.75d? | 2012-01-12 | 2012-01-13 |  | Nguyen |
| 90 | C4: Research business, role | 0.75d? | 2012-01-12 | 2012-01-13 |  | Loc |
| 91 | C4: Prepare questions to ask customer | 0.75d? | 2012-01-12 | 2012-01-13 |  | Quyet |
| 92 | C4: Send mail for customer | 0.12d? | 2012-01-13 | 2012-01-13 | 89, 90, 91 | Nhung |
| 93 | **Elicitate Requirement 4** | 0.75d? | 2012-01-13 | 2012-01-14 | 88, 83, 75 |  |
| 94 | C4: Write down meeting 4 | 0.5d? | 2012-01-13 | 2012-01-14 |  | Loc |
| 95 | C4: Support write down meeting 4 | 0.5d? | 2012-01-13 | 2012-01-14 |  | Quyet |
| 96 | C4: Manage meeting 4 | 0.5d? | 2012-01-13 | 2012-01-14 |  | Nguyen |
| 97 | C4: Attending conference 4 | 0.5d? | 2012-01-13 | 2012-01-14 |  | Dang; Nhung; Tan; Tung; Tuong |
| 98 | **Analyze requirement** | 4.25d? | 2012-01-14 | 2012-01-21 | 93 |  |
| 101 | C4: Review document | 1d? | 2012-01-17 | 2012-01-19 | 99, 100 | Nguyen |
| 102 | C4: Fix error in document | 1d? | 2012-01-19 | 2012-01-21 | 101 | Quyet |
| 103 | Update Plan | 1d | 2012-01-21 | 2012-01-24 | 87 | Nhung |
| 110 | Monitoring tasks in SRS | 2.62d | 2011-11-11 | 2011-11-17 |  | Quyet |
| 111 | Review SRS | 5.59d | 2011-11-11 | 2011-11-19 |  | Nguyen |
| 114 | Update use case | 2d | 2011-11-22 | 2011-11-25 |  | Loc |
| 115 | Bussiness Rule | 2d | 2011-11-25 | 2011-12-01 | 114 | Loc |
| 116 | Functional Requirement | 2d | 2011-11-22 | 2011-11-25 |  | Quyet |
| 120 | Update Plan | 1d | 2012-01-24 | 2012-01-26 | 103, 104 | Nhung |
| 133 | Update Plan | 1d? | 2012-02-11 | 2012-02-15 | 121, 120 | Nhung |
| 140 | **Manage Catalog** | 59.25d | 2011-12-03 | 2012-03-09 | 138 |  |
| 282 | Translate Concept Doc | 10d | 2012-01-21 | 2012-02-14 | 87 | Nguyen |

Removed: 3 Project Management; 11 Measurement management; 12 Change management; 19 Measurement management; 20 Change management; 21 Develop Detail Plan; 25 Develop Concept of Operation; 26 Document ConsOpt( Draft version); 27 Introduction; 28 Current system; 29 Reason for improvement; 30 System future; 31 Information Catgegories; 32 Processes; 33 Processes: Mô hình phân rã chức năng hồ sơ nhân sự; 34 Scenario; 35 Effect; 36 Analysis system future; 37 Review; 39 Update ConsOpt

Changed:

| ID | Task | Start | Finish | Duration | Complete | Total float | Predecessors | Other |
| --- | --- | --- | --- | --- | --- | --- | --- | --- |
| 1 | **Human Resource Management** | 2011-09-27 A → 2011-09-27 | 2012-05-02 → 2012-05-29 (+27d) | 109.69d? → 149.25d? | 72% → 0% |  |  |  |
| 2 | Kick off meeting |  | 2011-09-27 → 2011-09-28 (+1d) | 0d → 1d |  | 109.69d → 2.56d |  |  |
| 3 | **Start Up** | 2011-09-27 A → 2011-09-28 (+1d) | 2012-01-25 A → 2011-10-01 (-116d) | 60.81d? → 2.75d? | 100% → 0% | none → 2.56d | none → 2 |  |
| 4 | **Research process** | 2011-09-27 A → 2011-09-28 (+1d) | 2011-11-25 A → 2011-09-30 (-56d) | 30.81d? → 1.5d | 100% → 0% | none → 2.56d | none → 2 |  |
| 5 | **Requirement Process** | 2011-09-27 A → 2011-09-28 (+1d) | 2011-10-01 A → 2011-09-30 (-1d) | 3d? → 1.5d | 100% → 0% | none → 2.56d | none → 2 | constraint finish no earlier than 2011-10-01 → none; resources Nguyen [50%]; Quyet [50%] → none |
| 8 | **Architect process** | 2011-09-27 A → 2011-09-28 (+1d) | 2011-10-01 A → 2011-09-30 (-1d) | 3d? → 1.5d | 100% → 0% | none → 2.56d | 5SS → 2 | constraint finish no earlier than 2011-10-01 → none; resources Tuong [50%]; Tan [50%] → none |
| 11 | **Detail design process** | 2011-09-27 A → 2011-09-28 (+1d) | 2011-10-01 A → 2011-09-30 (-1d) | 3d? → 1.5d | 100% → 0% | none → 2.56d | 5SS → 2 | constraint finish no earlier than 2011-10-01 → none; resources Dang [50%]; Loc [50%] → none |
| 14 | Testing process | 2011-09-27 A → 2011-09-28 (+1d) | 2011-10-01 A → 2011-09-30 (-1d) | 3d? → 1d | 100% → 0% | none → 2.56d | 5SS → 2 | constraint start no earlier than 2011-09-27 → none; resources Tung [50%] → Tung |
| 15 | Research Process Management: Risk, Measure, Change | 2011-09-27 A → 2011-09-28 (+1d) | 2011-10-01 A → 2011-09-30 (-1d) | 3d? → 1d | 100% → 0% | none → 2.56d | 5SS → 2 | was named Risk management; constraint finish no earlier than 2011-10-01 → none; resources Nhung [50%] → Nhung |
| 16 | **Develop Project Plan** | 2011-10-04 A → 2011-09-30 (-4d) | 2012-01-17 A → 2011-10-01 (-108d) | 52.81d? → 1.25d? | 100% → 0% | none → 2.56d | none → 5, 8, 11, 14, 15 |  |
| 17 | **Requirement Process** | 2011-10-04 A → 2011-09-30 (-4d) | 2011-10-06 A → 2011-10-01 (-5d) | 1.81d? → 1.25d | 100% → 0% | none → 2.56d |  | constraint finish no earlier than 2011-10-05 → none; resources Nguyen [50%] → none |
| 20 | **Architect process** | 2011-10-04 A → 2011-09-30 (-4d) | 2011-10-06 A → 2011-10-01 (-5d) | 1.81d? → 1.25d | 100% → 0% | none → 2.56d |  | constraint finish no earlier than 2011-10-05 → none; resources Tuong [50%]; Tan [50%] → none |
| 23 | **Detail design process** | 2011-10-04 A → 2011-09-30 (-4d) | 2011-10-06 A → 2011-10-01 (-5d) | 1.81d? → 1.25d | 100% → 0% | none → 2.56d |  | constraint finish no earlier than 2011-10-05 → none; resources Dang [50%]; Loc [50%] → none |
| 26 | Testing process | 2011-10-04 A → 2011-09-30 (-4d) | 2011-10-06 A → 2011-10-01 (-5d) | 1.81d? → 1d | 100% → 0% | none → 2.56d |  | constraint finish no earlier than 2011-10-05 → none; resources Tung [50%] → Tung |
| 27 | Doc Process Management: Risk, Measurement, Change | 2011-11-26 A → 2011-09-30 (-57d) | 2011-12-01 A → 2011-10-01 (-61d) | 2.5d? → 1d? | 100% → 0% | none → 2.56d | Change management → 15 | was named Risk management; constraint start no earlier than 2011-11-26 → none; resources Nhung [50%] → Nhung |
| 28 | **Requirement Analysis** | 2011-09-27 A → 2011-10-04 (+7d) | 2012-01-17 A → 2012-01-24 (+7d) | 56.75d? → 68.56d? | 100% → 0% | none → 2.56d | 2 → 3 |  |
| 35 | **Elicitate requirement 1** | 2011-09-27 A → 2011-10-04 (+7d) | 2011-09-30 A → 2011-10-05 (+5d) | 2.81d? → 0.69d? | 100% → 0% | none → 2.56d | none → 30 | was named Elicitate requirement; constraint start no earlier than 2011-09-27 → none; resources Dang [50%]; Loc [50%]; Nguyen [50%]; Nhung [50%]; Quyet [50%]; Tan [50%]; Tung [50%]; Tuong [50%] → none |
| 40 | **Analyze requirement 1** | 2011-10-01 A → 2011-10-05 (+4d) | 2011-10-07 A → 2011-10-06 (-1d) | 3d? → 1.25d? | 100% → 0% | none → 2.56d |  | was named Analysis requirement; constraint finish no earlier than 2011-10-06 → none; resources Dang [50%]; Loc [50%]; Nguyen [50%]; Nhung [50%]; Quyet [50%]; Tan [50%]; Tung [50%]; Tuong [50%] → none |
| 83 | Send Concept Operation to customer | 2011-11-10 A → 2011-11-11 (+1d) | 2011-11-10 A → 2011-11-11 (+1d) | 0.75d → 0.25d | 100% → 0% | none → 21.88d | none → 77, 78, 79, 80, 81, 82 |  |
| 99 | Update Information Catgegories | 2011-11-11 A → 2012-01-14 (+64d) | 2011-11-16 A → 2012-01-17 (+62d) | 2.25d? → 1d? | 100% → 0% | none → 21.62d | 83 → none | resources Quyet [50%] → Nhung |
| 100 | Update Processes | 2011-11-11 A → 2012-01-14 (+64d) | 2011-11-16 A → 2012-01-17 (+62d) | 2.25d? → 1d? | 100% → 0% | none → 21.62d | 83 → none | resources Nhung [50%] → Quyet |
| 104 | **Develop SRS** | 2011-10-08 A → 2011-11-11 (+34d) | 2012-01-17 A → 2012-01-17 | 50.44d? → 40.31d | 100% → 0% | none → 25.94d | none → 64, 83 |  |
| 105 | **Document Software Requirement Specification (Draft version)** | 2011-10-08 A → 2011-11-11 (+34d) | 2012-01-07 A → 2011-11-19 (-49d) | 46.19d? → 5d | 100% → 0% | none → 35d |  |  |
| 106 | **Develop use case specification** | 2011-10-08 A → 2011-11-11 (+34d) | 2011-10-28 A → 2011-11-17 (+20d) | 10.5d? → 3.5d | 100% → 0% | none → 36.5d |  |  |
| 107 | Draw use cases | 2011-10-21 A → 2011-11-11 (+21d) | 2011-10-27 A → 2011-11-17 (+21d) | 3d? → 2.5d | 100% → 0% | none → 36.5d | Reason for improvement → none | constraint finish no earlier than 2011-10-23 → none |
| 108 | Draw activity diagram for use cases | 2011-10-25 A → 2011-11-11 (+17d) | 2011-10-28 A → 2011-11-17 (+20d) | 2.31d? → 2.5d | 100% → 0% | none → 36.5d | Effect → none | constraint start no earlier than 2011-10-21 → none |
| 109 | Descripe use case | 2011-10-08 A → 2011-11-11 (+34d) | 2011-10-11 A → 2011-11-17 (+37d) | 1.44d? → 2.5d | 100% → 0% | none → 36.5d | Scenario → none | constraint start no earlier than 2011-10-06 → none |
| 112 | Review | 2011-10-11 A → 2011-11-19 (+39d) | 2011-10-28 A → 2011-11-22 (+25d) | 8.31d? → 0.5d | 100% → 0% | none → 35d | 109 → 106, 111, 107, 108, 109, 110 | resources Dang; Loc; Nguyen; Nhung; Quyet; Tan; Tung; Tuong → Dang; Loc; Nguyen; Quyet; Tan; Tung; Tuong |
| 113 | **Update SRS** | 2011-10-29 A → 2011-11-22 (+24d) | 2011-11-01 A → 2011-12-01 (+30d) | 1.44d? → 5.75d | 100% → 0% | none → 35d |  | resources Loc → none |
| 117 | Software Requirement Specification (Final version) | 2011-11-01 A → 2011-11-22 (+21d) | 2011-11-06 A → 2011-11-25 (+19d) | 6d? → 2d | 100% → 0% | none → 37.75d | 113 → none |  |
| 118 | Develop interfaces | 2011-11-29 A → 2011-12-01 (+2d) | 2012-01-07 A → 2011-12-16 (-22d) | 18d? → 7d | 100% → 0% | none → 35d | 100 → 113 |  |
| 119 | Upadate interfaces | 2012-01-07 A → 2011-12-31 (-7d) | 2012-01-17 A → 2012-01-17 | 4.44d? → 7d | 100% → 0% | none → 25.69d |  | resources Dang [50%] → Dang |
| 121 | **Architect Design Analysis** | 2011-10-08 A → 2011-11-04 (+27d) | 2012-01-10 A → 2012-02-11 (+32d) | 46.94d? → 60.75d | 100% → 0% | none → 6.12d | none → 76 |  |
| 122 | **Develop architecture driver document (ADD)** | 2011-10-08 A → 2011-11-04 (+27d) | 2011-11-09 A → 2012-01-20 (+72d) | 16d? → 46.75d | 100% → 0% | none → 6.12d |  |  |
| 123 | Discover architecture drivers | 2011-10-08 A → 2011-11-04 (+27d) | 2011-10-28 A → 2011-11-26 (+29d) | 9d → 10d | 100% → 0% | none → 6.12d | 40 → none | constraint finish no earlier than 2011-10-23 → none; resources Tan [50%]; Tuong [50%] → Tan; Tuong |
| 124 | Document ADD(Draft version) | 2011-10-31 A → 2011-11-26 (+26d) | 2011-10-31 A → 2011-12-21 (+51d) | 0d → 10d | 100% → 0% | none → 6.12d |  | constraint finish no earlier than 2011-10-31 → none; resources Tan [50%]; Tuong [50%] → Tan; Tuong |
| 125 | Review | 2011-10-31 A → 2011-12-21 (+51d) | 2011-10-31 A → 2011-12-28 (+58d) | 0d → 3d | 100% → 0% | none → 6.12d |  | constraint finish no earlier than 2011-10-27 → none; resources Tan [50%]; Tuong [50%] → Tan; Tuong |
| 126 | Document ADD(Final version) | 2011-11-01 A → 2011-12-28 (+57d) | 2011-11-09 A → 2012-01-20 (+72d) | 9d? → 10d | 100% → 0% | none → 6.12d |  | constraint finish no earlier than 2011-11-05 → none; resources Tan [50%]; Tuong [50%] → Tan; Tuong |
| 127 | **Develop architecture design** | 2011-11-10 A → 2012-01-20 (+71d) | 2012-01-10 A → 2012-02-11 (+32d) | 30.94d → 14d | 100% → 0% | none → 6.12d |  |  |
| 128 | Research about new pattern | 2011-11-10 A → 2012-01-20 (+71d) | 2011-11-24 A → 2012-01-25 (+62d) | 6.75d → 2d | 100% → 0% | none → 6.12d | 126 → 122 |  |
| 129 | Document AD (Draft version) | 2011-11-24 A → 2012-01-25 (+62d) | 2011-12-01 A → 2012-02-04 (+65d) | 3.75d → 5d | 100% → 0% | none → 6.38d |  | constraint finish no earlier than 2011-11-13 → none |
| 130 | Review | 2011-12-02 A → 2012-02-04 (+64d) | 2011-12-09 A → 2012-02-08 (+61d) | 3.5d → 1d | 100% → 0% | none → 6.12d |  |  |
| 131 | Document AD (Final version) | 2011-12-10 A → 2012-02-08 (+60d) | 2012-01-10 A → 2012-02-11 (+32d) | 13.44d → 2d | 100% → 0% | none → 6.38d |  |  |
| 132 | Design Database | 2011-12-27 A → 2012-02-11 (+46d) | 2012-01-10 A → 2012-02-29 (+50d) | 6.25d → 7d | 100% → 0% | none → 6.12d | 131 → 121 |  |
| 134 | **Testing** | 2012-01-18 → 2012-01-24 (+6d) | 2012-03-14 → 2012-02-15 (-28d) | 36.75d → 14.06d |  | 31.31d → 12.69d | none → 28 |  |
| 135 | **Design test case** | 2012-01-18 → 2012-01-24 (+6d) | 2012-03-14 → 2012-02-15 (-28d) | 36.75d → 14.06d |  | 31.31d → 12.69d |  |  |
| 136 | Acceptance test case | 2012-01-18 → 2012-01-24 (+6d) | 2012-02-10 → 2012-01-27 (-14d) | 10d → 1d |  | 53.06d → 23.5d |  |  |
| 137 | System test case | 2012-03-03 → 2012-02-11 (-21d) | 2012-03-14 → 2012-02-15 (-28d) | 5d → 1d |  | 31.31d → 12.69d | 121 → 121, 136 | constraint finish no earlier than 2012-03-14 → none |
| 138 | **Training Code** | 2011-11-10 A → 2011-11-03 (-7d) | 2012-02-14 → 2011-12-02 (-74d) | 47.75d → 17.81d | 97% → 0% |  | none → 70 |  |
| 139 | ID generate | 2011-11-10 A → 2011-11-03 (-7d) | 2012-01-27 A → 2011-12-02 (-56d) | 34d → 7d | 100% → 0% | none → 0d | 28, 121 → none | constraint start no earlier than 2011-11-10 → finish no earlier than 2011-12-02 |
| 141 | Programming: Manage Catalog | 2011-12-31 A → 2011-12-03 (-28d) | 2012-02-08 A → 2012-03-06 (+27d) |  | 100% → 0% | none → 0d |  |  |
| 142 | Test Manage Catalog | 2012-02-09 → 2012-03-06 (+26d) | 2012-02-14 → 2012-03-09 (+24d) |  |  |  | 141 → 141, 137 |  |
| 143 | **Increment 1: Detail Information Management** | 2012-02-14 → 2012-03-10 (+25d) | 2012-03-09 → 2012-04-03 (+25d) | 15.75d? → 15.5d? |  |  | none → 140, 138, 132 |  |
| 144 | **Detail Information Management** | 2012-02-14 → 2012-03-10 (+25d) | 2012-02-24 → 2012-03-21 (+26d) |  |  |  |  |  |
| 145 | Design Detail Information Management | 2012-02-14 → 2012-03-10 (+25d) | 2012-02-17 → 2012-03-14 (+26d) |  |  |  |  |  |
| 146 | Code Detail Information Management | 2012-02-17 → 2012-03-14 (+26d) | 2012-02-22 → 2012-03-20 (+27d) |  |  |  |  |  |
| 147 | Test Detail Information Management | 2012-02-22 → 2012-03-20 (+27d) | 2012-02-24 → 2012-03-21 (+26d) |  |  |  |  |  |
| 148 | **Employee Code Setting** | 2012-02-24 → 2012-03-21 (+26d) | 2012-02-29 → 2012-03-27 (+27d) | 3d → 3.25d |  | 4.25d → 3.75d |  |  |
| 149 | Design Employee Code Setting | 2012-02-24 → 2012-03-21 (+26d) | 2012-02-25 → 2012-03-23 (+27d) |  |  | 4.25d → 3.75d |  |  |
| 150 | Code Employee Code Setting | 2012-02-25 → 2012-03-23 (+27d) | 2012-02-28 → 2012-03-24 (+25d) |  |  |  |  |  |
| 151 | Test Employee Code Setting | 2012-02-28 → 2012-03-24 (+25d) | 2012-02-29 → 2012-03-27 (+27d) |  |  | 4.25d → 3.75d |  |  |
| 152 | **Column Setting** | 2012-02-25 → 2012-03-23 (+27d) | 2012-03-02 → 2012-03-27 (+25d) | 3.25d? → 2.75d? |  | 1.75d → 2d |  |  |
| 153 | Design Column Setting | 2012-02-25 → 2012-03-23 (+27d) | 2012-02-28 → 2012-03-23 (+24d) |  |  | 1.25d → 2d |  |  |
| 154 | Code Column Setting | 2012-02-28 → 2012-03-24 (+25d) | 2012-02-29 → 2012-03-27 (+27d) |  |  | 1.25d → 1.5d |  |  |
| 155 | Test Column Setting | 2012-02-29 → 2012-03-27 (+27d) | 2012-03-02 → 2012-03-27 (+25d) |  |  | 3d → 3.25d |  |  |
| 156 | **Certificate Management** | 2012-02-28 → 2012-03-24 (+25d) | 2012-03-03 → 2012-03-30 (+27d) |  |  | 1.25d → 1.5d |  |  |
| 157 | Design Certificate Management | 2012-02-28 → 2012-03-24 (+25d) | 2012-02-29 → 2012-03-24 (+24d) |  |  | 1.25d → 1.5d |  |  |
| 158 | Code Certificate Management | 2012-02-29 → 2012-03-27 (+27d) | 2012-03-03 → 2012-03-28 (+25d) |  |  | 1.5d → 2d |  |  |
| 159 | Test Certificate Management | 2012-03-03 → 2012-03-28 (+25d) | 2012-03-03 → 2012-03-30 (+27d) |  |  |  |  |  |
| 160 | **Supported People Management** | 2012-02-24 → 2012-03-21 (+26d) | 2012-02-29 → 2012-03-27 (+27d) | 3d? → 3.25d? |  |  |  |  |

| ID | Task | Start | Finish | Duration | Total float | Predecessors | Other |
| --- | --- | --- | --- | --- | --- | --- | --- |
| 161 | Design Supported People Management | 2012-02-24 → 2012-03-21 (+26d) | 2012-02-25 → 2012-03-23 (+27d) |  |  |  |  |
| 162 | Code Supported People Management | 2012-02-25 → 2012-03-23 (+27d) | 2012-02-28 → 2012-03-24 (+25d) |  |  |  |  |
| 163 | Test Supported People Management | 2012-02-28 → 2012-03-24 (+25d) | 2012-02-29 → 2012-03-27 (+27d) |  |  |  |  |
| 164 | **Family Relationship Management** | 2012-02-24 → 2012-03-21 (+26d) | 2012-03-03 → 2012-03-30 (+27d) | 5.25d? → 5.5d? | 2d → 1.5d |  |  |
| 165 | Design Family Relationship Management | 2012-02-24 → 2012-03-21 (+26d) | 2012-02-28 → 2012-03-23 (+24d) |  | 1.5d → 2d |  |  |
| 166 | Code Family Relationship Management | 2012-02-28 → 2012-03-24 (+25d) | 2012-03-02 → 2012-03-28 (+26d) |  | 1.5d → 1.75d |  |  |
| 167 | Test Family Relationship Management | 2012-03-02 → 2012-03-28 (+26d) | 2012-03-03 → 2012-03-30 (+27d) |  | 2d → 1.5d |  |  |
| 168 | **Staff History** | 2012-02-29 → 2012-03-27 (+27d) | 2012-03-06 → 2012-03-30 (+24d) | 3.25d? → 2.75d? |  |  |  |
| 169 | Design Staff History | 2012-02-29 → 2012-03-27 (+27d) | 2012-03-02 → 2012-03-27 (+25d) |  |  |  |  |
| 170 | Code Staff History | 2012-03-02 → 2012-03-28 (+26d) | 2012-03-03 → 2012-03-30 (+27d) |  |  |  |  |
| 171 | Test Staff History | 2012-03-03 → 2012-03-30 (+27d) | 2012-03-06 → 2012-03-30 (+24d) |  |  |  |  |
| 172 | Integrate | 2012-03-06 → 2012-03-31 (+25d) | 2012-03-06 → 2012-03-31 (+25d) |  | 1d → 1.25d |  |  |
| 173 | Testing | 2012-03-06 → 2012-03-31 (+25d) | 2012-03-09 → 2012-04-03 (+25d) |  |  |  |  |
| 174 | **Increment 2: Training Management** | 2012-02-28 → 2012-03-24 (+25d) | 2012-03-24 → 2012-04-18 (+25d) | 16.5d? → 16.25d? |  | none → 144 |  |
| 175 | **Reward Management** | 2012-02-28 → 2012-03-24 (+25d) | 2012-03-03 → 2012-03-28 (+25d) | 3d? → 2.75d? | 0.69d → 1.5d |  |  |
| 176 | Design Reward Management | 2012-02-28 → 2012-03-24 (+25d) | 2012-02-29 → 2012-03-24 (+24d) |  | 0.69d → 1.5d |  |  |
| 177 | Code Reward Management | 2012-02-29 → 2012-03-27 (+27d) | 2012-03-02 → 2012-03-28 (+26d) |  | 0.94d → 1.25d |  |  |
| 178 | Test Reward Management | 2012-03-02 → 2012-03-28 (+26d) | 2012-03-03 → 2012-03-28 (+25d) |  | 0.69d → 1.5d |  |  |
| 179 | **Staff Internship Management** | 2012-02-28 → 2012-03-24 (+25d) | 2012-03-03 → 2012-03-28 (+25d) | 3d? → 2.75d? |  |  |  |
| 180 | Design Staff Internship Management | 2012-02-28 → 2012-03-24 (+25d) | 2012-02-29 → 2012-03-24 (+24d) |  |  |  |  |
| 181 | Code Staff Internship Management | 2012-02-29 → 2012-03-27 (+27d) | 2012-03-02 → 2012-03-28 (+26d) |  |  |  |  |
| 182 | Test Staff Internship Management | 2012-03-02 → 2012-03-28 (+26d) | 2012-03-03 → 2012-03-28 (+25d) |  |  |  |  |
| 183 | **Training Result Management** | 2012-02-28 → 2012-03-24 (+25d) | 2012-03-03 → 2012-03-28 (+25d) | 3d? → 2.75d? |  |  |  |
| 184 | Design Training Result Management | 2012-02-28 → 2012-03-24 (+25d) | 2012-02-29 → 2012-03-24 (+24d) |  |  |  |  |
| 185 | Code Training Result Management | 2012-02-29 → 2012-03-27 (+27d) | 2012-03-02 → 2012-03-28 (+26d) |  |  |  |  |
| 186 | Test Training Result Management | 2012-03-02 → 2012-03-28 (+26d) | 2012-03-03 → 2012-03-28 (+25d) |  |  |  |  |
| 187 | **Facilitate Management** | 2012-02-29 → 2012-03-27 (+27d) | 2012-03-03 → 2012-03-30 (+27d) |  | 1.5d → 1.25d |  |  |
| 188 | Design Facilitate Management | 2012-02-29 → 2012-03-27 (+27d) | 2012-02-29 → 2012-03-27 (+27d) |  | 1.5d → 1.25d |  |  |
| 189 | Code Facilitate Management | 2012-02-29 → 2012-03-27 (+27d) | 2012-03-03 → 2012-03-28 (+25d) |  | 1.5d → 1.75d |  |  |
| 190 | Test Facilitate Management | 2012-03-03 → 2012-03-30 (+27d) | 2012-03-03 → 2012-03-30 (+27d) |  | 1.5d → 1.25d |  |  |
| 191 | **Union Management** | 2012-03-09 → 2012-04-04 (+26d) | 2012-03-13 → 2012-04-07 (+25d) |  | 3.75d → 4d |  |  |
| 192 | Design Union Management | 2012-03-09 → 2012-04-04 (+26d) | 2012-03-09 → 2012-04-04 (+26d) |  | 3.75d → 4d |  |  |
| 193 | Code Union Management | 2012-03-09 → 2012-04-04 (+26d) | 2012-03-13 → 2012-04-06 (+24d) |  | 3.75d → 4.25d |  |  |
| 194 | Test Union Management | 2012-03-13 → 2012-04-07 (+25d) | 2012-03-13 → 2012-04-07 (+25d) |  | 3.75d → 4d |  |  |
| 195 | **Task NoteBook Management** | 2012-03-09 → 2012-04-04 (+26d) | 2012-03-13 → 2012-04-07 (+25d) |  | 1d → 1.25d |  | was named Task Note Book Management |
| 196 | Design Task Note Book Management | 2012-03-09 → 2012-04-04 (+26d) | 2012-03-09 → 2012-04-04 (+26d) |  | 1d → 1.25d |  |  |
| 197 | Code Task Note Book Management | 2012-03-09 → 2012-04-04 (+26d) | 2012-03-13 → 2012-04-06 (+24d) |  |  |  |  |
| 198 | Test Task Note Book Management | 2012-03-13 → 2012-04-07 (+25d) | 2012-03-13 → 2012-04-07 (+25d) |  | 1d → 1.25d |  |  |
| 199 | **Training Course Management** | 2012-03-13 → 2012-04-07 (+25d) | 2012-03-17 → 2012-04-13 (+27d) | 3d → 3.25d |  |  |  |
| 200 | Design Training Course Management | 2012-03-13 → 2012-04-07 (+25d) | 2012-03-14 → 2012-04-10 (+27d) |  |  |  |  |
| 201 | Code Training Course Management | 2012-03-14 → 2012-04-10 (+27d) | 2012-03-16 → 2012-04-11 (+26d) |  |  |  |  |
| 202 | Test Training Course Management | 2012-03-16 → 2012-04-11 (+26d) | 2012-03-17 → 2012-04-13 (+27d) |  |  |  |  |
| 203 | **Internal Training Management** | 2012-03-10 → 2012-04-06 (+27d) | 2012-03-14 → 2012-04-10 (+27d) |  | 1.5d → 1.25d |  |  |
| 204 | Design Internal Training Management | 2012-03-10 → 2012-04-06 (+27d) | 2012-03-10 → 2012-04-06 (+27d) |  | 1.5d → 1.25d |  |  |
| 205 | Code Internal Training Management | 2012-03-10 → 2012-04-06 (+27d) | 2012-03-14 → 2012-04-07 (+24d) |  | 1.5d → 1.75d |  |  |
| 206 | Test Internal Training Management | 2012-03-14 → 2012-04-10 (+27d) | 2012-03-14 → 2012-04-10 (+27d) |  | 1.5d → 1.25d |  |  |
| 207 | **Emulation Management** | 2012-03-14 → 2012-04-10 (+27d) | 2012-03-20 → 2012-04-14 (+25d) | 3.25d? → 3d? | 1.25d → 1.5d |  |  |
| 208 | Design Emulation Management | 2012-03-14 → 2012-04-10 (+27d) | 2012-03-16 → 2012-04-11 (+26d) |  | 1.25d → 1.5d |  |  |
| 209 | Code Emulation Management | 2012-03-16 → 2012-04-11 (+26d) | 2012-03-17 → 2012-04-13 (+27d) |  |  |  |  |
| 210 | Test Emulation Management | 2012-03-17 → 2012-04-13 (+27d) | 2012-03-20 → 2012-04-14 (+25d) |  | 1.25d → 1.5d |  |  |
| 211 | **Lecture Probation Management** | 2012-03-17 → 2012-04-13 (+27d) | 2012-03-23 → 2012-04-17 (+25d) | 3.25d? → 2.75d? |  |  |  |
| 212 | Design Lecture Probation Management | 2012-03-17 → 2012-04-13 (+27d) | 2012-03-20 → 2012-04-13 (+24d) |  |  |  |  |
| 213 | Code Lecture Probation Management | 2012-03-20 → 2012-04-14 (+25d) | 2012-03-21 → 2012-04-17 (+27d) |  |  |  |  |
| 214 | Test Lecture Probation Management | 2012-03-21 → 2012-04-17 (+27d) | 2012-03-23 → 2012-04-17 (+25d) |  |  |  |  |
| 215 | **Mobilization Management** | 2012-03-03 → 2012-03-30 (+27d) | 2012-03-07 → 2012-04-03 (+27d) |  |  |  |  |
| 216 | Design Mobilization Management | 2012-03-03 → 2012-03-30 (+27d) | 2012-03-03 → 2012-03-30 (+27d) |  |  |  |  |
| 217 | Code Mobilization Management | 2012-03-03 → 2012-03-30 (+27d) | 2012-03-07 → 2012-03-31 (+24d) |  |  |  |  |
| 218 | Test Mobilization Management | 2012-03-07 → 2012-04-03 (+27d) | 2012-03-07 → 2012-04-03 (+27d) |  |  |  |  |
| 219 | **Penalty Management** | 2012-03-06 → 2012-03-30 (+24d) | 2012-03-09 → 2012-04-04 (+26d) | 2.75d? → 3d? | 0.56d → 1.5d |  |  |
| 220 | Design Penalty Management | 2012-03-06 → 2012-03-30 (+24d) | 2012-03-06 → 2012-03-31 (+25d) |  | 0.56d → 1.5d |  |  |
| 221 | Code Penalty Management | 2012-03-06 → 2012-03-31 (+25d) | 2012-03-07 → 2012-04-03 (+27d) |  | 10.75d → 1.25d |  |  |
| 222 | Test Penalty Management | 2012-03-09 → 2012-04-03 (+25d) | 2012-03-09 → 2012-04-04 (+26d) |  | 0.56d → 1.5d |  |  |
| 223 | **Lecture Position Management** | 2012-03-09 → 2012-04-04 (+26d) | 2012-03-14 → 2012-04-07 (+24d) | 3d? → 2.75d? | 0.81d → 1.5d |  |  |
| 224 | Design Lecture Position Management | 2012-03-09 → 2012-04-04 (+26d) | 2012-03-10 → 2012-04-04 (+25d) |  | 10.5d → 1.5d |  |  |
| 225 | Code Lecture Position Management | 2012-03-10 → 2012-04-06 (+27d) | 2012-03-13 → 2012-04-07 (+25d) |  | 10.25d → 1.25d |  |  |
| 226 | Test Lecture Position Management | 2012-03-13 → 2012-04-07 (+25d) | 2012-03-14 → 2012-04-07 (+24d) |  | 10.5d → 1.5d |  |  |
| 227 | **Communist Party Management** | 2012-03-16 → 2012-04-10 (+25d) | 2012-03-20 → 2012-04-14 (+25d) | 2.75d? → 3d? | 1.06d → 1.5d |  |  |
| 228 | Design Communist Party Management | 2012-03-16 → 2012-04-10 (+25d) | 2012-03-16 → 2012-04-11 (+26d) |  | 1.06d → 1.5d |  |  |
| 229 | Code Communist Party Management | 2012-03-16 → 2012-04-11 (+26d) | 2012-03-17 → 2012-04-13 (+27d) |  | 11d → 1.25d |  |  |
| 230 | Test Communist Party Management | 2012-03-20 → 2012-04-13 (+24d) | 2012-03-20 → 2012-04-14 (+25d) |  | 1.06d → 1.5d |  |  |

| ID | Task | Start | Finish | Duration | Total float | Predecessors | Other |
| --- | --- | --- | --- | --- | --- | --- | --- |
| 231 | **Trade Union Management** | 2012-03-13 → 2012-04-07 (+25d) | 2012-03-17 → 2012-04-13 (+27d) | 3d? → 3.25d? | 4.25d → 3.75d |  |  |
| 232 | Design Trade Union Management | 2012-03-13 → 2012-04-07 (+25d) | 2012-03-14 → 2012-04-10 (+27d) |  | 4.25d → 3.75d |  |  |
| 233 | Code Trade Union Management | 2012-03-14 → 2012-04-10 (+27d) | 2012-03-16 → 2012-04-11 (+26d) |  |  |  |  |
| 234 | Test Trade Union Management | 2012-03-16 → 2012-04-11 (+26d) | 2012-03-17 → 2012-04-13 (+27d) |  | 4.25d → 3.75d |  |  |
| 235 | **Syllabus Management** | 2012-03-07 → 2012-04-03 (+27d) | 2012-03-13 → 2012-04-07 (+25d) | 3.25d? → 3d? |  |  |  |
| 236 | Design Syllabus Management | 2012-03-07 → 2012-04-03 (+27d) | 2012-03-09 → 2012-04-04 (+26d) |  |  |  |  |
| 237 | Code Syllabus Management | 2012-03-09 → 2012-04-04 (+26d) | 2012-03-10 → 2012-04-06 (+27d) |  |  |  |  |
| 238 | Test Syllabus Management | 2012-03-10 → 2012-04-06 (+27d) | 2012-03-13 → 2012-04-07 (+25d) |  |  |  |  |
| 239 | **Science Research Management** | 2012-03-13 → 2012-04-07 (+25d) | 2012-03-17 → 2012-04-11 (+25d) | 3d? → 2.75d? |  |  |  |
| 240 | Design Science Research Management | 2012-03-13 → 2012-04-07 (+25d) | 2012-03-14 → 2012-04-07 (+24d) |  |  |  |  |
| 241 | Code Science Research Management | 2012-03-14 → 2012-04-10 (+27d) | 2012-03-16 → 2012-04-11 (+26d) |  |  |  |  |
| 242 | Test Science Research Management | 2012-03-16 → 2012-04-11 (+26d) | 2012-03-17 → 2012-04-11 (+25d) |  |  |  |  |
| 243 | **Other Management** | 2012-03-03 → 2012-03-30 (+27d) | 2012-03-07 → 2012-04-03 (+27d) |  |  |  |  |
| 244 | Design Other Management | 2012-03-03 → 2012-03-30 (+27d) | 2012-03-03 → 2012-03-30 (+27d) |  |  |  |  |
| 245 | Code Other Management | 2012-03-03 → 2012-03-30 (+27d) | 2012-03-07 → 2012-03-31 (+24d) |  |  |  |  |
| 246 | Test Other Management | 2012-03-07 → 2012-04-03 (+27d) | 2012-03-07 → 2012-04-03 (+27d) |  |  |  |  |
| 247 | **Work Management** | 2012-03-07 → 2012-04-03 (+27d) | 2012-03-13 → 2012-04-07 (+25d) | 3.25d? → 3d? |  |  |  |
| 248 | Design Work Management | 2012-03-07 → 2012-04-03 (+27d) | 2012-03-09 → 2012-04-04 (+26d) |  |  |  |  |
| 249 | Code Work Management | 2012-03-09 → 2012-04-04 (+26d) | 2012-03-10 → 2012-04-06 (+27d) |  |  |  |  |
| 250 | Test Work Management | 2012-03-10 → 2012-04-06 (+27d) | 2012-03-13 → 2012-04-07 (+25d) |  |  |  |  |
| 251 | **Master Thesis Guideline Management** | 2012-03-13 → 2012-04-07 (+25d) | 2012-03-17 → 2012-04-11 (+25d) | 3d? → 2.75d? |  |  |  |
| 252 | Design Master Thesis Guideline Management | 2012-03-13 → 2012-04-07 (+25d) | 2012-03-14 → 2012-04-07 (+24d) |  |  |  |  |
| 253 | Code Master Thesis Guideline Management | 2012-03-14 → 2012-04-10 (+27d) | 2012-03-16 → 2012-04-11 (+26d) |  |  |  |  |
| 254 | Test Master Thesis Guideline Management | 2012-03-16 → 2012-04-11 (+26d) | 2012-03-17 → 2012-04-11 (+25d) |  |  |  |  |
| 255 | **Article Management** | 2012-03-17 → 2012-04-13 (+27d) | 2012-03-21 → 2012-04-17 (+27d) |  |  |  |  |
| 256 | Design Article Management | 2012-03-17 → 2012-04-13 (+27d) | 2012-03-17 → 2012-04-13 (+27d) |  |  |  |  |
| 257 | Code Article Management | 2012-03-17 → 2012-04-13 (+27d) | 2012-03-21 → 2012-04-14 (+24d) |  |  |  |  |
| 258 | Test Article Management | 2012-03-21 → 2012-04-17 (+27d) | 2012-03-21 → 2012-04-17 (+27d) |  |  |  |  |
| 259 | **Subject Management** | 2012-03-03 → 2012-03-30 (+27d) | 2012-03-10 → 2012-04-04 (+25d) | 4d? → 3.5d? | 1.5d → 1.75d |  |  |
| 260 | Design Subject Management | 2012-03-03 → 2012-03-30 (+27d) | 2012-03-07 → 2012-03-31 (+24d) |  | 1.5d → 1.75d |  |  |
| 261 | Code Subject Management | 2012-03-07 → 2012-04-03 (+27d) | 2012-03-09 → 2012-04-04 (+26d) |  |  |  |  |
| 262 | Test Subject Management | 2012-03-09 → 2012-04-04 (+26d) | 2012-03-10 → 2012-04-04 (+25d) |  | 1.25d → 1.5d |  |  |
| 263 | **Income Management** | 2012-03-10 → 2012-04-06 (+27d) | 2012-03-14 → 2012-04-10 (+27d) |  | 1.5d → 1.25d |  |  |
| 264 | Design Income Management | 2012-03-10 → 2012-04-06 (+27d) | 2012-03-10 → 2012-04-06 (+27d) |  | 1.5d → 1.25d |  |  |
| 265 | Code Income Management | 2012-03-10 → 2012-04-06 (+27d) | 2012-03-14 → 2012-04-07 (+24d) |  | 1.5d → 1.75d |  |  |
| 266 | Test Income Management | 2012-03-14 → 2012-04-10 (+27d) | 2012-03-14 → 2012-04-10 (+27d) |  | 1.5d → 1.25d |  |  |
| 267 | **Salary Coefficient Management** | 2012-03-14 → 2012-04-10 (+27d) | 2012-03-20 → 2012-04-14 (+25d) | 3.25d? → 3d? | 1.25d → 1.5d |  |  |
| 268 | Design Salary Coefficient Management | 2012-03-14 → 2012-04-10 (+27d) | 2012-03-16 → 2012-04-11 (+26d) |  | 1.25d → 1.5d |  |  |
| 269 | Code Salary Coefficient Management | 2012-03-16 → 2012-04-11 (+26d) | 2012-03-17 → 2012-04-13 (+27d) |  |  |  |  |
| 270 | Test Salary Coefficient Management | 2012-03-17 → 2012-04-13 (+27d) | 2012-03-20 → 2012-04-14 (+25d) |  | 1.25d → 1.5d |  |  |
| 271 | Integrate | 2012-03-21 → 2012-04-17 (+27d) | 2012-03-23 → 2012-04-18 (+26d) |  |  |  |  |
| 272 | Testing | 2012-03-23 → 2012-04-18 (+26d) | 2012-03-24 → 2012-04-18 (+25d) |  |  |  |  |
| 273 | **Increment 3: Report** | 2012-03-24 → 2012-04-20 (+27d) | 2012-04-10 → 2012-05-05 (+25d) | 10.5d → 10.25d |  |  | was named Increment 6: Report; resources none → 143 |
| 274 | **Report Management** | 2012-03-24 → 2012-04-20 (+27d) | 2012-04-04 → 2012-05-01 (+27d) |  |  |  |  |
| 275 | Design Report | 2012-03-24 → 2012-04-20 (+27d) | 2012-03-27 → 2012-04-21 (+25d) |  |  |  |  |
| 276 | Code Report | 2012-03-27 → 2012-04-21 (+25d) | 2012-04-03 → 2012-04-28 (+25d) |  |  |  |  |
| 277 | Test Report | 2012-04-03 → 2012-04-28 (+25d) | 2012-04-04 → 2012-05-01 (+27d) |  |  |  |  |
| 278 | Integrate | 2012-04-04 → 2012-05-01 (+27d) | 2012-04-07 → 2012-05-02 (+25d) |  |  |  |  |
| 279 | Test | 2012-04-07 → 2012-05-04 (+27d) | 2012-04-10 → 2012-05-05 (+25d) |  |  |  |  |
| 280 | Conduct System test | 2012-04-10 → 2012-05-05 (+25d) | 2012-04-14 → 2012-05-09 (+25d) |  |  |  |  |
| 281 | Conduct Acceptance test | 2012-04-14 → 2012-05-11 (+27d) | 2012-04-18 → 2012-05-15 (+27d) |  |  |  |  |
| 283 | Deployment | 2012-04-18 → 2012-05-15 (+27d) | 2012-04-24 → 2012-05-19 (+25d) |  |  | 281 → 281, 282, 133 |  |
| 284 | Deliver to customer | 2012-04-24 → 2012-05-19 (+25d) | 2012-05-01 → 2012-05-26 (+25d) |  |  |  |  |
| 285 | Maintaining | 2012-05-01 → 2012-05-26 (+25d) | 2012-05-02 → 2012-05-29 (+27d) |  |  |  |  |

## Version 5 (data date 2012-03-09, saved 2012-05-04)

Note of the change: Update Detail design for Dang

Last finish stays 2012-05-29.

Added:

| ID | Task | Duration | Start | Finish |
| --- | --- | --- | --- | --- |
| 284 | Update Manage Doc | 1d? | 2011-09-27 | 2011-09-27 |
| 285 | Update SRS Doc | 1d? | 2011-09-27 | 2011-09-27 |
| 286 | Update ContOps | 1d? | 2011-09-27 | 2011-09-27 |
| 287 | Update | 1d? | 2011-09-27 | 2011-09-27 |

Changed:

| ID | Task | Predecessors | Other |
| --- | --- | --- | --- |
| 161 | Design Supported People Management |  | resources Nguyen → Dang |
| 169 | Design Staff History |  | resources Nguyen → Dang |
| 176 | Design Reward Management |  | resources Tuong → Dang |
| 192 | Design Union Management |  | resources Tung → Dang |
| 196 | Design Task Note Book Management |  | resources Nhung → Dang |
| 200 | Design Training Course Management |  | resources Nhung → Dang |
| 204 | Design Internal Training Management |  | resources Nguyen → Dang |
| 208 | Design Emulation Management |  | resources Nguyen → Dang |
| 212 | Design Lecture Probation Management |  | resources Nhung → Dang |
| 216 | Design Mobilization Management |  | resources Loc → Dang |
| 220 | Design Penalty Management |  | resources Tuong → Dang |
| 228 | Design Communist Party Management |  | resources Tuong → Dang |
| 232 | Design Trade Union Management |  | resources Tung → Dang |
| 236 | Design Syllabus Management |  | resources Loc → Dang |
| 273 | **Increment 3: Report** | none → 143 | resources 143 → none |
| 275 | Design Report |  | resources Loc → Dang |
| 283 | Reflection |  | was named Deployment |

## Version 6 (data date 2012-03-09, saved 2012-05-07)

Note of the change: Update design for Dang

Last finish 2012-05-29 → 2012-05-25 (-4d).

Changed:

| ID | Task | Start | Finish | Duration | Other |
| --- | --- | --- | --- | --- | --- |
| 1 | **Human Resource Management** | 2011-09-27 → 2011-09-27 08:00 | 2012-05-29 → 2012-05-25 09:00 (-4d) | 149.25d? → 147.06d? | baseline start 2011-09-22 → 2011-09-22 08:00; baseline finish 2012-04-30 → 2012-04-30 17:00 |
| 2 | Kick off meeting | 2011-09-27 → 2011-09-27 08:00 | 2011-09-28 → 2011-09-28 15:00 |  | constraint start no earlier than 2011-09-27 → start no earlier than 2011-09-27 08:00 |
| 3 | **Start Up** | 2011-09-28 → 2011-09-28 15:00 | 2011-10-01 → 2011-10-01 15:30 |  | baseline start 2011-09-22 → 2011-09-22 08:00; baseline finish 2012-04-17 → 2012-04-17 17:00 |
| 4 | **Research process** | 2011-09-28 → 2011-09-28 15:00 | 2011-09-30 → 2011-09-30 14:30 |  | baseline start 2011-10-01 → 2011-10-01 08:00; baseline finish 2012-03-22 → 2012-03-22 17:00 |
| 5 | **Requirement Process** | 2011-09-28 → 2011-09-28 15:00 | 2011-09-30 → 2011-09-30 14:30 |  |  |
| 6 | Research phases in process | 2011-09-28 → 2011-09-28 15:00 | 2011-09-30 → 2011-09-30 14:30 |  |  |
| 7 | Research tool and document templates | 2011-09-28 → 2011-09-28 15:00 | 2011-09-30 → 2011-09-30 14:30 |  |  |
| 8 | **Architect process** | 2011-09-28 → 2011-09-28 15:00 | 2011-09-30 → 2011-09-30 14:30 |  |  |
| 9 | Research phases in process | 2011-09-28 → 2011-09-28 15:00 | 2011-09-30 → 2011-09-30 14:30 |  |  |
| 10 | Research tool and document templates | 2011-09-28 → 2011-09-28 15:00 | 2011-09-30 → 2011-09-30 14:30 |  |  |
| 11 | **Detail design process** | 2011-09-28 → 2011-09-28 15:00 | 2011-09-30 → 2011-09-30 14:30 |  |  |
| 12 | Research phases in process | 2011-09-28 → 2011-09-28 15:00 | 2011-09-30 → 2011-09-30 14:30 |  |  |
| 13 | Research tool and document templates | 2011-09-28 → 2011-09-28 15:00 | 2011-09-30 → 2011-09-30 14:30 |  |  |
| 14 | Testing process | 2011-09-28 → 2011-09-28 15:00 | 2011-09-30 → 2011-09-30 14:30 |  |  |
| 15 | Research Process Management: Risk, Measure, Change | 2011-09-28 → 2011-09-28 15:00 | 2011-09-30 → 2011-09-30 14:30 |  |  |
| 16 | **Develop Project Plan** | 2011-09-30 → 2011-09-30 14:30 | 2011-10-01 → 2011-10-01 15:30 |  | baseline start 2011-09-22 → 2011-09-22 08:00; baseline finish 2011-09-26 → 2011-09-26 17:00 |
| 17 | **Requirement Process** | 2011-09-30 → 2011-09-30 14:30 | 2011-10-01 → 2011-10-01 15:30 |  |  |
| 18 | Draw process | 2011-09-30 → 2011-09-30 14:30 | 2011-10-01 → 2011-10-01 15:30 |  |  |
| 19 | Describe stage in process | 2011-09-30 → 2011-09-30 14:30 | 2011-10-01 → 2011-10-01 15:30 |  |  |
| 20 | **Architect process** | 2011-09-30 → 2011-09-30 14:30 | 2011-10-01 → 2011-10-01 15:30 |  |  |
| 21 | Draw process | 2011-09-30 → 2011-09-30 14:30 | 2011-10-01 → 2011-10-01 15:30 |  |  |
| 22 | Describe stage in process | 2011-09-30 → 2011-09-30 14:30 | 2011-10-01 → 2011-10-01 15:30 |  |  |
| 23 | **Detail design process** | 2011-09-30 → 2011-09-30 14:30 | 2011-10-01 → 2011-10-01 15:30 |  |  |
| 24 | Draw process | 2011-09-30 → 2011-09-30 14:30 | 2011-10-01 → 2011-10-01 15:30 |  |  |
| 25 | Describe stage in process | 2011-09-30 → 2011-09-30 14:30 | 2011-10-01 → 2011-10-01 15:30 |  |  |
| 26 | Testing process | 2011-09-30 → 2011-09-30 14:30 | 2011-10-01 → 2011-10-01 15:30 |  |  |
| 27 | Doc Process Management: Risk, Measurement, Change | 2011-09-30 → 2011-09-30 14:30 | 2011-10-01 → 2011-10-01 15:30 |  |  |
| 28 | **Requirement Analysis** | 2011-10-04 → 2011-10-04 08:00 | 2012-01-24 → 2012-01-24 14:30 |  | baseline start 2011-10-01 → 2011-10-01 08:00; baseline finish 2011-11-20 → 2011-11-20 17:00 |
| 29 | **Conference with cus 1** | 2011-10-04 → 2011-10-04 08:00 | 2011-10-06 → 2011-10-06 16:00 |  |  |
| 30 | **Prepare 1** | 2011-10-04 → 2011-10-04 08:00 | 2011-10-04 → 2011-10-04 11:00 |  |  |
| 31 | C1: Research HRM processes | 2011-10-04 → 2011-10-04 08:00 | 2011-10-04 → 2011-10-04 10:00 |  |  |
| 32 | C1: Research business, role | 2011-10-04 → 2011-10-04 08:00 | 2011-10-04 → 2011-10-04 10:00 |  |  |
| 33 | C1: Prepare questions to ask customer | 2011-10-04 → 2011-10-04 08:00 | 2011-10-04 → 2011-10-04 10:00 |  |  |
| 34 | C1: Send mail for customer | 2011-10-04 → 2011-10-04 10:00 | 2011-10-04 → 2011-10-04 11:00 |  |  |
| 35 | **Elicitate requirement 1** | 2011-10-04 → 2011-10-04 13:00 | 2011-10-05 → 2011-10-05 13:30 |  | baseline start 2011-10-01 → 2011-10-01 08:00; baseline finish 2011-11-12 → 2011-11-12 17:00 |
| 36 | C1: Write down meeting 1 | 2011-10-04 → 2011-10-04 13:00 | 2011-10-05 → 2011-10-05 13:30 |  |  |
| 37 | C1: Support write down meeting 1 | 2011-10-04 → 2011-10-04 13:00 | 2011-10-05 → 2011-10-05 13:30 |  |  |
| 38 | C1: Manage meeting 1 | 2011-10-04 → 2011-10-04 13:00 | 2011-10-05 → 2011-10-05 13:30 |  |  |
| 39 | C1: Attending conference 1 | 2011-10-04 → 2011-10-04 13:00 | 2011-10-05 → 2011-10-05 13:30 |  |  |
| 40 | **Analyze requirement 1** | 2011-10-05 → 2011-10-05 13:30 | 2011-10-06 → 2011-10-06 16:00 |  | baseline start 2011-11-20 → 2011-11-20 17:00; baseline finish 2011-11-20 → 2011-11-20 17:00 |
| 41 | C1: Doc ConsOpt: Introduction | 2011-10-05 → 2011-10-05 13:30 | 2011-10-05 → 2011-10-05 15:30 |  |  |
| 42 | C1: Doc ConsOpt: Current System & Reason for improvement | 2011-10-05 → 2011-10-05 13:30 | 2011-10-05 → 2011-10-05 15:30 |  |  |
| 43 | C1: Doc Qui trinh nghiep vu tong quat | 2011-10-05 → 2011-10-05 13:30 | 2011-10-06 → 2011-10-06 16:00 |  |  |
| 44 | C1: Guide doc Concept | 2011-10-05 → 2011-10-05 13:30 | 2011-10-06 → 2011-10-06 16:00 |  |  |
| 45 | C1: Review document | 2011-10-05 → 2011-10-05 13:30 | 2011-10-06 → 2011-10-06 16:00 |  |  |
| 46 | C1: Fix error in document | 2011-10-05 → 2011-10-05 13:30 | 2011-10-06 → 2011-10-06 16:00 |  |  |
| 47 | **Conference with cus 2** | 2011-10-05 → 2011-10-05 13:30 | 2011-10-27 → 2011-10-27 10:00 |  |  |
| 48 | **Prepare 2** | 2011-10-05 → 2011-10-05 13:30 | 2011-10-06 → 2011-10-06 09:00 |  |  |
| 49 | C2: Đọc và phân tích biểu mẫu Sơ yếu lí lịch | 2011-10-05 → 2011-10-05 13:30 | 2011-10-05 → 2011-10-05 15:30 |  |  |
| 50 | C2: Thu thập và chuẩn bị các câu hỏi về Tuyển dụng và làm mới HSNS | 2011-10-05 → 2011-10-05 13:30 | 2011-10-05 → 2011-10-05 15:30 |  |  |
| 51 | C2: Send mail for customer | 2011-10-06 → 2011-10-06 08:00 | 2011-10-06 → 2011-10-06 09:00 |  |  |
| 52 | **Elicitate Requirement 2** | 2011-10-07 → 2011-10-07 13:00 | 2011-10-07 → 2011-10-07 17:00 |  |  |
| 53 | C2: Write down meeting 2 | 2011-10-07 → 2011-10-07 13:00 | 2011-10-07 → 2011-10-07 17:00 |  |  |
| 54 | C2: Support write down meeting 2 | 2011-10-07 → 2011-10-07 13:00 | 2011-10-07 → 2011-10-07 17:00 |  |  |
| 55 | C2: Manage meeting 2 | 2011-10-07 → 2011-10-07 13:00 | 2011-10-07 → 2011-10-07 17:00 |  |  |
| 56 | C2: Attending conference 2 | 2011-10-07 → 2011-10-07 13:00 | 2011-10-07 → 2011-10-07 17:00 |  |  |
| 57 | **Analyze requirement** | 2011-10-08 → 2011-10-08 08:00 | 2011-10-27 → 2011-10-27 10:00 |  |  |
| 58 | C2: Doc Mô hình phân rã chức năng HSNS | 2011-10-08 → 2011-10-08 08:00 | 2011-10-18 → 2011-10-18 10:30 |  |  |
| 59 | C2: Draw process qui trinh nghiep vu tong quat | 2011-10-08 → 2011-10-08 08:00 | 2011-10-13 → 2011-10-13 10:00 |  |  |
| 60 | C2: Phân tích hệ thống dự kiến | 2011-10-08 → 2011-10-08 08:00 | 2011-10-18 → 2011-10-18 10:30 |  |  |
| 61 | C2: Doc Information Catalog: Thông tin chung | 2011-10-13 → 2011-10-13 10:00 | 2011-10-18 → 2011-10-18 10:30 |  |  |
| 62 | C2: Review document | 2011-10-18 → 2011-10-18 10:30 | 2011-10-21 → 2011-10-21 17:00 |  |  |
| 63 | C2: Fix error in document | 2011-10-22 → 2011-10-22 08:00 | 2011-10-27 → 2011-10-27 10:00 |  |  |
| 64 | **Conference with cus 3** | 2011-10-27 → 2011-10-27 10:00 | 2011-11-11 → 2011-11-11 14:00 |  |  |
| 65 | **Prepare 3** | 2011-10-27 → 2011-10-27 10:00 | 2011-10-29 → 2011-10-29 09:00 |  |  |
| 66 | C3: Research HRM processes | 2011-10-27 → 2011-10-27 10:00 | 2011-10-28 → 2011-10-28 17:00 |  |  |
| 67 | C3: Research business, role | 2011-10-27 → 2011-10-27 10:00 | 2011-10-28 → 2011-10-28 17:00 |  |  |
| 68 | C3: Prepare questions to ask customer | 2011-10-27 → 2011-10-27 10:00 | 2011-10-28 → 2011-10-28 17:00 |  |  |
| 69 | C3: Send mail for customer | 2011-10-29 → 2011-10-29 08:00 | 2011-10-29 → 2011-10-29 09:00 |  |  |
| 70 | **Elicitate Requirement 3** | 2011-10-29 → 2011-10-29 09:00 | 2011-10-29 → 2011-10-29 15:00 |  |  |

| ID | Task | Start | Finish | Other |
| --- | --- | --- | --- | --- |
| 71 | C3: Write down meeting 3 | 2011-10-29 → 2011-10-29 09:00 | 2011-10-29 → 2011-10-29 15:00 |  |
| 72 | C3: Support write down meeting 3 | 2011-10-29 → 2011-10-29 09:00 | 2011-10-29 → 2011-10-29 15:00 |  |
| 73 | C3: Manage meeting 3 | 2011-10-29 → 2011-10-29 09:00 | 2011-10-29 → 2011-10-29 15:00 |  |
| 74 | C3: Attending conference 3 | 2011-10-29 → 2011-10-29 09:00 | 2011-10-29 → 2011-10-29 15:00 |  |
| 75 | **Analyze requirement** | 2011-10-29 → 2011-10-29 15:00 | 2011-11-11 → 2011-11-11 14:00 |  |
| 76 | C3: Doc Information Category: Thông tin mở rộng | 2011-10-29 → 2011-10-29 15:00 | 2011-11-04 → 2011-11-04 14:00 |  |
| 77 | C3: Doc Mo hinh phan ra chuc nang HSNS | 2011-10-29 → 2011-10-29 15:00 | 2011-11-09 → 2011-11-09 14:30 |  |
| 78 | C3: Scenerio | 2011-10-29 → 2011-10-29 15:00 | 2011-11-09 → 2011-11-09 14:30 |  |
| 79 | C3: Processes | 2011-11-04 → 2011-11-04 14:00 | 2011-11-09 → 2011-11-09 14:30 |  |
| 80 | C3: Effect | 2011-10-29 → 2011-10-29 15:00 | 2011-11-09 → 2011-11-09 14:30 |  |
| 81 | C3: Review document | 2011-11-09 → 2011-11-09 14:30 | 2011-11-10 → 2011-11-10 11:00 |  |
| 82 | C3: Fix error in document | 2011-11-10 → 2011-11-10 13:00 | 2011-11-11 → 2011-11-11 14:00 |  |
| 83 | Send Concept Operation to customer | 2011-11-11 → 2011-11-11 14:00 | 2011-11-11 → 2011-11-11 16:00 | constraint start no earlier than 2011-11-10 → start no earlier than 2011-11-10 08:00 |
| 84 | C3: Update Information Category | 2011-11-11 → 2011-11-11 16:00 | 2012-01-12 → 2012-01-12 09:00 |  |
| 85 | C3: Update Process | 2011-11-11 → 2011-11-11 16:00 | 2012-01-12 → 2012-01-12 09:00 |  |
| 86 | C3: Review and fix Concept | 2011-11-11 → 2011-11-11 16:00 | 2012-01-12 → 2012-01-12 09:00 |  |
| 87 | **Conference with cus 4 (review)** | 2012-01-12 → 2012-01-12 09:00 | 2012-01-21 → 2012-01-21 10:00 |  |
| 88 | **Prepare 4** | 2012-01-12 → 2012-01-12 09:00 | 2012-01-13 → 2012-01-13 15:00 |  |
| 89 | C4: Research HRM processes | 2012-01-12 → 2012-01-12 09:00 | 2012-01-13 → 2012-01-13 14:00 |  |
| 90 | C4: Research business, role | 2012-01-12 → 2012-01-12 09:00 | 2012-01-13 → 2012-01-13 14:00 |  |
| 91 | C4: Prepare questions to ask customer | 2012-01-12 → 2012-01-12 09:00 | 2012-01-13 → 2012-01-13 14:00 |  |
| 92 | C4: Send mail for customer | 2012-01-13 → 2012-01-13 14:00 | 2012-01-13 → 2012-01-13 15:00 |  |
| 93 | **Elicitate Requirement 4** | 2012-01-13 → 2012-01-13 15:00 | 2012-01-14 → 2012-01-14 10:00 |  |
| 94 | C4: Write down meeting 4 | 2012-01-13 → 2012-01-13 15:00 | 2012-01-14 → 2012-01-14 10:00 |  |
| 95 | C4: Support write down meeting 4 | 2012-01-13 → 2012-01-13 15:00 | 2012-01-14 → 2012-01-14 10:00 |  |
| 96 | C4: Manage meeting 4 | 2012-01-13 → 2012-01-13 15:00 | 2012-01-14 → 2012-01-14 10:00 |  |
| 97 | C4: Attending conference 4 | 2012-01-13 → 2012-01-13 15:00 | 2012-01-14 → 2012-01-14 10:00 |  |
| 98 | **Analyze requirement** | 2012-01-14 → 2012-01-14 10:00 | 2012-01-21 → 2012-01-21 10:00 |  |
| 99 | Update Information Catgegories | 2012-01-14 → 2012-01-14 10:00 | 2012-01-17 → 2012-01-17 14:30 |  |
| 100 | Update Processes | 2012-01-14 → 2012-01-14 10:00 | 2012-01-17 → 2012-01-17 14:30 |  |
| 101 | C4: Review document | 2012-01-17 → 2012-01-17 14:30 | 2012-01-19 → 2012-01-19 14:00 |  |
| 102 | C4: Fix error in document | 2012-01-19 → 2012-01-19 14:00 | 2012-01-21 → 2012-01-21 10:00 |  |
| 103 | Update Plan | 2012-01-21 → 2012-01-21 10:00 | 2012-01-24 → 2012-01-24 14:30 |  |
| 104 | **Develop SRS** | 2011-11-11 → 2011-11-11 16:00 | 2012-01-17 → 2012-01-17 17:00 | baseline start 2011-10-23 → 2011-10-23 08:00; baseline finish 2011-11-20 → 2011-11-20 17:00 |
| 105 | **Document Software Requirement Specification (Draft version)** | 2011-11-11 → 2011-11-11 16:00 | 2011-11-19 → 2011-11-19 11:45 |  |
| 106 | **Develop use case specification** | 2011-11-11 → 2011-11-11 16:00 | 2011-11-17 → 2011-11-17 15:00 |  |
| 107 | Draw use cases | 2011-11-11 → 2011-11-11 16:00 | 2011-11-17 → 2011-11-17 15:00 |  |
| 108 | Draw activity diagram for use cases | 2011-11-11 → 2011-11-11 16:00 | 2011-11-17 → 2011-11-17 15:00 |  |
| 109 | Descripe use case | 2011-11-11 → 2011-11-11 16:00 | 2011-11-17 → 2011-11-17 15:00 |  |
| 110 | Monitoring tasks in SRS | 2011-11-11 → 2011-11-11 16:00 | 2011-11-17 → 2011-11-17 16:00 |  |
| 111 | Review SRS | 2011-11-11 → 2011-11-11 16:00 | 2011-11-19 → 2011-11-19 11:45 |  |
| 112 | Review | 2011-11-19 → 2011-11-19 13:00 | 2011-11-22 → 2011-11-22 09:30 |  |
| 113 | **Update SRS** | 2011-11-22 → 2011-11-22 09:30 | 2011-12-01 → 2011-12-01 09:00 |  |
| 114 | Update use case | 2011-11-22 → 2011-11-22 09:30 | 2011-11-25 → 2011-11-25 16:00 |  |
| 115 | Bussiness Rule | 2011-11-25 → 2011-11-25 16:00 | 2011-12-01 → 2011-12-01 09:00 |  |
| 116 | Functional Requirement | 2011-11-22 → 2011-11-22 09:30 | 2011-11-25 → 2011-11-25 16:00 |  |
| 117 | Software Requirement Specification (Final version) | 2011-11-22 → 2011-11-22 09:30 | 2011-11-25 → 2011-11-25 16:00 | constraint finish no earlier than 2011-11-01 → finish no earlier than 2011-11-01 17:00 |
| 118 | Develop interfaces | 2011-12-01 → 2011-12-01 09:00 | 2011-12-16 → 2011-12-16 16:00 | constraint start no earlier than 2011-11-29 → start no earlier than 2011-11-29 08:00 |
| 119 | Upadate interfaces | 2011-12-31 → 2011-12-31 13:30 | 2012-01-17 → 2012-01-17 17:00 | constraint finish no earlier than 2012-01-17 → finish no earlier than 2012-01-17 17:00 |
| 120 | Update Plan | 2012-01-24 → 2012-01-24 14:30 | 2012-01-26 → 2012-01-26 14:00 |  |
| 121 | **Architect Design Analysis** | 2011-11-04 → 2011-11-04 14:00 | 2012-02-11 → 2012-02-11 15:00 | baseline start 2011-10-24 → 2011-10-24 08:00; baseline finish 2011-12-25 → 2011-12-25 17:00 |
| 122 | **Develop architecture driver document (ADD)** | 2011-11-04 → 2011-11-04 14:00 | 2012-01-20 → 2012-01-20 14:00 | baseline start 2011-12-25 → 2011-12-25 17:00; baseline finish 2011-12-25 → 2011-12-25 17:00 |
| 123 | Discover architecture drivers | 2011-11-04 → 2011-11-04 14:00 | 2011-11-26 → 2011-11-26 15:00 | baseline start 2011-10-24 → 2011-10-24 08:00; baseline finish 2011-11-03 → 2011-11-03 17:00 |
| 124 | Document ADD(Draft version) | 2011-11-26 → 2011-11-26 15:00 | 2011-12-21 → 2011-12-21 14:30 | baseline start 2011-11-04 → 2011-11-04 08:00; baseline finish 2011-11-05 → 2011-11-05 17:00 |
| 125 | Review | 2011-12-21 → 2011-12-21 14:30 | 2011-12-28 → 2011-12-28 14:30 | baseline start 2011-11-06 → 2011-11-06 08:00; baseline finish 2011-11-06 → 2011-11-06 17:00 |
| 126 | Document ADD(Final version) | 2011-12-28 → 2011-12-28 14:30 | 2012-01-20 → 2012-01-20 14:00 |  |
| 127 | **Develop architecture design** | 2012-01-20 → 2012-01-20 14:00 | 2012-02-11 → 2012-02-11 15:00 | baseline start 2011-11-13 → 2011-11-13 08:00; baseline finish 2011-11-13 → 2011-11-13 17:00 |
| 128 | Research about new pattern | 2012-01-20 → 2012-01-20 14:00 | 2012-01-25 → 2012-01-25 14:30 | constraint finish no earlier than 2011-11-13 → finish no earlier than 2011-11-13 17:00; baseline start 2011-11-14 → 2011-11-14 08:00; baseline finish 2011-12-05 → 2011-12-05 17:00 |
| 129 | Document AD (Draft version) | 2012-01-25 → 2012-01-25 14:30 | 2012-02-04 → 2012-02-04 15:00 | baseline start 2011-12-06 → 2011-12-06 08:00; baseline finish 2011-12-06 → 2011-12-06 17:00 |
| 130 | Review | 2012-02-04 → 2012-02-04 15:00 | 2012-02-08 → 2012-02-08 14:30 | constraint finish no earlier than 2011-11-20 → finish no earlier than 2011-11-20 17:00; baseline start 2011-12-07 → 2011-12-07 08:00; baseline finish 2011-12-10 → 2011-12-10 17:00 |
| 131 | Document AD (Final version) | 2012-02-08 → 2012-02-08 14:30 | 2012-02-11 → 2012-02-11 15:00 | constraint finish no earlier than 2011-12-31 → finish no earlier than 2011-12-31 17:00; baseline start 2011-12-12 → 2011-12-12 08:00; baseline finish 2011-12-13 → 2011-12-13 17:00 |
| 132 | Design Database | 2012-02-11 → 2012-02-11 15:00 | 2012-02-29 → 2012-02-29 14:30 | baseline start 2011-12-14 → 2011-12-14 08:00; baseline finish 2011-12-24 → 2011-12-24 17:00 |
| 133 | Update Plan | 2012-02-11 → 2012-02-11 15:00 | 2012-02-15 → 2012-02-15 14:30 |  |
| 134 | **Testing** | 2012-01-24 → 2012-01-24 14:30 | 2012-02-15 → 2012-02-15 09:00 |  |
| 135 | **Design test case** | 2012-01-24 → 2012-01-24 14:30 | 2012-02-15 → 2012-02-15 09:00 |  |
| 136 | Acceptance test case | 2012-01-24 → 2012-01-24 14:30 | 2012-01-27 → 2012-01-27 08:30 |  |
| 137 | System test case | 2012-02-11 → 2012-02-11 15:00 | 2012-02-15 → 2012-02-15 09:00 |  |
| 138 | **Training Code** | 2011-11-03 → 2011-11-03 15:30 | 2011-12-02 → 2011-12-02 17:00 | baseline start 2012-03-04 → 2012-03-04 08:00; baseline finish 2012-03-04 → 2012-03-04 08:00 |
| 139 | ID generate | 2011-11-03 → 2011-11-03 15:30 | 2011-12-02 → 2011-12-02 17:00 | constraint finish no earlier than 2011-12-02 → finish no earlier than 2011-12-02 17:00; baseline start 2012-04-04 → 2012-04-04 17:00; baseline finish 2012-04-04 → 2012-04-04 17:00 |
| 140 | **Manage Catalog** | 2011-12-03 → 2011-12-03 08:00 | 2012-03-09 → 2012-03-09 17:00 |  |

| ID | Task | Start | Finish | Duration | Total float | Other |
| --- | --- | --- | --- | --- | --- | --- |
| 141 | Programming: Manage Catalog | 2011-12-03 → 2011-12-03 08:00 | 2012-03-06 → 2012-03-06 10:30 |  |  |  |
| 142 | Test Manage Catalog | 2012-03-06 → 2012-03-06 10:30 | 2012-03-09 → 2012-03-09 17:00 |  |  |  |
| 143 | **Increment 1: Detail Information Management** | 2012-03-10 → 2012-03-10 08:00 | 2012-04-03 → 2012-03-31 16:00 (-3d) | 15.5d? → 14.25d? |  |  |
| 144 | **Detail Information Management** | 2012-03-10 → 2012-03-10 08:00 | 2012-03-21 → 2012-03-21 14:00 |  |  |  |
| 145 | Design Detail Information Management | 2012-03-10 → 2012-03-10 08:00 | 2012-03-14 → 2012-03-14 14:00 |  |  | constraint start no earlier than 2012-02-13 → start no earlier than 2012-02-13 08:00 |
| 146 | Code Detail Information Management | 2012-03-14 → 2012-03-14 14:00 | 2012-03-20 → 2012-03-20 10:00 |  |  |  |
| 147 | Test Detail Information Management | 2012-03-20 → 2012-03-20 10:00 | 2012-03-21 → 2012-03-21 14:00 |  |  |  |
| 148 | **Employee Code Setting** | 2012-03-21 → 2012-03-21 14:00 | 2012-03-27 → 2012-03-24 15:00 (-3d) | 3.25d → 2.38d | 3.75d → 3.5d |  |
| 149 | Design Employee Code Setting | 2012-03-21 → 2012-03-21 14:00 | 2012-03-23 → 2012-03-21 15:00 (-2d) | 0.5d → 0.12d | 3.75d → 3.5d |  |
| 150 | Code Employee Code Setting | 2012-03-23 → 2012-03-21 15:00 (-2d) | 2012-03-24 → 2012-03-24 09:00 |  | 4.25d → 3.5d |  |
| 151 | Test Employee Code Setting | 2012-03-24 → 2012-03-24 09:00 | 2012-03-27 → 2012-03-24 15:00 (-3d) |  | 3.75d → 3.5d |  |
| 152 | **Column Setting** | 2012-03-23 → 2012-03-23 10:00 | 2012-03-27 → 2012-03-27 11:00 | 2.75d? → 2.38d? | 2d → 1d |  |
| 153 | Design Column Setting | 2012-03-23 → 2012-03-23 10:00 | 2012-03-23 → 2012-03-23 11:00 | 0.5d? → 0.12d? | 2d → 1d |  |
| 154 | Code Column Setting | 2012-03-24 → 2012-03-23 13:00 (-1d) | 2012-03-27 → 2012-03-24 15:00 (-3d) |  | 1.5d → 1d |  |
| 155 | Test Column Setting | 2012-03-27 → 2012-03-24 15:00 (-3d) | 2012-03-27 → 2012-03-27 11:00 |  | 3.25d → 2.5d |  |
| 156 | **Certificate Management** | 2012-03-24 → 2012-03-24 10:00 | 2012-03-30 → 2012-03-28 15:00 (-2d) | 3.5d → 2.62d | 1.5d → 1.25d |  |
| 157 | Design Certificate Management | 2012-03-24 → 2012-03-24 10:00 | 2012-03-24 → 2012-03-24 11:00 | 0.5d → 0.12d |  |  |
| 158 | Code Certificate Management | 2012-03-27 → 2012-03-24 15:00 (-3d) | 2012-03-28 → 2012-03-28 09:00 |  | 2d → 1.25d |  |
| 159 | Test Certificate Management | 2012-03-28 → 2012-03-28 09:00 | 2012-03-30 → 2012-03-28 15:00 (-2d) |  | 1.5d → 1.25d |  |
| 160 | **Supported People Management** | 2012-03-21 → 2012-03-21 14:00 | 2012-03-27 → 2012-03-24 15:00 (-3d) | 3.25d? → 2.38d? | 1d → 1.12d |  |
| 161 | Design Supported People Management | 2012-03-21 → 2012-03-21 14:00 | 2012-03-23 → 2012-03-21 15:00 (-2d) | 0.5d? → 0.12d? | 1d → 1.12d |  |
| 162 | Code Supported People Management | 2012-03-23 → 2012-03-21 15:00 (-2d) | 2012-03-24 → 2012-03-24 09:00 |  | 1d → 0.62d |  |
| 163 | Test Supported People Management | 2012-03-24 → 2012-03-24 09:00 | 2012-03-27 → 2012-03-24 15:00 (-3d) |  | 1d → 1.12d |  |
| 164 | **Family Relationship Management** | 2012-03-21 → 2012-03-21 14:00 | 2012-03-30 → 2012-03-28 09:00 (-2d) | 5.5d? → 4.12d? | 1.5d → 1.75d |  |
| 165 | Design Family Relationship Management | 2012-03-21 → 2012-03-21 14:00 | 2012-03-23 → 2012-03-21 15:00 (-2d) | 1d → 0.12d |  | resources Nhung → Dang |
| 166 | Code Family Relationship Management | 2012-03-24 → 2012-03-21 15:00 (-3d) | 2012-03-28 → 2012-03-27 11:00 (-1d) |  | 1.75d → 2d |  |
| 167 | Test Family Relationship Management | 2012-03-28 → 2012-03-27 13:00 (-1d) | 2012-03-30 → 2012-03-28 09:00 (-2d) |  | 1.5d → 1.75d |  |
| 168 | **Staff History** | 2012-03-27 → 2012-03-24 15:00 (-3d) | 2012-03-30 → 2012-03-28 16:00 (-2d) | 2.75d? → 2.38d? | 1d → 1.12d |  |
| 169 | Design Staff History | 2012-03-27 → 2012-03-24 15:00 (-3d) | 2012-03-27 → 2012-03-24 16:00 (-3d) | 0.5d? → 0.12d? | 1d → 1.12d |  |
| 170 | Code Staff History | 2012-03-28 → 2012-03-27 08:00 (-1d) | 2012-03-30 → 2012-03-28 10:00 (-2d) |  | 1d → 0.62d |  |
| 171 | Test Staff History | 2012-03-30 → 2012-03-28 10:00 (-2d) | 2012-03-30 → 2012-03-28 16:00 (-2d) |  | 1d → 1.12d |  |
| 172 | Integrate | 2012-03-31 → 2012-03-30 08:00 (-1d) | 2012-03-31 → 2012-03-30 14:00 (-1d) |  | 1.25d → 0.62d |  |
| 173 | Testing | 2012-03-31 → 2012-03-30 14:00 (-1d) | 2012-04-03 → 2012-03-31 16:00 (-3d) |  | 1d → 0.88d |  |
| 174 | **Increment 2: Training Management** | 2012-03-24 → 2012-03-24 10:00 | 2012-04-18 → 2012-04-14 11:00 (-4d) | 16.25d? → 13.62d? |  |  |
| 175 | **Reward Management** | 2012-03-24 → 2012-03-24 10:00 | 2012-03-28 → 2012-03-28 11:00 | 2.75d? → 2.38d? | 1.5d → 0.38d |  |
| 176 | Design Reward Management | 2012-03-24 → 2012-03-24 10:00 | 2012-03-24 → 2012-03-24 11:00 | 0.5d? → 0.12d? | 1.5d → 0.38d |  |
| 177 | Code Reward Management | 2012-03-27 → 2012-03-24 13:00 (-3d) | 2012-03-28 → 2012-03-27 15:00 (-1d) |  | 1.25d → 0.62d |  |
| 178 | Test Reward Management | 2012-03-28 → 2012-03-27 15:00 (-1d) | 2012-03-28 → 2012-03-28 11:00 |  | 1.5d → 0.38d |  |
| 179 | **Staff Internship Management** | 2012-03-24 → 2012-03-24 10:00 | 2012-03-28 → 2012-03-28 11:00 | 2.75d? → 2.38d? | 4.5d → 3.88d |  |
| 180 | Design Staff Internship Management | 2012-03-24 → 2012-03-24 10:00 | 2012-03-24 → 2012-03-24 11:00 | 0.5d? → 0.12d? | 4.5d → 3.88d | resources Loc → Dang |
| 181 | Code Staff Internship Management | 2012-03-27 → 2012-03-24 13:00 (-3d) | 2012-03-28 → 2012-03-27 15:00 (-1d) |  | 4.5d → 4.12d |  |
| 182 | Test Staff Internship Management | 2012-03-28 → 2012-03-27 15:00 (-1d) | 2012-03-28 → 2012-03-28 11:00 |  | 4.5d → 3.88d |  |
| 183 | **Training Result Management** | 2012-03-24 → 2012-03-24 10:00 | 2012-03-28 → 2012-03-28 11:00 | 2.75d? → 2.38d? |  |  |
| 184 | Design Training Result Management | 2012-03-24 → 2012-03-24 10:00 | 2012-03-24 → 2012-03-24 11:00 | 0.5d? → 0.12d? |  | resources Quyet → Dang |
| 185 | Code Training Result Management | 2012-03-27 → 2012-03-24 13:00 (-3d) | 2012-03-28 → 2012-03-27 15:00 (-1d) |  |  |  |
| 186 | Test Training Result Management | 2012-03-28 → 2012-03-27 15:00 (-1d) | 2012-03-28 → 2012-03-28 11:00 |  |  |  |
| 187 | **Facilitate Management** | 2012-03-27 → 2012-03-24 13:00 (-3d) | 2012-03-30 → 2012-03-28 14:00 (-2d) | 2.75d? → 2.38d? | 1.25d → 1.5d |  |
| 188 | Design Facilitate Management | 2012-03-27 → 2012-03-24 13:00 (-3d) | 2012-03-27 → 2012-03-24 14:00 (-3d) | 0.5d? → 0.12d? | 1.25d → 1.5d |  |
| 189 | Code Facilitate Management | 2012-03-27 → 2012-03-24 14:00 (-3d) | 2012-03-28 → 2012-03-27 16:00 (-1d) |  |  |  |
| 190 | Test Facilitate Management | 2012-03-30 → 2012-03-28 08:00 (-2d) | 2012-03-30 → 2012-03-28 14:00 (-2d) |  | 1.25d → 1.5d |  |
| 191 | **Union Management** | 2012-04-04 → 2012-04-03 08:00 (-1d) | 2012-04-07 → 2012-04-06 09:00 (-1d) | 2.75d? → 2.38d? | 4d → 3.38d |  |
| 192 | Design Union Management | 2012-04-04 → 2012-04-03 08:00 (-1d) | 2012-04-04 → 2012-04-03 09:00 (-1d) | 0.5d? → 0.12d? | 4d → 3.38d |  |
| 193 | Code Union Management | 2012-04-04 → 2012-04-03 09:00 (-1d) | 2012-04-06 → 2012-04-04 11:00 (-2d) |  | 4.25d → 3.38d |  |
| 194 | Test Union Management | 2012-04-07 → 2012-04-04 13:00 (-3d) | 2012-04-07 → 2012-04-06 09:00 (-1d) |  | 4d → 3.38d |  |
| 195 | **Task NoteBook Management** | 2012-04-04 → 2012-04-03 08:00 (-1d) | 2012-04-07 → 2012-04-06 09:00 (-1d) | 2.75d? → 2.38d? | 1.25d → 1d |  |
| 196 | Design Task Note Book Management | 2012-04-04 → 2012-04-03 08:00 (-1d) | 2012-04-04 → 2012-04-03 09:00 (-1d) | 0.5d? → 0.12d? | 1.25d → 1d |  |
| 197 | Code Task Note Book Management | 2012-04-04 → 2012-04-03 09:00 (-1d) | 2012-04-06 → 2012-04-04 11:00 (-2d) |  |  |  |
| 198 | Test Task Note Book Management | 2012-04-07 → 2012-04-04 13:00 (-3d) | 2012-04-07 → 2012-04-06 09:00 (-1d) |  | 1.25d → 1d |  |
| 199 | **Training Course Management** | 2012-04-07 → 2012-04-06 09:00 (-1d) | 2012-04-13 → 2012-04-10 10:00 (-3d) | 3.25d → 2.38d |  |  |
| 200 | Design Training Course Management | 2012-04-07 → 2012-04-06 09:00 (-1d) | 2012-04-10 → 2012-04-06 10:00 (-4d) | 0.5d → 0.12d |  | constraint start no earlier than 2012-02-28 → start no earlier than 2012-02-28 08:00 |
| 201 | Code Training Course Management | 2012-04-10 → 2012-04-06 10:00 (-4d) | 2012-04-11 → 2012-04-07 14:00 (-4d) |  |  |  |
| 202 | Test Training Course Management | 2012-04-11 → 2012-04-07 14:00 (-4d) | 2012-04-13 → 2012-04-10 10:00 (-3d) |  |  |  |
| 203 | **Internal Training Management** | 2012-04-06 → 2012-04-03 14:00 (-3d) | 2012-04-10 → 2012-04-06 15:00 (-4d) | 2.75d? → 2.38d? | 1.25d → 1.12d |  |
| 204 | Design Internal Training Management | 2012-04-06 → 2012-04-03 14:00 (-3d) | 2012-04-06 → 2012-04-03 15:00 (-3d) | 0.5d? → 0.12d? | 1.25d → 1.12d |  |
| 205 | Code Internal Training Management | 2012-04-06 → 2012-04-03 15:00 (-3d) | 2012-04-07 → 2012-04-06 09:00 (-1d) |  | 1.75d → 1.12d |  |
| 206 | Test Internal Training Management | 2012-04-10 → 2012-04-06 09:00 (-4d) | 2012-04-10 → 2012-04-06 15:00 (-4d) |  | 1.25d → 1.12d |  |
| 207 | **Emulation Management** | 2012-04-10 → 2012-04-06 15:00 (-4d) | 2012-04-14 → 2012-04-10 16:00 (-4d) | 3d? → 2.38d? | 1.5d → 1.62d |  |
| 208 | Design Emulation Management | 2012-04-10 → 2012-04-06 15:00 (-4d) | 2012-04-11 → 2012-04-06 16:00 (-5d) | 0.5d? → 0.12d? | 1.5d → 1.62d |  |
| 209 | Code Emulation Management | 2012-04-11 → 2012-04-07 08:00 (-4d) | 2012-04-13 → 2012-04-10 10:00 (-3d) |  | 1.25d → 1.12d |  |
| 210 | Test Emulation Management | 2012-04-13 → 2012-04-10 10:00 (-3d) | 2012-04-14 → 2012-04-10 16:00 (-4d) |  | 1.5d → 1.12d |  |

| ID | Task | Start | Finish | Duration | Total float | Other |
| --- | --- | --- | --- | --- | --- | --- |
| 211 | **Lecture Probation Management** | 2012-04-13 → 2012-04-10 10:00 (-3d) | 2012-04-17 → 2012-04-13 11:00 (-4d) | 2.75d? → 2.38d? |  |  |
| 212 | Design Lecture Probation Management | 2012-04-13 → 2012-04-10 10:00 (-3d) | 2012-04-13 → 2012-04-10 11:00 (-3d) | 0.5d? → 0.12d? |  |  |
| 213 | Code Lecture Probation Management | 2012-04-14 → 2012-04-10 13:00 (-4d) | 2012-04-17 → 2012-04-11 15:00 (-6d) |  |  |  |
| 214 | Test Lecture Probation Management | 2012-04-17 → 2012-04-11 15:00 (-6d) | 2012-04-17 → 2012-04-13 11:00 (-4d) |  |  |  |
| 215 | **Mobilization Management** | 2012-03-30 → 2012-03-28 13:00 (-2d) | 2012-04-03 → 2012-03-31 14:00 (-3d) | 2.75d? → 2.38d? | 4.5d → 4.12d |  |
| 216 | Design Mobilization Management | 2012-03-30 → 2012-03-28 13:00 (-2d) | 2012-03-30 → 2012-03-28 14:00 (-2d) | 0.5d? → 0.12d? | 4.5d → 4.12d |  |
| 217 | Code Mobilization Management | 2012-03-30 → 2012-03-28 14:00 (-2d) | 2012-03-31 → 2012-03-30 16:00 (-1d) |  | 4.5d → 4.12d |  |
| 218 | Test Mobilization Management | 2012-04-03 → 2012-03-31 08:00 (-3d) | 2012-04-03 → 2012-03-31 14:00 (-3d) |  | 4.5d → 3.88d |  |
| 219 | **Penalty Management** | 2012-03-30 → 2012-03-30 09:00 | 2012-04-04 → 2012-04-03 10:00 (-1d) | 3d? → 2.38d? | 1.5d → 0.88d |  |
| 220 | Design Penalty Management | 2012-03-30 → 2012-03-30 09:00 | 2012-03-31 → 2012-03-30 10:00 (-1d) | 0.5d? → 0.12d? | 1.5d → 0.88d |  |
| 221 | Code Penalty Management | 2012-03-31 → 2012-03-30 10:00 (-1d) | 2012-04-03 → 2012-03-31 14:00 (-3d) |  | 1.25d → 0.88d |  |
| 222 | Test Penalty Management | 2012-04-03 → 2012-03-31 14:00 (-3d) | 2012-04-04 → 2012-04-03 10:00 (-1d) |  | 1.5d → 0.88d |  |
| 223 | **Lecture Position Management** | 2012-04-04 → 2012-04-03 10:00 (-1d) | 2012-04-07 → 2012-04-06 11:00 (-1d) | 2.75d? → 2.38d? | 1.5d → 0.88d |  |
| 224 | Design Lecture Position Management | 2012-04-04 → 2012-04-03 10:00 (-1d) | 2012-04-04 → 2012-04-03 11:00 (-1d) | 0.5d? → 0.12d? | 1.5d → 0.88d | resources Tuong → Dang |
| 225 | Code Lecture Position Management | 2012-04-06 → 2012-04-03 13:00 (-3d) | 2012-04-07 → 2012-04-04 15:00 (-3d) |  | 1.25d → 0.88d |  |
| 226 | Test Lecture Position Management | 2012-04-07 → 2012-04-04 15:00 (-3d) | 2012-04-07 → 2012-04-06 11:00 (-1d) |  | 1.5d → 0.88d |  |
| 227 | **Communist Party Management** | 2012-04-10 → 2012-04-07 13:00 (-3d) | 2012-04-14 → 2012-04-11 14:00 (-3d) | 3d? → 2.38d? | 1.5d → 0.88d |  |
| 228 | Design Communist Party Management | 2012-04-10 → 2012-04-07 13:00 (-3d) | 2012-04-11 → 2012-04-07 14:00 (-4d) | 0.5d? → 0.12d? | 1.5d → 0.88d |  |
| 229 | Code Communist Party Management | 2012-04-11 → 2012-04-07 14:00 (-4d) | 2012-04-13 → 2012-04-10 16:00 (-3d) |  | 1.25d → 0.62d |  |
| 230 | Test Communist Party Management | 2012-04-13 → 2012-04-11 08:00 (-2d) | 2012-04-14 → 2012-04-11 14:00 (-3d) |  | 1.5d → 0.38d |  |
| 231 | **Trade Union Management** | 2012-04-07 → 2012-04-06 09:00 (-1d) | 2012-04-13 → 2012-04-10 10:00 (-3d) | 3.25d? → 2.38d? | 3.75d → 3.38d |  |
| 232 | Design Trade Union Management | 2012-04-07 → 2012-04-06 09:00 (-1d) | 2012-04-10 → 2012-04-06 10:00 (-4d) | 0.5d? → 0.12d? | 3.75d → 3.38d |  |
| 233 | Code Trade Union Management | 2012-04-10 → 2012-04-06 10:00 (-4d) | 2012-04-11 → 2012-04-07 14:00 (-4d) |  | 4.25d → 3.38d |  |
| 234 | Test Trade Union Management | 2012-04-11 → 2012-04-07 14:00 (-4d) | 2012-04-13 → 2012-04-10 10:00 (-3d) |  | 3.75d → 3.38d |  |
| 235 | **Syllabus Management** | 2012-04-03 → 2012-03-31 14:00 (-3d) | 2012-04-07 → 2012-04-04 15:00 (-3d) | 3d? → 2.38d? | 4.5d → 4.12d |  |
| 236 | Design Syllabus Management | 2012-04-03 → 2012-03-31 14:00 (-3d) | 2012-04-04 → 2012-03-31 15:00 (-4d) | 0.5d? → 0.12d? | 4.5d → 4.12d |  |
| 237 | Code Syllabus Management | 2012-04-04 → 2012-03-31 15:00 (-4d) | 2012-04-06 → 2012-04-04 09:00 (-2d) |  | 4.5d → 3.88d |  |
| 238 | Test Syllabus Management | 2012-04-06 → 2012-04-04 09:00 (-2d) | 2012-04-07 → 2012-04-04 15:00 (-3d) |  | 4.5d → 3.88d |  |
| 239 | **Science Research Management** | 2012-04-07 → 2012-04-04 15:00 (-3d) | 2012-04-11 → 2012-04-07 16:00 (-4d) | 2.75d? → 2.38d? | 4.5d → 4.12d |  |
| 240 | Design Science Research Management | 2012-04-07 → 2012-04-04 15:00 (-3d) | 2012-04-07 → 2012-04-04 16:00 (-3d) | 0.5d? → 0.12d? | 4.5d → 4.12d | resources Loc → Dang |
| 241 | Code Science Research Management | 2012-04-10 → 2012-04-06 08:00 (-4d) | 2012-04-11 → 2012-04-07 10:00 (-4d) |  | 4.5d → 3.62d |  |
| 242 | Test Science Research Management | 2012-04-11 → 2012-04-07 10:00 (-4d) | 2012-04-11 → 2012-04-07 16:00 (-4d) |  | 4.5d → 3.88d |  |
| 243 | **Other Management** | 2012-03-30 → 2012-03-28 13:00 (-2d) | 2012-04-03 → 2012-03-31 14:00 (-3d) | 2.75d? → 2.38d? |  |  |
| 244 | Design Other Management | 2012-03-30 → 2012-03-28 13:00 (-2d) | 2012-03-30 → 2012-03-28 14:00 (-2d) | 0.5d? → 0.12d? |  | resources Quyet → Dang |
| 245 | Code Other Management | 2012-03-30 → 2012-03-28 14:00 (-2d) | 2012-03-31 → 2012-03-30 16:00 (-1d) |  |  |  |
| 246 | Test Other Management | 2012-04-03 → 2012-03-31 08:00 (-3d) | 2012-04-03 → 2012-03-31 14:00 (-3d) |  |  |  |
| 247 | **Work Management** | 2012-04-03 → 2012-03-31 14:00 (-3d) | 2012-04-07 → 2012-04-04 15:00 (-3d) | 3d? → 2.38d? |  |  |
| 248 | Design Work Management | 2012-04-03 → 2012-03-31 14:00 (-3d) | 2012-04-04 → 2012-03-31 15:00 (-4d) | 0.5d? → 0.12d? |  | resources Quyet → Dang |
| 249 | Code Work Management | 2012-04-04 → 2012-03-31 15:00 (-4d) | 2012-04-06 → 2012-04-04 09:00 (-2d) |  |  |  |
| 250 | Test Work Management | 2012-04-06 → 2012-04-04 09:00 (-2d) | 2012-04-07 → 2012-04-04 15:00 (-3d) |  |  |  |
| 251 | **Master Thesis Guideline Management** | 2012-04-07 → 2012-04-04 15:00 (-3d) | 2012-04-11 → 2012-04-07 16:00 (-4d) | 2.75d? → 2.38d? |  |  |
| 252 | Design Master Thesis Guideline Management | 2012-04-07 → 2012-04-04 15:00 (-3d) | 2012-04-07 → 2012-04-04 16:00 (-3d) | 0.5d? → 0.12d? |  | resources Quyet → Dang |
| 253 | Code Master Thesis Guideline Management | 2012-04-10 → 2012-04-06 08:00 (-4d) | 2012-04-11 → 2012-04-07 10:00 (-4d) |  |  |  |
| 254 | Test Master Thesis Guideline Management | 2012-04-11 → 2012-04-07 10:00 (-4d) | 2012-04-11 → 2012-04-07 16:00 (-4d) |  |  |  |
| 255 | **Article Management** | 2012-04-13 → 2012-04-10 08:00 (-3d) | 2012-04-17 → 2012-04-13 09:00 (-4d) | 2.75d? → 2.38d? |  |  |
| 256 | Design Article Management | 2012-04-13 → 2012-04-10 08:00 (-3d) | 2012-04-13 → 2012-04-10 09:00 (-3d) | 0.5d? → 0.12d? |  | resources Quyet → Dang |
| 257 | Code Article Management | 2012-04-13 → 2012-04-10 09:00 (-3d) | 2012-04-14 → 2012-04-11 11:00 (-3d) |  |  |  |
| 258 | Test Article Management | 2012-04-17 → 2012-04-11 13:00 (-6d) | 2012-04-17 → 2012-04-13 09:00 (-4d) |  |  |  |
| 259 | **Subject Management** | 2012-03-30 → 2012-03-28 14:00 (-2d) | 2012-04-04 → 2012-03-31 15:00 (-4d) | 3.5d? → 2.38d? |  |  |
| 260 | Design Subject Management | 2012-03-30 → 2012-03-28 14:00 (-2d) | 2012-03-31 → 2012-03-28 15:00 (-3d) | 1d? → 0.12d? |  |  |
| 261 | Code Subject Management | 2012-04-03 → 2012-03-28 15:00 (-6d) | 2012-04-04 → 2012-03-31 09:00 (-4d) |  | 1.25d → 1.5d |  |
| 262 | Test Subject Management | 2012-04-04 → 2012-03-31 09:00 (-4d) | 2012-04-04 → 2012-03-31 15:00 (-4d) |  |  |  |
| 263 | **Income Management** | 2012-04-06 → 2012-03-31 15:00 (-6d) | 2012-04-10 → 2012-04-06 11:00 (-4d) | 2.75d? → 3.25d? |  |  |
| 264 | Design Income Management | 2012-04-06 → 2012-03-31 15:00 (-6d) | 2012-04-06 → 2012-04-03 11:00 (-3d) |  |  |  |
| 265 | Code Income Management | 2012-04-06 → 2012-04-03 13:00 (-3d) | 2012-04-07 → 2012-04-04 15:00 (-3d) |  | 1.75d → 1.25d |  |
| 266 | Test Income Management | 2012-04-10 → 2012-04-04 15:00 (-6d) | 2012-04-10 → 2012-04-06 11:00 (-4d) |  |  |  |
| 267 | **Salary Coefficient Management** | 2012-04-10 → 2012-04-06 13:00 (-4d) | 2012-04-14 → 2012-04-10 15:00 (-4d) | 3d? → 2.5d? | 1.5d → 1.25d |  |
| 268 | Design Salary Coefficient Management | 2012-04-10 → 2012-04-06 13:00 (-4d) | 2012-04-11 → 2012-04-06 15:00 (-5d) | 0.5d? → 0.25d? | 1.5d → 1.25d |  |
| 269 | Code Salary Coefficient Management | 2012-04-11 → 2012-04-06 15:00 (-5d) | 2012-04-13 → 2012-04-10 09:00 (-3d) |  |  |  |
| 270 | Test Salary Coefficient Management | 2012-04-13 → 2012-04-10 09:00 (-3d) | 2012-04-14 → 2012-04-10 15:00 (-4d) |  | 1.5d → 1.25d |  |
| 271 | Integrate | 2012-04-17 → 2012-04-13 09:00 (-4d) | 2012-04-18 → 2012-04-13 15:00 (-5d) |  |  |  |
| 272 | Testing | 2012-04-18 → 2012-04-13 15:00 (-5d) | 2012-04-18 → 2012-04-14 11:00 (-4d) |  |  |  |
| 273 | **Increment 3: Report** | 2012-04-20 → 2012-04-14 13:00 (-6d) | 2012-05-05 → 2012-05-01 15:00 (-4d) | 10.25d → 10.5d |  |  |
| 274 | **Report Management** | 2012-04-20 → 2012-04-14 13:00 (-6d) | 2012-05-01 → 2012-04-27 09:00 (-4d) | 7.25d → 7.75d |  |  |
| 275 | Design Report | 2012-04-20 → 2012-04-14 13:00 (-6d) | 2012-04-21 → 2012-04-17 15:00 (-4d) |  |  |  |
| 276 | Code Report | 2012-04-21 → 2012-04-17 15:00 (-4d) | 2012-04-28 → 2012-04-24 15:00 (-4d) |  |  |  |
| 277 | Test Report | 2012-04-28 → 2012-04-24 15:00 (-4d) | 2012-05-01 → 2012-04-27 09:00 (-4d) |  |  |  |
| 278 | Integrate | 2012-05-01 → 2012-04-27 09:00 (-4d) | 2012-05-02 → 2012-04-28 11:00 (-4d) |  |  |  |
| 279 | Test | 2012-05-04 → 2012-04-28 13:00 (-6d) | 2012-05-05 → 2012-05-01 15:00 (-4d) |  |  |  |
| 280 | Conduct System test | 2012-05-05 → 2012-05-01 15:00 (-4d) | 2012-05-09 → 2012-05-05 11:00 (-4d) |  |  |  |

| ID | Task | Start | Finish | Total float | Other |
| --- | --- | --- | --- | --- | --- |
| 281 | Conduct Acceptance test | 2012-05-11 → 2012-05-05 13:00 (-6d) | 2012-05-15 → 2012-05-11 09:00 (-4d) |  |  |
| 282 | Translate Concept Doc | 2012-01-21 → 2012-01-21 10:00 | 2012-02-14 → 2012-02-14 14:30 |  |  |
| 283 | Reflection | 2012-05-15 → 2012-05-11 09:00 (-4d) | 2012-05-19 → 2012-05-15 15:00 (-4d) |  | constraint finish no earlier than 2012-03-07 → finish no earlier than 2012-03-07 17:00 |
| 284 | Update Manage Doc | 2011-09-27 → 2011-09-27 08:00 | 2011-09-27 → 2011-09-27 21:00 | 148.25d → 146.06d |  |
| 285 | Update SRS Doc | 2011-09-27 → 2011-09-27 08:00 | 2011-09-27 → 2011-09-27 21:00 | 148.25d → 146.06d |  |
| 286 | Update ContOps | 2011-09-27 → 2011-09-27 08:00 | 2011-09-27 → 2011-09-27 21:00 | 148.25d → 146.06d |  |
| 287 | Update | 2011-09-27 → 2011-09-27 08:00 | 2011-09-27 → 2011-09-27 21:00 | 148.25d → 146.06d |  |
| 288 | Deliver to customer | 2012-05-19 → 2012-05-15 15:00 (-4d) | 2012-05-26 → 2012-05-22 15:00 (-4d) |  |  |
| 289 | Maintaining | 2012-05-26 → 2012-05-22 15:00 (-4d) | 2012-05-29 → 2012-05-25 09:00 (-4d) |  |  |

## Version 7 (data date 2012-03-09, saved 2012-05-11)

Last finish stays 2012-05-25.

Added:

| ID | Task | Duration | Start | Finish | Predecessors | Resources |
| --- | --- | --- | --- | --- | --- | --- |
| 140 | Update use case in SRS | 15d | 2011-12-03 08:00 | 2011-12-17 17:00 | 113, 139 | Loc |

Removed: 284 Update Manage Doc; 285 Update SRS Doc; 286 Update ContOps; 287 Update

Changed:

| ID | Task | Start | Finish | Duration | Total float | Predecessors |
| --- | --- | --- | --- | --- | --- | --- |
| 134 | **Testing** |  | 2012-02-15 09:00 → 2012-03-03 10:30 (+17d) | 14.06d → 25.5d | 12.69d → 1d |  |
| 135 | **Design test case** |  | 2012-02-15 09:00 → 2012-03-03 10:30 (+17d) | 14.06d → 25.5d | 12.69d → 1d |  |
| 136 | Acceptance test case |  | 2012-01-27 08:30 → 2012-02-17 08:30 (+21d) | 1d → 10d | 23.5d → 1d |  |
| 137 | System test case | 2012-02-11 15:00 → 2012-02-17 08:30 (+6d) | 2012-02-15 09:00 → 2012-03-03 10:30 (+17d) | 1d → 7d | 12.69d → 1d |  |
| 175 | **Increment 2: Training Management** |  |  |  |  | 145 → 145, 140 |
| 283 | Translate Concept Doc |  | 2012-02-14 14:30 → 2012-03-22 14:00 (+37d) | 10d → 26d | 55.19d → 30d |  |

## Version 8 (data date 2012-03-09, saved 2012-05-18)

Last finish stays 2012-05-25.

Changed:

| ID | Task | Other |
| --- | --- | --- |
| 278 | Test Report | resources Dang → Tung |
