# HRM Detail Plan

How a schedule from MS Project changed from version to version. A marks actual dates.

## Version 1 (data date 2012-03-09, saved 2012-05-03)

Note of the change: Update Project Plan/HRM Detail Plan.mpp

| ID | WBS | Task | Duration | Start | Finish | Predecessors | Total float | Constraint |
| --- | --- | --- | --- | --- | --- | --- | --- | --- |
| 1 | 1 | **Human Resource Management** | 149.25d? | 2011-09-27 | 2012-05-29 |  | 0d |  |
| 2 |  | Kick off meeting | 1d | 2011-09-27 | 2011-09-28 |  | 2.56d | start no earlier than 2011-09-27 |
| 3 | 1.2 | **Start Up** | 2.75d? | 2011-09-28 | 2011-10-01 | 2 | 2.56d |  |
| 4 | 1.2.1 | **Research process** | 1.5d | 2011-09-28 | 2011-09-30 | 2 | 2.56d |  |
| 5 | 1.2.1.1 | **Requirement Process** | 1.5d | 2011-09-28 | 2011-09-30 | 2 | 2.56d |  |
| 6 |  | Research phases in process | 1d | 2011-09-28 | 2011-09-30 | 2 | 2.56d |  |
| 7 |  | Research tool and document templates | 1d | 2011-09-28 | 2011-09-30 | 2 | 2.56d |  |
| 8 | 1.2.1.2 | **Architect process** | 1.5d | 2011-09-28 | 2011-09-30 | 2 | 2.56d |  |
| 9 |  | Research phases in process | 1d | 2011-09-28 | 2011-09-30 | 2 | 2.56d |  |
| 10 |  | Research tool and document templates | 1d | 2011-09-28 | 2011-09-30 | 2 | 2.56d |  |
| 11 | 1.2.1.3 | **Detail design process** | 1.5d | 2011-09-28 | 2011-09-30 | 2 | 2.56d |  |
| 12 |  | Research phases in process | 1d | 2011-09-28 | 2011-09-30 | 2 | 2.56d |  |
| 13 |  | Research tool and document templates | 1d | 2011-09-28 | 2011-09-30 | 2 | 2.56d |  |
| 14 |  | Testing process | 1d | 2011-09-28 | 2011-09-30 | 2 | 2.56d |  |
| 15 |  | Research Process Management: Risk, Measure, Change | 1d | 2011-09-28 | 2011-09-30 | 2 | 2.56d |  |
| 16 | 1.2.2 | **Develop Project Plan** | 1.25d? | 2011-09-30 | 2011-10-01 | 5, 8, 11, 14, 15 | 2.56d |  |
| 17 | 1.2.2.1 | **Requirement Process** | 1.25d | 2011-09-30 | 2011-10-01 | 5 | 2.56d |  |
| 18 |  | Draw process | 1d | 2011-09-30 | 2011-10-01 | 7 | 2.56d |  |
| 19 |  | Describe stage in process | 1d | 2011-09-30 | 2011-10-01 | 6 | 2.56d |  |
| 20 | 1.2.2.2 | **Architect process** | 1.25d | 2011-09-30 | 2011-10-01 | 8 | 2.56d |  |
| 21 |  | Draw process | 1d | 2011-09-30 | 2011-10-01 | 9 | 2.56d |  |
| 22 |  | Describe stage in process | 1d | 2011-09-30 | 2011-10-01 | 10 | 2.56d |  |
| 23 | 1.2.2.3 | **Detail design process** | 1.25d | 2011-09-30 | 2011-10-01 | 11 | 2.56d |  |
| 24 |  | Draw process | 1d | 2011-09-30 | 2011-10-01 | 13 | 2.56d |  |
| 25 |  | Describe stage in process | 1d | 2011-09-30 | 2011-10-01 | 12 | 2.56d |  |
| 26 |  | Testing process | 1d | 2011-09-30 | 2011-10-01 | 14 | 2.56d |  |
| 27 |  | Doc Process Management: Risk, Measurement, Change | 1d? | 2011-09-30 | 2011-10-01 | 15 | 2.56d |  |
| 28 | 1.3 | **Requirement Analysis** | 68.56d? | 2011-10-04 | 2012-01-24 | 3 | 2.56d |  |
| 29 | 1.3.1 | **Conference with cus 1** | 2.31d? | 2011-10-04 | 2011-10-06 | 3 | 2.56d |  |
| 30 | 1.3.1.1 | **Prepare 1** | 0.38d? | 2011-10-04 | 2011-10-04 | 3 | 2.56d |  |
| 31 |  | C1: Research HRM processes | 0.25d? | 2011-10-04 | 2011-10-04 | 3 | 2.56d |  |
| 32 |  | C1: Research business, role | 0.25d? | 2011-10-04 | 2011-10-04 | 3 | 2.56d |  |
| 33 |  | C1: Prepare questions to ask customer | 0.25d? | 2011-10-04 | 2011-10-04 | 3 | 2.56d |  |
| 34 |  | C1: Send mail for customer | 0.12d? | 2011-10-04 | 2011-10-04 | 31, 32, 33 | 2.56d |  |
| 35 | 1.3.1.2 | **Elicitate requirement 1** | 0.69d? | 2011-10-04 | 2011-10-05 | 30 | 2.56d |  |
| 36 |  | C1: Write down meeting 1 | 0.44d? | 2011-10-04 | 2011-10-05 | 30 | 2.56d |  |
| 37 |  | C1: Support write down meeting 1 | 0.44d? | 2011-10-04 | 2011-10-05 | 30 | 2.56d |  |
| 38 |  | C1: Manage meeting 1 | 0.44d? | 2011-10-04 | 2011-10-05 | 30 | 2.56d |  |
| 39 |  | C1: Attending conference 1 | 0.44d? | 2011-10-04 | 2011-10-05 | 30 | 2.56d |  |
| 40 | 1.3.1.3 | **Analyze requirement 1** | 1.25d? | 2011-10-05 | 2011-10-06 | 35 | 2.56d |  |
| 41 |  | C1: Doc ConsOpt: Introduction | 0.25d? | 2011-10-05 | 2011-10-05 | 35 | 3.56d |  |
| 42 |  | C1: Doc ConsOpt: Current System & Reason for improvement | 0.25d | 2011-10-05 | 2011-10-05 | 35 | 3.56d |  |
| 43 |  | C1: Doc Qui trinh nghiep vu tong quat | 1d | 2011-10-05 | 2011-10-06 | 35 | 2.56d |  |
| 44 |  | C1: Guide doc Concept | 1d? | 2011-10-05 | 2011-10-06 | 35 | 2.56d |  |
| 45 |  | C1: Review document | 1d | 2011-10-05 | 2011-10-06 | 35 | 2.56d |  |
| 46 |  | C1: Fix error in document | 1d | 2011-10-05 | 2011-10-06 | 35 | 2.56d |  |
| 47 | 1.3.2 | **Conference with cus 2** | 13.5d? | 2011-10-05 | 2011-10-27 | 30 | 2.56d |  |
| 48 | 1.3.2.1 | **Prepare 2** | 0.62d? | 2011-10-05 | 2011-10-06 | 30, 35 | 3.19d |  |
| 49 |  | C2: Đọc và phân tích biểu mẫu Sơ yếu lí lịch | 0.25d? | 2011-10-05 | 2011-10-05 | 30 | 3.44d |  |
| 50 |  | C2: Thu thập và chuẩn bị các câu hỏi về Tuyển dụng và làm mới HSNS | 0.25d? | 2011-10-05 | 2011-10-05 | 30 | 3.44d |  |
| 51 |  | C2: Send mail for customer | 0.12d? | 2011-10-06 | 2011-10-06 | 49, 50 | 3.19d |  |
| 52 | 1.3.2.2 | **Elicitate Requirement 2** | 0.5d? | 2011-10-07 | 2011-10-07 | 48, 40 | 2.31d |  |
| 53 |  | C2: Write down meeting 2 | 0.5d? | 2011-10-07 | 2011-10-07 | 48 | 2.31d |  |
| 54 |  | C2: Support write down meeting 2 | 0.5d? | 2011-10-07 | 2011-10-07 | 48 | 2.31d |  |
| 55 |  | C2: Manage meeting 2 | 0.5d? | 2011-10-07 | 2011-10-07 | 48 | 2.31d |  |
| 56 |  | C2: Attending conference 2 | 0.5d? | 2011-10-07 | 2011-10-07 |  | 2.31d |  |
| 57 | 1.3.2.3 | **Analyze requirement** | 11.25d | 2011-10-08 | 2011-10-27 | 52 | 2.56d |  |
| 58 |  | C2: Doc Mô hình phân rã chức năng HSNS | 4d | 2011-10-08 | 2011-10-18 | 52 | 2.56d |  |
| 59 |  | C2: Draw process qui trinh nghiep vu tong quat | 2d | 2011-10-08 | 2011-10-13 | 52 | 2.56d |  |
| 60 |  | C2: Phân tích hệ thống dự kiến | 4d | 2011-10-08 | 2011-10-18 | 52 | 2.56d |  |
| 61 |  | C2: Doc Information Catalog: Thông tin chung | 2d | 2011-10-13 | 2011-10-18 | 59 | 2.56d |  |
| 62 |  | C2: Review document | 2d | 2011-10-18 | 2011-10-21 | 58, 59, 60, 61 | 2.56d |  |
| 63 |  | C2: Fix error in document | 2d | 2011-10-22 | 2011-10-27 | 62 | 2.56d |  |
| 64 | 1.3.3 | **Conference with cus 3** | 9.38d? | 2011-10-27 | 2011-11-11 |  | 2.56d |  |
| 65 | 1.3.3.1 | **Prepare 3** | 1.62d? | 2011-10-27 | 2011-10-29 | 48, 52, 57 | 2.56d |  |
| 66 |  | C3: Research HRM processes | 1d? | 2011-10-27 | 2011-10-28 |  | 2.56d |  |
| 67 |  | C3: Research business, role | 1d? | 2011-10-27 | 2011-10-28 |  | 2.56d |  |
| 68 |  | C3: Prepare questions to ask customer | 1d? | 2011-10-27 | 2011-10-28 |  | 2.56d |  |
| 69 |  | C3: Send mail for customer | 0.12d? | 2011-10-29 | 2011-10-29 | 66, 67, 68 | 2.56d |  |
| 70 | 1.3.3.2 | **Elicitate Requirement 3** | 0.5d? | 2011-10-29 | 2011-10-29 | 65, 57 | 2.56d |  |

| ID | WBS | Task | Duration | Start | Finish | Predecessors | Total float | Constraint |
| --- | --- | --- | --- | --- | --- | --- | --- | --- |
| 71 |  | C3: Write down meeting 3 | 0.5d? | 2011-10-29 | 2011-10-29 |  | 2.56d |  |
| 72 |  | C3: Support write down meeting 3 | 0.5d? | 2011-10-29 | 2011-10-29 |  | 2.56d |  |
| 73 |  | C3: Manage meeting 3 | 0.5d? | 2011-10-29 | 2011-10-29 |  | 2.56d |  |
| 74 |  | C3: Attending conference 3 | 0.5d? | 2011-10-29 | 2011-10-29 |  | 2.56d |  |
| 75 | 1.3.3.3 | **Analyze requirement** | 7.25d | 2011-10-29 | 2011-11-11 | 70 | 55.19d |  |
| 76 |  | C3: Doc Information Category: Thông tin mở rộng | 2d | 2011-10-29 | 2011-11-04 |  | 63.69d |  |
| 77 |  | C3: Doc Mo hinh phan ra chuc nang HSNS | 4d | 2011-10-29 | 2011-11-09 |  | 63.69d |  |
| 78 |  | C3: Scenerio | 4d | 2011-10-29 | 2011-11-09 |  | 63.69d |  |
| 79 |  | C3: Processes | 2d | 2011-11-04 | 2011-11-09 | 76 | 63.69d |  |
| 80 |  | C3: Effect | 4d | 2011-10-29 | 2011-11-09 |  | 63.69d |  |
| 81 |  | C3: Review document | 0.5d | 2011-11-09 | 2011-11-10 | 76, 77, 78, 79, 80 | 63.69d |  |
| 82 |  | C3: Fix error in document | 0.5d | 2011-11-10 | 2011-11-11 | 81 | 55.19d |  |
| 83 |  | Send Concept Operation to customer | 0.25d | 2011-11-11 | 2011-11-11 | 77, 78, 79, 80, 81, 82 | 63.69d | start no earlier than 2011-11-10 |
| 84 |  | C3: Update Information Category | 26d | 2011-11-11 | 2012-01-12 | 83 | 63.69d |  |
| 85 |  | C3: Update Process | 26d | 2011-11-11 | 2012-01-12 | 83 | 63.69d |  |
| 86 |  | C3: Review and fix Concept | 26d | 2011-11-11 | 2012-01-12 | 83 | 63.69d |  |
| 87 | 1.3.8 | **Conference with cus 4 (review)** | 6.12d? | 2012-01-12 | 2012-01-21 | 83, 70, 64, 84, 85, 86 | 55.19d |  |
| 88 | 1.3.8.1 | **Prepare 4** | 1.12d? | 2012-01-12 | 2012-01-13 | 70, 64 | 55.19d |  |
| 89 |  | C4: Research HRM processes | 0.75d? | 2012-01-12 | 2012-01-13 |  | 63.69d |  |
| 90 |  | C4: Research business, role | 0.75d? | 2012-01-12 | 2012-01-13 |  | 63.69d |  |
| 91 |  | C4: Prepare questions to ask customer | 0.75d? | 2012-01-12 | 2012-01-13 |  | 63.69d |  |
| 92 |  | C4: Send mail for customer | 0.12d? | 2012-01-13 | 2012-01-13 | 89, 90, 91 | 63.69d |  |
| 93 | 1.3.8.2 | **Elicitate Requirement 4** | 0.75d? | 2012-01-13 | 2012-01-14 | 88, 83, 75 | 55.19d |  |
| 94 |  | C4: Write down meeting 4 | 0.5d? | 2012-01-13 | 2012-01-14 |  | 63.69d |  |
| 95 |  | C4: Support write down meeting 4 | 0.5d? | 2012-01-13 | 2012-01-14 |  | 63.69d |  |
| 96 |  | C4: Manage meeting 4 | 0.5d? | 2012-01-13 | 2012-01-14 |  | 63.69d |  |
| 97 |  | C4: Attending conference 4 | 0.5d? | 2012-01-13 | 2012-01-14 |  | 63.69d |  |
| 98 | 1.3.8.3 | **Analyze requirement** | 4.25d? | 2012-01-14 | 2012-01-21 | 93 | 55.19d |  |
| 99 |  | Update Information Catgegories | 1d? | 2012-01-14 | 2012-01-17 |  | 63.69d |  |
| 100 |  | Update Processes | 1d? | 2012-01-14 | 2012-01-17 |  | 63.69d |  |
| 101 |  | C4: Review document | 1d? | 2012-01-17 | 2012-01-19 | 99, 100 | 63.69d |  |
| 102 |  | C4: Fix error in document | 1d? | 2012-01-19 | 2012-01-21 | 101 | 63.69d |  |
| 103 |  | Update Plan | 1d | 2012-01-21 | 2012-01-24 | 87 | 74d |  |
| 104 | 1.3.10 | **Develop SRS** | 40.31d | 2011-11-11 | 2012-01-17 | 64, 83 | 78.06d |  |
| 105 | 1.3.10.1 | **Document Software Requirement Specification (Draft version)** | 5d | 2011-11-11 | 2011-11-19 |  | 87.38d |  |
| 106 | 1.3.10.1.1 | **Develop use case specification** | 3.5d | 2011-11-11 | 2011-11-17 |  | 88.88d |  |
| 107 |  | Draw use cases | 2.5d | 2011-11-11 | 2011-11-17 |  | 88.88d |  |
| 108 |  | Draw activity diagram for use cases | 2.5d | 2011-11-11 | 2011-11-17 |  | 88.88d |  |
| 109 |  | Descripe use case | 2.5d | 2011-11-11 | 2011-11-17 |  | 88.88d |  |
| 110 |  | Monitoring tasks in SRS | 2.62d | 2011-11-11 | 2011-11-17 |  | 88.5d |  |
| 111 |  | Review SRS | 5.59d | 2011-11-11 | 2011-11-19 |  | 87.38d |  |
| 112 |  | Review | 0.5d | 2011-11-19 | 2011-11-22 | 106, 111, 107, 108, 109, 110 | 87.12d |  |
| 113 | 1.3.10.3 | **Update SRS** | 5.75d | 2011-11-22 | 2011-12-01 | 112 | 87.12d |  |
| 114 |  | Update use case | 2d | 2011-11-22 | 2011-11-25 |  | 87.38d |  |
| 115 |  | Bussiness Rule | 2d | 2011-11-25 | 2011-12-01 | 114 | 87.12d |  |
| 116 |  | Functional Requirement | 2d | 2011-11-22 | 2011-11-25 |  | 90.12d |  |
| 117 |  | Software Requirement Specification (Final version) | 2d | 2011-11-22 | 2011-11-25 |  | 90.12d | finish no earlier than 2011-11-01 |
| 118 |  | Develop interfaces | 7d | 2011-12-01 | 2011-12-16 | 113 | 87.12d | start no earlier than 2011-11-29 |
| 119 |  | Upadate interfaces | 7d | 2011-12-31 | 2012-01-17 | 118 | 78.06d | finish no earlier than 2012-01-17 |
| 120 |  | Update Plan | 1d | 2012-01-24 | 2012-01-26 | 103, 104 | 74.19d |  |
| 121 | 1.5 | **Architect Design Analysis** | 35.31d | 2011-11-04 | 2011-12-31 | 76 | 88.75d |  |
| 122 | 1.5.1 | **Develop architecture driver document (ADD)** | 5.5d | 2011-11-04 | 2011-11-12 |  | 112.56d |  |
| 123 |  | Discover architecture drivers | 1d | 2011-11-04 | 2011-11-05 |  | 112.56d |  |
| 124 |  | Document ADD(Draft version) | 1d | 2011-11-05 | 2011-11-09 | 123 | 112.81d |  |
| 125 |  | Review | 1d | 2011-11-09 | 2011-11-11 | 124 | 112.56d |  |
| 126 |  | Document ADD(Final version) | 1d | 2011-11-11 | 2011-11-12 | 125 | 112.56d |  |
| 127 | 1.5.2 | **Develop architecture design** | 29.81d | 2011-11-12 | 2011-12-31 |  | 88.75d |  |
| 128 |  | Research about new pattern | 1d | 2011-11-12 | 2011-11-16 | 122 | 112.81d | finish no earlier than 2011-11-13 |
| 129 |  | Document AD (Draft version) | 1d | 2011-11-16 | 2011-11-18 | 128 | 112.56d |  |
| 130 |  | Review | 1d | 2011-11-18 | 2011-11-20 | 129 | 112.5d | finish no earlier than 2011-11-20 |
| 131 |  | Document AD (Final version) | 1d | 2011-12-30 | 2011-12-31 | 130 | 88.5d | finish no earlier than 2011-12-31 |
| 132 |  | Design Database | 1d | 2012-01-03 | 2012-01-04 | 121 | 88.5d |  |
| 133 |  | Update Plan | 1d? | 2012-01-26 | 2012-01-27 | 121, 120 | 74.31d |  |
| 134 | 1.8 | **Testing** | 32.69d | 2012-01-24 | 2012-03-14 | 28 | 48.25d |  |
| 135 | 1.8.1 | **Design test case** | 32.69d | 2012-01-24 | 2012-03-14 |  | 48.25d |  |
| 136 |  | Acceptance test case | 1d | 2012-01-24 | 2012-01-27 | 28 | 77.69d |  |
| 137 |  | System test case | 1d | 2012-03-13 | 2012-03-14 | 121, 136 | 48d | finish no earlier than 2012-03-14 |
| 138 | 1.9 | **Training Code** | 17.81d | 2011-11-03 | 2011-12-02 | 70 | 0d |  |
| 139 |  | ID generate | 7d | 2011-11-03 | 2011-12-02 |  | 0d | finish no earlier than 2011-12-02 |
| 140 | 1.10 | **Manage Catalog** | 59.25d | 2011-12-03 | 2012-03-09 | 138 | 0d |  |

| ID | WBS | Task | Duration | Start | Finish | Predecessors | Total float | Constraint |
| --- | --- | --- | --- | --- | --- | --- | --- | --- |
| 141 |  | Programming: Manage Catalog | 40d | 2011-12-03 | 2012-03-06 | 139 | 0d |  |
| 142 |  | Test Manage Catalog | 2d | 2012-03-06 | 2012-03-09 | 141 | 0d |  |
| 143 | 1.11 | **Increment 1: Detail Information Management** | 15.5d? | 2012-03-10 | 2012-04-03 | 140, 138 | 0d |  |
| 144 | 1.11.1 | **Detail Information Management** | 7.25d | 2012-03-10 | 2012-03-21 |  | 0d |  |
| 145 |  | Design Detail Information Management | 2d | 2012-03-10 | 2012-03-14 | 142 | 0d | start no earlier than 2012-02-13 |
| 146 |  | Code Detail Information Management | 2d | 2012-03-14 | 2012-03-20 | 145 | 0d |  |
| 147 |  | Test Detail Information Management | 1d | 2012-03-20 | 2012-03-21 | 146 | 0d |  |
| 148 | 1.11.2 | **Employee Code Setting** | 3.25d | 2012-03-21 | 2012-03-27 |  | 3.75d |  |
| 149 |  | Design Employee Code Setting | 0.5d | 2012-03-21 | 2012-03-23 | 144 | 3.75d |  |
| 150 |  | Code Employee Code Setting | 1d | 2012-03-23 | 2012-03-24 | 146, 149 | 4.25d |  |
| 151 |  | Test Employee Code Setting | 0.5d | 2012-03-24 | 2012-03-27 | 150 | 3.75d |  |
| 152 | 1.11.3 | **Column Setting** | 2.75d? | 2012-03-23 | 2012-03-27 |  | 2d |  |
| 153 |  | Design Column Setting | 0.5d? | 2012-03-23 | 2012-03-23 | 148SS+1d | 2d |  |
| 154 |  | Code Column Setting | 1d? | 2012-03-24 | 2012-03-27 | 153 | 1.5d |  |
| 155 |  | Test Column Setting | 0.5d? | 2012-03-27 | 2012-03-27 | 154 | 3.25d |  |
| 156 | 1.11.4 | **Certificate Management** | 3.5d | 2012-03-24 | 2012-03-30 |  | 1.5d |  |
| 157 |  | Design Certificate Management | 0.5d | 2012-03-24 | 2012-03-24 | 152SS+1d | 1.5d |  |
| 158 |  | Code Certificate Management | 1d | 2012-03-27 | 2012-03-28 | 154, 157 | 2d |  |
| 159 |  | Test Certificate Management | 0.5d | 2012-03-28 | 2012-03-30 | 158 | 1.5d |  |
| 160 | 1.11.5 | **Supported People Management** | 3.25d? | 2012-03-21 | 2012-03-27 |  | 1d |  |
| 161 |  | Design Supported People Management | 0.5d? | 2012-03-21 | 2012-03-23 | 144 | 1d |  |
| 162 |  | Code Supported People Management | 1d? | 2012-03-23 | 2012-03-24 | 161 | 1d |  |
| 163 |  | Test Supported People Management | 0.5d? | 2012-03-24 | 2012-03-27 | 162 | 1d |  |
| 164 | 1.11.6 | **Family Relationship Management** | 5.5d? | 2012-03-21 | 2012-03-30 |  | 1.5d |  |
| 165 |  | Design Family Relationship Management | 1d | 2012-03-21 | 2012-03-23 | 144 | 2d |  |
| 166 |  | Code Family Relationship Management | 2d | 2012-03-24 | 2012-03-28 | 165 | 1.75d |  |
| 167 |  | Test Family Relationship Management | 0.5d? | 2012-03-28 | 2012-03-30 | 166 | 1.5d |  |
| 168 | 1.11.7 | **Staff History** | 2.75d? | 2012-03-27 | 2012-03-30 |  | 1d |  |
| 169 |  | Design Staff History | 0.5d? | 2012-03-27 | 2012-03-27 | 163 | 1d |  |
| 170 |  | Code Staff History | 1d? | 2012-03-28 | 2012-03-30 | 169 | 1d |  |
| 171 |  | Test Staff History | 0.5d? | 2012-03-30 | 2012-03-30 | 170 | 1d |  |
| 172 |  | Integrate | 0.5d | 2012-03-31 | 2012-03-31 | 144, 148, 152, 156, 160, 164, 168 | 1.25d |  |
| 173 |  | Testing | 1d | 2012-03-31 | 2012-04-03 | 172 | 1d |  |
| 174 | 1.12 | **Increment 2: Training Management** | 16.25d? | 2012-03-24 | 2012-04-18 | 144 | 0d |  |
| 175 | 1.12.1 | **Reward Management** | 2.75d? | 2012-03-24 | 2012-03-28 |  | 1.5d |  |
| 176 |  | Design Reward Management | 0.5d? | 2012-03-24 | 2012-03-24 | 144FS+2d | 1.5d |  |
| 177 |  | Code Reward Management | 1d? | 2012-03-27 | 2012-03-28 | 176 | 1.25d |  |
| 178 |  | Test Reward Management | 0.5d? | 2012-03-28 | 2012-03-28 | 177 | 1.5d |  |
| 179 | 1.12.2 | **Staff Internship Management** | 2.75d? | 2012-03-24 | 2012-03-28 |  | 4.5d |  |
| 180 |  | Design Staff Internship Management | 0.5d? | 2012-03-24 | 2012-03-24 | 144FS+2d | 4.5d |  |
| 181 |  | Code Staff Internship Management | 1d? | 2012-03-27 | 2012-03-28 | 180 | 4.5d |  |
| 182 |  | Test Staff Internship Management | 0.5d? | 2012-03-28 | 2012-03-28 | 181 | 4.5d |  |
| 183 | 1.12.3 | **Training Result Management** | 2.75d? | 2012-03-24 | 2012-03-28 |  | 0d |  |
| 184 |  | Design Training Result Management | 0.5d? | 2012-03-24 | 2012-03-24 | 144FS+2d | 0d |  |
| 185 |  | Code Training Result Management | 1d? | 2012-03-27 | 2012-03-28 | 184 | 0d |  |
| 186 |  | Test Training Result Management | 0.5d? | 2012-03-28 | 2012-03-28 | 185 | 0d |  |
| 187 | 1.12.4 | **Facilitate Management** | 2.75d? | 2012-03-27 | 2012-03-30 |  | 1.25d |  |
| 188 |  | Design Facilitate Management | 0.5d? | 2012-03-27 | 2012-03-27 | 157 | 1.25d |  |
| 189 |  | Code Facilitate Management | 1d? | 2012-03-27 | 2012-03-28 | 188 | 1.75d |  |
| 190 |  | Test Facilitate Management | 0.5d? | 2012-03-30 | 2012-03-30 | 189 | 1.25d |  |
| 191 | 1.12.5 | **Union Management** | 2.75d? | 2012-04-04 | 2012-04-07 |  | 4d |  |
| 192 |  | Design Union Management | 0.5d? | 2012-04-04 | 2012-04-04 | 143 | 4d |  |
| 193 |  | Code Union Management | 1d? | 2012-04-04 | 2012-04-06 | 192 | 4.25d |  |
| 194 |  | Test Union Management | 0.5d? | 2012-04-07 | 2012-04-07 | 193 | 4d |  |
| 195 | 1.12.6 | **Task NoteBook Management** | 2.75d? | 2012-04-04 | 2012-04-07 |  | 1.25d |  |
| 196 |  | Design Task Note Book Management | 0.5d? | 2012-04-04 | 2012-04-04 | 143 | 1.25d |  |
| 197 |  | Code Task Note Book Management | 1d? | 2012-04-04 | 2012-04-06 | 196 | 1d |  |
| 198 |  | Test Task Note Book Management | 0.5d? | 2012-04-07 | 2012-04-07 | 197 | 1.25d |  |
| 199 | 1.12.7 | **Training Course Management** | 3.25d | 2012-04-07 | 2012-04-13 |  | 1d |  |
| 200 |  | Design Training Course Management | 0.5d | 2012-04-07 | 2012-04-10 | 195 | 1d | start no earlier than 2012-02-28 |
| 201 |  | Code Training Course Management | 1d | 2012-04-10 | 2012-04-11 | 200 | 1d |  |
| 202 |  | Test Training Course Management | 0.5d | 2012-04-11 | 2012-04-13 | 201 | 1d |  |
| 203 | 1.12.8 | **Internal Training Management** | 2.75d? | 2012-04-06 | 2012-04-10 |  | 1.25d |  |
| 204 |  | Design Internal Training Management | 0.5d? | 2012-04-06 | 2012-04-06 | 143FS+1d | 1.25d |  |
| 205 |  | Code Internal Training Management | 1d? | 2012-04-06 | 2012-04-07 | 204 | 1.75d |  |
| 206 |  | Test Internal Training Management | 0.5d? | 2012-04-10 | 2012-04-10 | 205 | 1.25d |  |
| 207 | 1.12.9 | **Emulation Management** | 3d? | 2012-04-10 | 2012-04-14 |  | 1.5d |  |
| 208 |  | Design Emulation Management | 0.5d? | 2012-04-10 | 2012-04-11 | 203 | 1.5d |  |
| 209 |  | Code Emulation Management | 1d? | 2012-04-11 | 2012-04-13 | 208 | 1.25d |  |
| 210 |  | Test Emulation Management | 0.5d? | 2012-04-13 | 2012-04-14 | 209 | 1.5d |  |

| ID | WBS | Task | Duration | Start | Finish | Predecessors | Total float |
| --- | --- | --- | --- | --- | --- | --- | --- |
| 211 | 1.12.10 | **Lecture Probation Management** | 2.75d? | 2012-04-13 | 2012-04-17 |  | 1d |
| 212 |  | Design Lecture Probation Management | 0.5d? | 2012-04-13 | 2012-04-13 | 199 | 1d |
| 213 |  | Code Lecture Probation Management | 1d? | 2012-04-14 | 2012-04-17 | 212 | 1d |
| 214 |  | Test Lecture Probation Management | 0.5d? | 2012-04-17 | 2012-04-17 | 213 | 1d |
| 215 | 1.12.11 | **Mobilization Management** | 2.75d? | 2012-03-30 | 2012-04-03 |  | 4.5d |
| 216 |  | Design Mobilization Management | 0.5d? | 2012-03-30 | 2012-03-30 | 179 | 4.5d |
| 217 |  | Code Mobilization Management | 1d? | 2012-03-30 | 2012-03-31 | 216 | 4.5d |
| 218 |  | Test Mobilization Management | 0.5d? | 2012-04-03 | 2012-04-03 | 217 | 4.5d |
| 219 | 1.12.12 | **Penalty Management** | 3d? | 2012-03-30 | 2012-04-04 |  | 1.5d |
| 220 |  | Design Penalty Management | 0.5d? | 2012-03-30 | 2012-03-31 | 175FS+1d | 1.5d |
| 221 |  | Code Penalty Management | 1d? | 2012-03-31 | 2012-04-03 | 220 | 1.25d |
| 222 |  | Test Penalty Management | 0.5d? | 2012-04-03 | 2012-04-04 | 221 | 1.5d |
| 223 | 1.12.13 | **Lecture Position Management** | 2.75d? | 2012-04-04 | 2012-04-07 | 219 | 1.5d |
| 224 |  | Design Lecture Position Management | 0.5d? | 2012-04-04 | 2012-04-04 | 219 | 1.5d |
| 225 |  | Code Lecture Position Management | 1d? | 2012-04-06 | 2012-04-07 | 224 | 1.25d |
| 226 |  | Test Lecture Position Management | 0.5d? | 2012-04-07 | 2012-04-07 | 225 | 1.5d |
| 227 | 1.12.14 | **Communist Party Management** | 3d? | 2012-04-10 | 2012-04-14 |  | 1.5d |
| 228 |  | Design Communist Party Management | 0.5d? | 2012-04-10 | 2012-04-11 | 223FS+1d | 1.5d |
| 229 |  | Code Communist Party Management | 1d? | 2012-04-11 | 2012-04-13 | 228 | 1.25d |
| 230 |  | Test Communist Party Management | 0.5d? | 2012-04-13 | 2012-04-14 | 229 | 1.5d |
| 231 | 1.12.15 | **Trade Union Management** | 3.25d? | 2012-04-07 | 2012-04-13 | 191 | 3.75d |
| 232 |  | Design Trade Union Management | 0.5d? | 2012-04-07 | 2012-04-10 | 191 | 3.75d |
| 233 |  | Code Trade Union Management | 1d? | 2012-04-10 | 2012-04-11 | 232 | 4.25d |
| 234 |  | Test Trade Union Management | 0.5d? | 2012-04-11 | 2012-04-13 | 233 | 3.75d |
| 235 | 1.12.16 | **Syllabus Management** | 3d? | 2012-04-03 | 2012-04-07 |  | 4.5d |
| 236 |  | Design Syllabus Management | 0.5d? | 2012-04-03 | 2012-04-04 | 215 | 4.5d |
| 237 |  | Code Syllabus Management | 1d? | 2012-04-04 | 2012-04-06 | 236 | 4.5d |
| 238 |  | Test Syllabus Management | 0.5d? | 2012-04-06 | 2012-04-07 | 237 | 4.5d |
| 239 | 1.12.17 | **Science Research Management** | 2.75d? | 2012-04-07 | 2012-04-11 | 235 | 4.5d |
| 240 |  | Design Science Research Management | 0.5d? | 2012-04-07 | 2012-04-07 | 235 | 4.5d |
| 241 |  | Code Science Research Management | 1d? | 2012-04-10 | 2012-04-11 | 240 | 4.5d |
| 242 |  | Test Science Research Management | 0.5d? | 2012-04-11 | 2012-04-11 | 241 | 4.5d |
| 243 | 1.12.18 | **Other Management** | 2.75d? | 2012-03-30 | 2012-04-03 |  | 0d |
| 244 |  | Design Other Management | 0.5d? | 2012-03-30 | 2012-03-30 | 183 | 0d |
| 245 |  | Code Other Management | 1d? | 2012-03-30 | 2012-03-31 | 244 | 0d |
| 246 |  | Test Other Management | 0.5d? | 2012-04-03 | 2012-04-03 | 245 | 0d |
| 247 | 1.12.19 | **Work Management** | 3d? | 2012-04-03 | 2012-04-07 |  | 0d |
| 248 |  | Design Work Management | 0.5d? | 2012-04-03 | 2012-04-04 | 243 | 0d |
| 249 |  | Code Work Management | 1d? | 2012-04-04 | 2012-04-06 | 248 | 0d |
| 250 |  | Test Work Management | 0.5d? | 2012-04-06 | 2012-04-07 | 249 | 0d |
| 251 | 1.12.20 | **Master Thesis Guideline Management** | 2.75d? | 2012-04-07 | 2012-04-11 |  | 0d |
| 252 |  | Design Master Thesis Guideline Management | 0.5d? | 2012-04-07 | 2012-04-07 | 247 | 0d |
| 253 |  | Code Master Thesis Guideline Management | 1d? | 2012-04-10 | 2012-04-11 | 252 | 0d |
| 254 |  | Test Master Thesis Guideline Management | 0.5d? | 2012-04-11 | 2012-04-11 | 253 | 0d |
| 255 | 1.12.21 | **Article Management** | 2.75d? | 2012-04-13 | 2012-04-17 |  | 0d |
| 256 |  | Design Article Management | 0.5d? | 2012-04-13 | 2012-04-13 | 251 | 0d |
| 257 |  | Code Article Management | 1d? | 2012-04-13 | 2012-04-14 | 256 | 0d |
| 258 |  | Test Article Management | 0.5d? | 2012-04-17 | 2012-04-17 | 257 | 0d |
| 259 | 1.12.22 | **Subject Management** | 3.5d? | 2012-03-30 | 2012-04-04 |  | 1.75d |
| 260 |  | Design Subject Management | 1d? | 2012-03-30 | 2012-03-31 | 187 | 1.75d |
| 261 |  | Code Subject Management | 1d? | 2012-04-03 | 2012-04-04 | 260 | 1.25d |
| 262 |  | Test Subject Management | 0.5d? | 2012-04-04 | 2012-04-04 | 261 | 1.5d |
| 263 | 1.12.23 | **Income Management** | 2.75d? | 2012-04-06 | 2012-04-10 |  | 1.25d |
| 264 |  | Design Income Management | 0.5d? | 2012-04-06 | 2012-04-06 | 259 | 1.25d |
| 265 |  | Code Income Management | 1d? | 2012-04-06 | 2012-04-07 | 264 | 1.75d |
| 266 |  | Test Income Management | 0.5d? | 2012-04-10 | 2012-04-10 | 265 | 1.25d |
| 267 | 1.12.24 | **Salary Coefficient Management** | 3d? | 2012-04-10 | 2012-04-14 |  | 1.5d |
| 268 |  | Design Salary Coefficient Management | 0.5d? | 2012-04-10 | 2012-04-11 | 263 | 1.5d |
| 269 |  | Code Salary Coefficient Management | 1d? | 2012-04-11 | 2012-04-13 | 268 | 1.25d |
| 270 |  | Test Salary Coefficient Management | 0.5d? | 2012-04-13 | 2012-04-14 | 269 | 1.5d |
| 271 |  | Integrate | 0.5d? | 2012-04-17 | 2012-04-18 | 164, 187, 207, 227, 255, 263, 267 | 0d |
| 272 |  | Testing | 0.5d? | 2012-04-18 | 2012-04-18 | 271 | 0d |
| 273 | 1.13 | **Increment 3: Report** | 10.25d | 2012-04-20 | 2012-05-05 |  | 0d |
| 274 | 1.13.1 | **Report Management** | 7.25d | 2012-04-20 | 2012-05-01 |  | 0d |
| 275 |  | Design Report | 1d | 2012-04-20 | 2012-04-21 | 174 | 0d |
| 276 |  | Code Report | 3d | 2012-04-21 | 2012-04-28 | 258, 272, 275 | 0d |
| 277 |  | Test Report | 1d | 2012-04-28 | 2012-05-01 | 276 | 0d |
| 278 |  | Integrate | 1d | 2012-05-01 | 2012-05-02 | 277 | 0d |
| 279 |  | Test | 1d | 2012-05-04 | 2012-05-05 | 278 | 0d |
| 280 |  | Conduct System test | 2d | 2012-05-05 | 2012-05-09 | 273 | 0d |

| ID | Task | Duration | Start | Finish | Predecessors | Total float | Constraint |
| --- | --- | --- | --- | --- | --- | --- | --- |
| 281 | Conduct Acceptance test | 2d | 2012-05-11 | 2012-05-15 | 280 | 0d |  |
| 282 | Translate Concept Doc | 10d | 2012-01-21 | 2012-02-14 | 87 | 55.19d |  |
| 283 | Deployment | 2d | 2012-05-15 | 2012-05-19 | 281, 282 | 0d | finish no earlier than 2012-03-07 |
| 284 | Deliver to customer | 3d | 2012-05-19 | 2012-05-26 | 283 | 0d |  |
| 285 | Maintaining | 1d | 2012-05-26 | 2012-05-29 | 284 | 0d |  |

## Version 2 (data date 2012-03-09, saved 2012-05-04)

Note of the change: Fix errors

Last finish stays 2012-05-29.

Changed:

| ID | Task | Start | Finish | Duration | Total float | Predecessors | Other |
| --- | --- | --- | --- | --- | --- | --- | --- |
| 121 | **Architect Design Analysis** |  | 2011-12-31 → 2012-02-11 (+42d) | 35.31d → 60.75d | 88.75d → 6.12d |  |  |
| 122 | **Develop architecture driver document (ADD)** |  | 2011-11-12 → 2012-01-20 (+69d) | 5.5d → 46.75d | 112.56d → 6.12d |  |  |
| 123 | Discover architecture drivers |  | 2011-11-05 → 2011-11-26 (+21d) | 1d → 10d | 112.56d → 6.12d |  |  |
| 124 | Document ADD(Draft version) | 2011-11-05 → 2011-11-26 (+21d) | 2011-11-09 → 2011-12-21 (+42d) | 1d → 10d | 112.81d → 6.12d |  |  |
| 125 | Review | 2011-11-09 → 2011-12-21 (+42d) | 2011-11-11 → 2011-12-28 (+47d) | 1d → 3d | 112.56d → 6.12d |  |  |
| 126 | Document ADD(Final version) | 2011-11-11 → 2011-12-28 (+47d) | 2011-11-12 → 2012-01-20 (+69d) | 1d → 10d | 112.56d → 6.12d |  |  |
| 127 | **Develop architecture design** | 2011-11-12 → 2012-01-20 (+69d) | 2011-12-31 → 2012-02-11 (+42d) | 29.81d → 14d | 88.75d → 6.12d |  |  |
| 128 | Research about new pattern | 2011-11-12 → 2012-01-20 (+69d) | 2011-11-16 → 2012-01-25 (+70d) | 1d → 2d | 112.81d → 6.12d |  |  |
| 129 | Document AD (Draft version) | 2011-11-16 → 2012-01-25 (+70d) | 2011-11-18 → 2012-02-04 (+78d) | 1d → 5d | 112.56d → 6.38d |  |  |
| 130 | Review | 2011-11-18 → 2012-02-04 (+78d) | 2011-11-20 → 2012-02-08 (+80d) |  | 112.5d → 6.12d |  |  |
| 131 | Document AD (Final version) | 2011-12-30 → 2012-02-08 (+40d) | 2011-12-31 → 2012-02-11 (+42d) | 1d → 2d | 88.5d → 6.38d |  |  |
| 132 | Design Database | 2012-01-03 → 2012-02-11 (+39d) | 2012-01-04 → 2012-02-29 (+56d) | 1d → 7d | 88.5d → 6.12d |  |  |
| 133 | Update Plan | 2012-01-26 → 2012-02-11 (+16d) | 2012-01-27 → 2012-02-15 (+19d) |  | 74.31d → 54.56d |  |  |
| 134 | **Testing** |  | 2012-03-14 → 2012-02-15 (-28d) | 32.69d → 14.06d | 48.25d → 12.69d |  |  |
| 135 | **Design test case** |  | 2012-03-14 → 2012-02-15 (-28d) | 32.69d → 14.06d | 48.25d → 12.69d |  |  |
| 137 | System test case | 2012-03-13 → 2012-02-11 (-31d) | 2012-03-14 → 2012-02-15 (-28d) |  | 48d → 12.69d |  | constraint finish no earlier than 2012-03-14 → none |
| 142 | Test Manage Catalog |  |  |  |  | 141 → 141, 137 |  |
| 143 | **Increment 1: Detail Information Management** |  |  |  |  | 140, 138 → 140, 138, 132 |  |
| 273 | **Increment 3: Report** |  |  |  |  | none → 143 | resources 143 → none |
| 283 | Deployment |  |  |  |  | 281, 282 → 281, 282, 133 |  |

## Version 3 (data date 2012-03-09, saved 2012-05-07)

Last finish 2012-05-29 → 2012-05-25 (-4d).

Added:

| ID | Task | Duration | Start | Finish |
| --- | --- | --- | --- | --- |
| 284 | Update Manage Doc | 1d? | 2011-09-27 08:00 | 2011-09-27 21:00 |
| 285 | Update SRS Doc | 1d? | 2011-09-27 08:00 | 2011-09-27 21:00 |
| 286 | Update ContOps | 1d? | 2011-09-27 08:00 | 2011-09-27 21:00 |
| 287 | Update | 1d? | 2011-09-27 08:00 | 2011-09-27 21:00 |

Changed:

| ID | Task | Start | Finish | Duration | Other |
| --- | --- | --- | --- | --- | --- |
| 1 | **Human Resource Management** | 2011-09-27 → 2011-09-27 08:00 | 2012-05-29 → 2012-05-25 09:00 (-4d) | 149.25d? → 147.06d? | baseline start 2011-09-22 → 2011-09-22 08:00; baseline finish 2012-04-30 → 2012-04-30 17:00 |
| 2 | Kick off meeting | 2011-09-27 → 2011-09-27 08:00 | 2011-09-28 → 2011-09-28 15:00 |  | constraint start no earlier than 2011-09-27 → start no earlier than 2011-09-27 08:00 |
| 3 | **Start Up** | 2011-09-28 → 2011-09-28 15:00 | 2011-10-01 → 2011-10-01 15:30 |  | baseline start 2011-09-22 → 2011-09-22 08:00; baseline finish 2012-04-17 → 2012-04-17 17:00 |
| 4 | **Research process** | 2011-09-28 → 2011-09-28 15:00 | 2011-09-30 → 2011-09-30 14:30 |  | baseline start 2011-10-01 → 2011-10-01 08:00; baseline finish 2012-03-22 → 2012-03-22 17:00 |
| 5 | **Requirement Process** | 2011-09-28 → 2011-09-28 15:00 | 2011-09-30 → 2011-09-30 14:30 |  |  |
| 6 | Research phases in process | 2011-09-28 → 2011-09-28 15:00 | 2011-09-30 → 2011-09-30 14:30 |  |  |
| 7 | Research tool and document templates | 2011-09-28 → 2011-09-28 15:00 | 2011-09-30 → 2011-09-30 14:30 |  |  |
| 8 | **Architect process** | 2011-09-28 → 2011-09-28 15:00 | 2011-09-30 → 2011-09-30 14:30 |  |  |
| 9 | Research phases in process | 2011-09-28 → 2011-09-28 15:00 | 2011-09-30 → 2011-09-30 14:30 |  |  |
| 10 | Research tool and document templates | 2011-09-28 → 2011-09-28 15:00 | 2011-09-30 → 2011-09-30 14:30 |  |  |
| 11 | **Detail design process** | 2011-09-28 → 2011-09-28 15:00 | 2011-09-30 → 2011-09-30 14:30 |  |  |
| 12 | Research phases in process | 2011-09-28 → 2011-09-28 15:00 | 2011-09-30 → 2011-09-30 14:30 |  |  |
| 13 | Research tool and document templates | 2011-09-28 → 2011-09-28 15:00 | 2011-09-30 → 2011-09-30 14:30 |  |  |
| 14 | Testing process | 2011-09-28 → 2011-09-28 15:00 | 2011-09-30 → 2011-09-30 14:30 |  |  |
| 15 | Research Process Management: Risk, Measure, Change | 2011-09-28 → 2011-09-28 15:00 | 2011-09-30 → 2011-09-30 14:30 |  |  |
| 16 | **Develop Project Plan** | 2011-09-30 → 2011-09-30 14:30 | 2011-10-01 → 2011-10-01 15:30 |  | baseline start 2011-09-22 → 2011-09-22 08:00; baseline finish 2011-09-26 → 2011-09-26 17:00 |
| 17 | **Requirement Process** | 2011-09-30 → 2011-09-30 14:30 | 2011-10-01 → 2011-10-01 15:30 |  |  |
| 18 | Draw process | 2011-09-30 → 2011-09-30 14:30 | 2011-10-01 → 2011-10-01 15:30 |  |  |
| 19 | Describe stage in process | 2011-09-30 → 2011-09-30 14:30 | 2011-10-01 → 2011-10-01 15:30 |  |  |
| 20 | **Architect process** | 2011-09-30 → 2011-09-30 14:30 | 2011-10-01 → 2011-10-01 15:30 |  |  |
| 21 | Draw process | 2011-09-30 → 2011-09-30 14:30 | 2011-10-01 → 2011-10-01 15:30 |  |  |
| 22 | Describe stage in process | 2011-09-30 → 2011-09-30 14:30 | 2011-10-01 → 2011-10-01 15:30 |  |  |
| 23 | **Detail design process** | 2011-09-30 → 2011-09-30 14:30 | 2011-10-01 → 2011-10-01 15:30 |  |  |
| 24 | Draw process | 2011-09-30 → 2011-09-30 14:30 | 2011-10-01 → 2011-10-01 15:30 |  |  |
| 25 | Describe stage in process | 2011-09-30 → 2011-09-30 14:30 | 2011-10-01 → 2011-10-01 15:30 |  |  |
| 26 | Testing process | 2011-09-30 → 2011-09-30 14:30 | 2011-10-01 → 2011-10-01 15:30 |  |  |
| 27 | Doc Process Management: Risk, Measurement, Change | 2011-09-30 → 2011-09-30 14:30 | 2011-10-01 → 2011-10-01 15:30 |  |  |
| 28 | **Requirement Analysis** | 2011-10-04 → 2011-10-04 08:00 | 2012-01-24 → 2012-01-24 14:30 |  | baseline start 2011-10-01 → 2011-10-01 08:00; baseline finish 2011-11-20 → 2011-11-20 17:00 |
| 29 | **Conference with cus 1** | 2011-10-04 → 2011-10-04 08:00 | 2011-10-06 → 2011-10-06 16:00 |  |  |
| 30 | **Prepare 1** | 2011-10-04 → 2011-10-04 08:00 | 2011-10-04 → 2011-10-04 11:00 |  |  |
| 31 | C1: Research HRM processes | 2011-10-04 → 2011-10-04 08:00 | 2011-10-04 → 2011-10-04 10:00 |  |  |
| 32 | C1: Research business, role | 2011-10-04 → 2011-10-04 08:00 | 2011-10-04 → 2011-10-04 10:00 |  |  |
| 33 | C1: Prepare questions to ask customer | 2011-10-04 → 2011-10-04 08:00 | 2011-10-04 → 2011-10-04 10:00 |  |  |
| 34 | C1: Send mail for customer | 2011-10-04 → 2011-10-04 10:00 | 2011-10-04 → 2011-10-04 11:00 |  |  |
| 35 | **Elicitate requirement 1** | 2011-10-04 → 2011-10-04 13:00 | 2011-10-05 → 2011-10-05 13:30 |  | baseline start 2011-10-01 → 2011-10-01 08:00; baseline finish 2011-11-12 → 2011-11-12 17:00 |
| 36 | C1: Write down meeting 1 | 2011-10-04 → 2011-10-04 13:00 | 2011-10-05 → 2011-10-05 13:30 |  |  |
| 37 | C1: Support write down meeting 1 | 2011-10-04 → 2011-10-04 13:00 | 2011-10-05 → 2011-10-05 13:30 |  |  |
| 38 | C1: Manage meeting 1 | 2011-10-04 → 2011-10-04 13:00 | 2011-10-05 → 2011-10-05 13:30 |  |  |
| 39 | C1: Attending conference 1 | 2011-10-04 → 2011-10-04 13:00 | 2011-10-05 → 2011-10-05 13:30 |  |  |
| 40 | **Analyze requirement 1** | 2011-10-05 → 2011-10-05 13:30 | 2011-10-06 → 2011-10-06 16:00 |  | baseline start 2011-11-20 → 2011-11-20 17:00; baseline finish 2011-11-20 → 2011-11-20 17:00 |
| 41 | C1: Doc ConsOpt: Introduction | 2011-10-05 → 2011-10-05 13:30 | 2011-10-05 → 2011-10-05 15:30 |  |  |
| 42 | C1: Doc ConsOpt: Current System & Reason for improvement | 2011-10-05 → 2011-10-05 13:30 | 2011-10-05 → 2011-10-05 15:30 |  |  |
| 43 | C1: Doc Qui trinh nghiep vu tong quat | 2011-10-05 → 2011-10-05 13:30 | 2011-10-06 → 2011-10-06 16:00 |  |  |
| 44 | C1: Guide doc Concept | 2011-10-05 → 2011-10-05 13:30 | 2011-10-06 → 2011-10-06 16:00 |  |  |
| 45 | C1: Review document | 2011-10-05 → 2011-10-05 13:30 | 2011-10-06 → 2011-10-06 16:00 |  |  |
| 46 | C1: Fix error in document | 2011-10-05 → 2011-10-05 13:30 | 2011-10-06 → 2011-10-06 16:00 |  |  |
| 47 | **Conference with cus 2** | 2011-10-05 → 2011-10-05 13:30 | 2011-10-27 → 2011-10-27 10:00 |  |  |
| 48 | **Prepare 2** | 2011-10-05 → 2011-10-05 13:30 | 2011-10-06 → 2011-10-06 09:00 |  |  |
| 49 | C2: Đọc và phân tích biểu mẫu Sơ yếu lí lịch | 2011-10-05 → 2011-10-05 13:30 | 2011-10-05 → 2011-10-05 15:30 |  |  |
| 50 | C2: Thu thập và chuẩn bị các câu hỏi về Tuyển dụng và làm mới HSNS | 2011-10-05 → 2011-10-05 13:30 | 2011-10-05 → 2011-10-05 15:30 |  |  |
| 51 | C2: Send mail for customer | 2011-10-06 → 2011-10-06 08:00 | 2011-10-06 → 2011-10-06 09:00 |  |  |
| 52 | **Elicitate Requirement 2** | 2011-10-07 → 2011-10-07 13:00 | 2011-10-07 → 2011-10-07 17:00 |  |  |
| 53 | C2: Write down meeting 2 | 2011-10-07 → 2011-10-07 13:00 | 2011-10-07 → 2011-10-07 17:00 |  |  |
| 54 | C2: Support write down meeting 2 | 2011-10-07 → 2011-10-07 13:00 | 2011-10-07 → 2011-10-07 17:00 |  |  |
| 55 | C2: Manage meeting 2 | 2011-10-07 → 2011-10-07 13:00 | 2011-10-07 → 2011-10-07 17:00 |  |  |
| 56 | C2: Attending conference 2 | 2011-10-07 → 2011-10-07 13:00 | 2011-10-07 → 2011-10-07 17:00 |  |  |
| 57 | **Analyze requirement** | 2011-10-08 → 2011-10-08 08:00 | 2011-10-27 → 2011-10-27 10:00 |  |  |
| 58 | C2: Doc Mô hình phân rã chức năng HSNS | 2011-10-08 → 2011-10-08 08:00 | 2011-10-18 → 2011-10-18 10:30 |  |  |
| 59 | C2: Draw process qui trinh nghiep vu tong quat | 2011-10-08 → 2011-10-08 08:00 | 2011-10-13 → 2011-10-13 10:00 |  |  |
| 60 | C2: Phân tích hệ thống dự kiến | 2011-10-08 → 2011-10-08 08:00 | 2011-10-18 → 2011-10-18 10:30 |  |  |
| 61 | C2: Doc Information Catalog: Thông tin chung | 2011-10-13 → 2011-10-13 10:00 | 2011-10-18 → 2011-10-18 10:30 |  |  |
| 62 | C2: Review document | 2011-10-18 → 2011-10-18 10:30 | 2011-10-21 → 2011-10-21 17:00 |  |  |
| 63 | C2: Fix error in document | 2011-10-22 → 2011-10-22 08:00 | 2011-10-27 → 2011-10-27 10:00 |  |  |
| 64 | **Conference with cus 3** | 2011-10-27 → 2011-10-27 10:00 | 2011-11-11 → 2011-11-11 14:00 |  |  |
| 65 | **Prepare 3** | 2011-10-27 → 2011-10-27 10:00 | 2011-10-29 → 2011-10-29 09:00 |  |  |
| 66 | C3: Research HRM processes | 2011-10-27 → 2011-10-27 10:00 | 2011-10-28 → 2011-10-28 17:00 |  |  |
| 67 | C3: Research business, role | 2011-10-27 → 2011-10-27 10:00 | 2011-10-28 → 2011-10-28 17:00 |  |  |
| 68 | C3: Prepare questions to ask customer | 2011-10-27 → 2011-10-27 10:00 | 2011-10-28 → 2011-10-28 17:00 |  |  |
| 69 | C3: Send mail for customer | 2011-10-29 → 2011-10-29 08:00 | 2011-10-29 → 2011-10-29 09:00 |  |  |
| 70 | **Elicitate Requirement 3** | 2011-10-29 → 2011-10-29 09:00 | 2011-10-29 → 2011-10-29 15:00 |  |  |

| ID | Task | Start | Finish | Other |
| --- | --- | --- | --- | --- |
| 71 | C3: Write down meeting 3 | 2011-10-29 → 2011-10-29 09:00 | 2011-10-29 → 2011-10-29 15:00 |  |
| 72 | C3: Support write down meeting 3 | 2011-10-29 → 2011-10-29 09:00 | 2011-10-29 → 2011-10-29 15:00 |  |
| 73 | C3: Manage meeting 3 | 2011-10-29 → 2011-10-29 09:00 | 2011-10-29 → 2011-10-29 15:00 |  |
| 74 | C3: Attending conference 3 | 2011-10-29 → 2011-10-29 09:00 | 2011-10-29 → 2011-10-29 15:00 |  |
| 75 | **Analyze requirement** | 2011-10-29 → 2011-10-29 15:00 | 2011-11-11 → 2011-11-11 14:00 |  |
| 76 | C3: Doc Information Category: Thông tin mở rộng | 2011-10-29 → 2011-10-29 15:00 | 2011-11-04 → 2011-11-04 14:00 |  |
| 77 | C3: Doc Mo hinh phan ra chuc nang HSNS | 2011-10-29 → 2011-10-29 15:00 | 2011-11-09 → 2011-11-09 14:30 |  |
| 78 | C3: Scenerio | 2011-10-29 → 2011-10-29 15:00 | 2011-11-09 → 2011-11-09 14:30 |  |
| 79 | C3: Processes | 2011-11-04 → 2011-11-04 14:00 | 2011-11-09 → 2011-11-09 14:30 |  |
| 80 | C3: Effect | 2011-10-29 → 2011-10-29 15:00 | 2011-11-09 → 2011-11-09 14:30 |  |
| 81 | C3: Review document | 2011-11-09 → 2011-11-09 14:30 | 2011-11-10 → 2011-11-10 11:00 |  |
| 82 | C3: Fix error in document | 2011-11-10 → 2011-11-10 13:00 | 2011-11-11 → 2011-11-11 14:00 |  |
| 83 | Send Concept Operation to customer | 2011-11-11 → 2011-11-11 14:00 | 2011-11-11 → 2011-11-11 16:00 | constraint start no earlier than 2011-11-10 → start no earlier than 2011-11-10 08:00 |
| 84 | C3: Update Information Category | 2011-11-11 → 2011-11-11 16:00 | 2012-01-12 → 2012-01-12 09:00 |  |
| 85 | C3: Update Process | 2011-11-11 → 2011-11-11 16:00 | 2012-01-12 → 2012-01-12 09:00 |  |
| 86 | C3: Review and fix Concept | 2011-11-11 → 2011-11-11 16:00 | 2012-01-12 → 2012-01-12 09:00 |  |
| 87 | **Conference with cus 4 (review)** | 2012-01-12 → 2012-01-12 09:00 | 2012-01-21 → 2012-01-21 10:00 |  |
| 88 | **Prepare 4** | 2012-01-12 → 2012-01-12 09:00 | 2012-01-13 → 2012-01-13 15:00 |  |
| 89 | C4: Research HRM processes | 2012-01-12 → 2012-01-12 09:00 | 2012-01-13 → 2012-01-13 14:00 |  |
| 90 | C4: Research business, role | 2012-01-12 → 2012-01-12 09:00 | 2012-01-13 → 2012-01-13 14:00 |  |
| 91 | C4: Prepare questions to ask customer | 2012-01-12 → 2012-01-12 09:00 | 2012-01-13 → 2012-01-13 14:00 |  |
| 92 | C4: Send mail for customer | 2012-01-13 → 2012-01-13 14:00 | 2012-01-13 → 2012-01-13 15:00 |  |
| 93 | **Elicitate Requirement 4** | 2012-01-13 → 2012-01-13 15:00 | 2012-01-14 → 2012-01-14 10:00 |  |
| 94 | C4: Write down meeting 4 | 2012-01-13 → 2012-01-13 15:00 | 2012-01-14 → 2012-01-14 10:00 |  |
| 95 | C4: Support write down meeting 4 | 2012-01-13 → 2012-01-13 15:00 | 2012-01-14 → 2012-01-14 10:00 |  |
| 96 | C4: Manage meeting 4 | 2012-01-13 → 2012-01-13 15:00 | 2012-01-14 → 2012-01-14 10:00 |  |
| 97 | C4: Attending conference 4 | 2012-01-13 → 2012-01-13 15:00 | 2012-01-14 → 2012-01-14 10:00 |  |
| 98 | **Analyze requirement** | 2012-01-14 → 2012-01-14 10:00 | 2012-01-21 → 2012-01-21 10:00 |  |
| 99 | Update Information Catgegories | 2012-01-14 → 2012-01-14 10:00 | 2012-01-17 → 2012-01-17 14:30 |  |
| 100 | Update Processes | 2012-01-14 → 2012-01-14 10:00 | 2012-01-17 → 2012-01-17 14:30 |  |
| 101 | C4: Review document | 2012-01-17 → 2012-01-17 14:30 | 2012-01-19 → 2012-01-19 14:00 |  |
| 102 | C4: Fix error in document | 2012-01-19 → 2012-01-19 14:00 | 2012-01-21 → 2012-01-21 10:00 |  |
| 103 | Update Plan | 2012-01-21 → 2012-01-21 10:00 | 2012-01-24 → 2012-01-24 14:30 |  |
| 104 | **Develop SRS** | 2011-11-11 → 2011-11-11 16:00 | 2012-01-17 → 2012-01-17 17:00 | baseline start 2011-10-23 → 2011-10-23 08:00; baseline finish 2011-11-20 → 2011-11-20 17:00 |
| 105 | **Document Software Requirement Specification (Draft version)** | 2011-11-11 → 2011-11-11 16:00 | 2011-11-19 → 2011-11-19 11:45 |  |
| 106 | **Develop use case specification** | 2011-11-11 → 2011-11-11 16:00 | 2011-11-17 → 2011-11-17 15:00 |  |
| 107 | Draw use cases | 2011-11-11 → 2011-11-11 16:00 | 2011-11-17 → 2011-11-17 15:00 |  |
| 108 | Draw activity diagram for use cases | 2011-11-11 → 2011-11-11 16:00 | 2011-11-17 → 2011-11-17 15:00 |  |
| 109 | Descripe use case | 2011-11-11 → 2011-11-11 16:00 | 2011-11-17 → 2011-11-17 15:00 |  |
| 110 | Monitoring tasks in SRS | 2011-11-11 → 2011-11-11 16:00 | 2011-11-17 → 2011-11-17 16:00 |  |
| 111 | Review SRS | 2011-11-11 → 2011-11-11 16:00 | 2011-11-19 → 2011-11-19 11:45 |  |
| 112 | Review | 2011-11-19 → 2011-11-19 13:00 | 2011-11-22 → 2011-11-22 09:30 |  |
| 113 | **Update SRS** | 2011-11-22 → 2011-11-22 09:30 | 2011-12-01 → 2011-12-01 09:00 |  |
| 114 | Update use case | 2011-11-22 → 2011-11-22 09:30 | 2011-11-25 → 2011-11-25 16:00 |  |
| 115 | Bussiness Rule | 2011-11-25 → 2011-11-25 16:00 | 2011-12-01 → 2011-12-01 09:00 |  |
| 116 | Functional Requirement | 2011-11-22 → 2011-11-22 09:30 | 2011-11-25 → 2011-11-25 16:00 |  |
| 117 | Software Requirement Specification (Final version) | 2011-11-22 → 2011-11-22 09:30 | 2011-11-25 → 2011-11-25 16:00 | constraint finish no earlier than 2011-11-01 → finish no earlier than 2011-11-01 17:00 |
| 118 | Develop interfaces | 2011-12-01 → 2011-12-01 09:00 | 2011-12-16 → 2011-12-16 16:00 | constraint start no earlier than 2011-11-29 → start no earlier than 2011-11-29 08:00 |
| 119 | Upadate interfaces | 2011-12-31 → 2011-12-31 13:30 | 2012-01-17 → 2012-01-17 17:00 | constraint finish no earlier than 2012-01-17 → finish no earlier than 2012-01-17 17:00 |
| 120 | Update Plan | 2012-01-24 → 2012-01-24 14:30 | 2012-01-26 → 2012-01-26 14:00 |  |
| 121 | **Architect Design Analysis** | 2011-11-04 → 2011-11-04 14:00 | 2012-02-11 → 2012-02-11 15:00 | baseline start 2011-10-24 → 2011-10-24 08:00; baseline finish 2011-12-25 → 2011-12-25 17:00 |
| 122 | **Develop architecture driver document (ADD)** | 2011-11-04 → 2011-11-04 14:00 | 2012-01-20 → 2012-01-20 14:00 | baseline start 2011-12-25 → 2011-12-25 17:00; baseline finish 2011-12-25 → 2011-12-25 17:00 |
| 123 | Discover architecture drivers | 2011-11-04 → 2011-11-04 14:00 | 2011-11-26 → 2011-11-26 15:00 | baseline start 2011-10-24 → 2011-10-24 08:00; baseline finish 2011-11-03 → 2011-11-03 17:00 |
| 124 | Document ADD(Draft version) | 2011-11-26 → 2011-11-26 15:00 | 2011-12-21 → 2011-12-21 14:30 | baseline start 2011-11-04 → 2011-11-04 08:00; baseline finish 2011-11-05 → 2011-11-05 17:00 |
| 125 | Review | 2011-12-21 → 2011-12-21 14:30 | 2011-12-28 → 2011-12-28 14:30 | baseline start 2011-11-06 → 2011-11-06 08:00; baseline finish 2011-11-06 → 2011-11-06 17:00 |
| 126 | Document ADD(Final version) | 2011-12-28 → 2011-12-28 14:30 | 2012-01-20 → 2012-01-20 14:00 |  |
| 127 | **Develop architecture design** | 2012-01-20 → 2012-01-20 14:00 | 2012-02-11 → 2012-02-11 15:00 | baseline start 2011-11-13 → 2011-11-13 08:00; baseline finish 2011-11-13 → 2011-11-13 17:00 |
| 128 | Research about new pattern | 2012-01-20 → 2012-01-20 14:00 | 2012-01-25 → 2012-01-25 14:30 | constraint finish no earlier than 2011-11-13 → finish no earlier than 2011-11-13 17:00; baseline start 2011-11-14 → 2011-11-14 08:00; baseline finish 2011-12-05 → 2011-12-05 17:00 |
| 129 | Document AD (Draft version) | 2012-01-25 → 2012-01-25 14:30 | 2012-02-04 → 2012-02-04 15:00 | baseline start 2011-12-06 → 2011-12-06 08:00; baseline finish 2011-12-06 → 2011-12-06 17:00 |
| 130 | Review | 2012-02-04 → 2012-02-04 15:00 | 2012-02-08 → 2012-02-08 14:30 | constraint finish no earlier than 2011-11-20 → finish no earlier than 2011-11-20 17:00; baseline start 2011-12-07 → 2011-12-07 08:00; baseline finish 2011-12-10 → 2011-12-10 17:00 |
| 131 | Document AD (Final version) | 2012-02-08 → 2012-02-08 14:30 | 2012-02-11 → 2012-02-11 15:00 | constraint finish no earlier than 2011-12-31 → finish no earlier than 2011-12-31 17:00; baseline start 2011-12-12 → 2011-12-12 08:00; baseline finish 2011-12-13 → 2011-12-13 17:00 |
| 132 | Design Database | 2012-02-11 → 2012-02-11 15:00 | 2012-02-29 → 2012-02-29 14:30 | baseline start 2011-12-14 → 2011-12-14 08:00; baseline finish 2011-12-24 → 2011-12-24 17:00 |
| 133 | Update Plan | 2012-02-11 → 2012-02-11 15:00 | 2012-02-15 → 2012-02-15 14:30 |  |
| 134 | **Testing** | 2012-01-24 → 2012-01-24 14:30 | 2012-02-15 → 2012-02-15 09:00 |  |
| 135 | **Design test case** | 2012-01-24 → 2012-01-24 14:30 | 2012-02-15 → 2012-02-15 09:00 |  |
| 136 | Acceptance test case | 2012-01-24 → 2012-01-24 14:30 | 2012-01-27 → 2012-01-27 08:30 |  |
| 137 | System test case | 2012-02-11 → 2012-02-11 15:00 | 2012-02-15 → 2012-02-15 09:00 |  |
| 138 | **Training Code** | 2011-11-03 → 2011-11-03 15:30 | 2011-12-02 → 2011-12-02 17:00 | baseline start 2012-03-04 → 2012-03-04 08:00; baseline finish 2012-03-04 → 2012-03-04 08:00 |
| 139 | ID generate | 2011-11-03 → 2011-11-03 15:30 | 2011-12-02 → 2011-12-02 17:00 | constraint finish no earlier than 2011-12-02 → finish no earlier than 2011-12-02 17:00; baseline start 2012-04-04 → 2012-04-04 17:00; baseline finish 2012-04-04 → 2012-04-04 17:00 |
| 140 | **Manage Catalog** | 2011-12-03 → 2011-12-03 08:00 | 2012-03-09 → 2012-03-09 17:00 |  |

| ID | Task | Start | Finish | Duration | Total float | Other |
| --- | --- | --- | --- | --- | --- | --- |
| 141 | Programming: Manage Catalog | 2011-12-03 → 2011-12-03 08:00 | 2012-03-06 → 2012-03-06 10:30 |  |  |  |
| 142 | Test Manage Catalog | 2012-03-06 → 2012-03-06 10:30 | 2012-03-09 → 2012-03-09 17:00 |  |  |  |
| 143 | **Increment 1: Detail Information Management** | 2012-03-10 → 2012-03-10 08:00 | 2012-04-03 → 2012-03-31 16:00 (-3d) | 15.5d? → 14.25d? |  |  |
| 144 | **Detail Information Management** | 2012-03-10 → 2012-03-10 08:00 | 2012-03-21 → 2012-03-21 14:00 |  |  |  |
| 145 | Design Detail Information Management | 2012-03-10 → 2012-03-10 08:00 | 2012-03-14 → 2012-03-14 14:00 |  |  | constraint start no earlier than 2012-02-13 → start no earlier than 2012-02-13 08:00 |
| 146 | Code Detail Information Management | 2012-03-14 → 2012-03-14 14:00 | 2012-03-20 → 2012-03-20 10:00 |  |  |  |
| 147 | Test Detail Information Management | 2012-03-20 → 2012-03-20 10:00 | 2012-03-21 → 2012-03-21 14:00 |  |  |  |
| 148 | **Employee Code Setting** | 2012-03-21 → 2012-03-21 14:00 | 2012-03-27 → 2012-03-24 15:00 (-3d) | 3.25d → 2.38d | 3.75d → 3.5d |  |
| 149 | Design Employee Code Setting | 2012-03-21 → 2012-03-21 14:00 | 2012-03-23 → 2012-03-21 15:00 (-2d) | 0.5d → 0.12d | 3.75d → 3.5d |  |
| 150 | Code Employee Code Setting | 2012-03-23 → 2012-03-21 15:00 (-2d) | 2012-03-24 → 2012-03-24 09:00 |  | 4.25d → 3.5d |  |
| 151 | Test Employee Code Setting | 2012-03-24 → 2012-03-24 09:00 | 2012-03-27 → 2012-03-24 15:00 (-3d) |  | 3.75d → 3.5d |  |
| 152 | **Column Setting** | 2012-03-23 → 2012-03-23 10:00 | 2012-03-27 → 2012-03-27 11:00 | 2.75d? → 2.38d? | 2d → 1d |  |
| 153 | Design Column Setting | 2012-03-23 → 2012-03-23 10:00 | 2012-03-23 → 2012-03-23 11:00 | 0.5d? → 0.12d? | 2d → 1d |  |
| 154 | Code Column Setting | 2012-03-24 → 2012-03-23 13:00 (-1d) | 2012-03-27 → 2012-03-24 15:00 (-3d) |  | 1.5d → 1d |  |
| 155 | Test Column Setting | 2012-03-27 → 2012-03-24 15:00 (-3d) | 2012-03-27 → 2012-03-27 11:00 |  | 3.25d → 2.5d |  |
| 156 | **Certificate Management** | 2012-03-24 → 2012-03-24 10:00 | 2012-03-30 → 2012-03-28 15:00 (-2d) | 3.5d → 2.62d | 1.5d → 1.25d |  |
| 157 | Design Certificate Management | 2012-03-24 → 2012-03-24 10:00 | 2012-03-24 → 2012-03-24 11:00 | 0.5d → 0.12d |  |  |
| 158 | Code Certificate Management | 2012-03-27 → 2012-03-24 15:00 (-3d) | 2012-03-28 → 2012-03-28 09:00 |  | 2d → 1.25d |  |
| 159 | Test Certificate Management | 2012-03-28 → 2012-03-28 09:00 | 2012-03-30 → 2012-03-28 15:00 (-2d) |  | 1.5d → 1.25d |  |
| 160 | **Supported People Management** | 2012-03-21 → 2012-03-21 14:00 | 2012-03-27 → 2012-03-24 15:00 (-3d) | 3.25d? → 2.38d? | 1d → 1.12d |  |
| 161 | Design Supported People Management | 2012-03-21 → 2012-03-21 14:00 | 2012-03-23 → 2012-03-21 15:00 (-2d) | 0.5d? → 0.12d? | 1d → 1.12d | resources Nguyen → Dang |
| 162 | Code Supported People Management | 2012-03-23 → 2012-03-21 15:00 (-2d) | 2012-03-24 → 2012-03-24 09:00 |  | 1d → 0.62d |  |
| 163 | Test Supported People Management | 2012-03-24 → 2012-03-24 09:00 | 2012-03-27 → 2012-03-24 15:00 (-3d) |  | 1d → 1.12d |  |
| 164 | **Family Relationship Management** | 2012-03-21 → 2012-03-21 14:00 | 2012-03-30 → 2012-03-28 09:00 (-2d) | 5.5d? → 4.12d? | 1.5d → 1.75d |  |
| 165 | Design Family Relationship Management | 2012-03-21 → 2012-03-21 14:00 | 2012-03-23 → 2012-03-21 15:00 (-2d) | 1d → 0.12d |  | resources Nhung → Dang |
| 166 | Code Family Relationship Management | 2012-03-24 → 2012-03-21 15:00 (-3d) | 2012-03-28 → 2012-03-27 11:00 (-1d) |  | 1.75d → 2d |  |
| 167 | Test Family Relationship Management | 2012-03-28 → 2012-03-27 13:00 (-1d) | 2012-03-30 → 2012-03-28 09:00 (-2d) |  | 1.5d → 1.75d |  |
| 168 | **Staff History** | 2012-03-27 → 2012-03-24 15:00 (-3d) | 2012-03-30 → 2012-03-28 16:00 (-2d) | 2.75d? → 2.38d? | 1d → 1.12d |  |
| 169 | Design Staff History | 2012-03-27 → 2012-03-24 15:00 (-3d) | 2012-03-27 → 2012-03-24 16:00 (-3d) | 0.5d? → 0.12d? | 1d → 1.12d | resources Nguyen → Dang |
| 170 | Code Staff History | 2012-03-28 → 2012-03-27 08:00 (-1d) | 2012-03-30 → 2012-03-28 10:00 (-2d) |  | 1d → 0.62d |  |
| 171 | Test Staff History | 2012-03-30 → 2012-03-28 10:00 (-2d) | 2012-03-30 → 2012-03-28 16:00 (-2d) |  | 1d → 1.12d |  |
| 172 | Integrate | 2012-03-31 → 2012-03-30 08:00 (-1d) | 2012-03-31 → 2012-03-30 14:00 (-1d) |  | 1.25d → 0.62d |  |
| 173 | Testing | 2012-03-31 → 2012-03-30 14:00 (-1d) | 2012-04-03 → 2012-03-31 16:00 (-3d) |  | 1d → 0.88d |  |
| 174 | **Increment 2: Training Management** | 2012-03-24 → 2012-03-24 10:00 | 2012-04-18 → 2012-04-14 11:00 (-4d) | 16.25d? → 13.62d? |  |  |
| 175 | **Reward Management** | 2012-03-24 → 2012-03-24 10:00 | 2012-03-28 → 2012-03-28 11:00 | 2.75d? → 2.38d? | 1.5d → 0.38d |  |
| 176 | Design Reward Management | 2012-03-24 → 2012-03-24 10:00 | 2012-03-24 → 2012-03-24 11:00 | 0.5d? → 0.12d? | 1.5d → 0.38d | resources Tuong → Dang |
| 177 | Code Reward Management | 2012-03-27 → 2012-03-24 13:00 (-3d) | 2012-03-28 → 2012-03-27 15:00 (-1d) |  | 1.25d → 0.62d |  |
| 178 | Test Reward Management | 2012-03-28 → 2012-03-27 15:00 (-1d) | 2012-03-28 → 2012-03-28 11:00 |  | 1.5d → 0.38d |  |
| 179 | **Staff Internship Management** | 2012-03-24 → 2012-03-24 10:00 | 2012-03-28 → 2012-03-28 11:00 | 2.75d? → 2.38d? | 4.5d → 3.88d |  |
| 180 | Design Staff Internship Management | 2012-03-24 → 2012-03-24 10:00 | 2012-03-24 → 2012-03-24 11:00 | 0.5d? → 0.12d? | 4.5d → 3.88d | resources Loc → Dang |
| 181 | Code Staff Internship Management | 2012-03-27 → 2012-03-24 13:00 (-3d) | 2012-03-28 → 2012-03-27 15:00 (-1d) |  | 4.5d → 4.12d |  |
| 182 | Test Staff Internship Management | 2012-03-28 → 2012-03-27 15:00 (-1d) | 2012-03-28 → 2012-03-28 11:00 |  | 4.5d → 3.88d |  |
| 183 | **Training Result Management** | 2012-03-24 → 2012-03-24 10:00 | 2012-03-28 → 2012-03-28 11:00 | 2.75d? → 2.38d? |  |  |
| 184 | Design Training Result Management | 2012-03-24 → 2012-03-24 10:00 | 2012-03-24 → 2012-03-24 11:00 | 0.5d? → 0.12d? |  | resources Quyet → Dang |
| 185 | Code Training Result Management | 2012-03-27 → 2012-03-24 13:00 (-3d) | 2012-03-28 → 2012-03-27 15:00 (-1d) |  |  |  |
| 186 | Test Training Result Management | 2012-03-28 → 2012-03-27 15:00 (-1d) | 2012-03-28 → 2012-03-28 11:00 |  |  |  |
| 187 | **Facilitate Management** | 2012-03-27 → 2012-03-24 13:00 (-3d) | 2012-03-30 → 2012-03-28 14:00 (-2d) | 2.75d? → 2.38d? | 1.25d → 1.5d |  |
| 188 | Design Facilitate Management | 2012-03-27 → 2012-03-24 13:00 (-3d) | 2012-03-27 → 2012-03-24 14:00 (-3d) | 0.5d? → 0.12d? | 1.25d → 1.5d |  |
| 189 | Code Facilitate Management | 2012-03-27 → 2012-03-24 14:00 (-3d) | 2012-03-28 → 2012-03-27 16:00 (-1d) |  |  |  |
| 190 | Test Facilitate Management | 2012-03-30 → 2012-03-28 08:00 (-2d) | 2012-03-30 → 2012-03-28 14:00 (-2d) |  | 1.25d → 1.5d |  |
| 191 | **Union Management** | 2012-04-04 → 2012-04-03 08:00 (-1d) | 2012-04-07 → 2012-04-06 09:00 (-1d) | 2.75d? → 2.38d? | 4d → 3.38d |  |
| 192 | Design Union Management | 2012-04-04 → 2012-04-03 08:00 (-1d) | 2012-04-04 → 2012-04-03 09:00 (-1d) | 0.5d? → 0.12d? | 4d → 3.38d | resources Tung → Dang |
| 193 | Code Union Management | 2012-04-04 → 2012-04-03 09:00 (-1d) | 2012-04-06 → 2012-04-04 11:00 (-2d) |  | 4.25d → 3.38d |  |
| 194 | Test Union Management | 2012-04-07 → 2012-04-04 13:00 (-3d) | 2012-04-07 → 2012-04-06 09:00 (-1d) |  | 4d → 3.38d |  |
| 195 | **Task NoteBook Management** | 2012-04-04 → 2012-04-03 08:00 (-1d) | 2012-04-07 → 2012-04-06 09:00 (-1d) | 2.75d? → 2.38d? | 1.25d → 1d |  |
| 196 | Design Task Note Book Management | 2012-04-04 → 2012-04-03 08:00 (-1d) | 2012-04-04 → 2012-04-03 09:00 (-1d) | 0.5d? → 0.12d? | 1.25d → 1d | resources Nhung → Dang |
| 197 | Code Task Note Book Management | 2012-04-04 → 2012-04-03 09:00 (-1d) | 2012-04-06 → 2012-04-04 11:00 (-2d) |  |  |  |
| 198 | Test Task Note Book Management | 2012-04-07 → 2012-04-04 13:00 (-3d) | 2012-04-07 → 2012-04-06 09:00 (-1d) |  | 1.25d → 1d |  |
| 199 | **Training Course Management** | 2012-04-07 → 2012-04-06 09:00 (-1d) | 2012-04-13 → 2012-04-10 10:00 (-3d) | 3.25d → 2.38d |  |  |
| 200 | Design Training Course Management | 2012-04-07 → 2012-04-06 09:00 (-1d) | 2012-04-10 → 2012-04-06 10:00 (-4d) | 0.5d → 0.12d |  | constraint start no earlier than 2012-02-28 → start no earlier than 2012-02-28 08:00; resources Nhung → Dang |
| 201 | Code Training Course Management | 2012-04-10 → 2012-04-06 10:00 (-4d) | 2012-04-11 → 2012-04-07 14:00 (-4d) |  |  |  |
| 202 | Test Training Course Management | 2012-04-11 → 2012-04-07 14:00 (-4d) | 2012-04-13 → 2012-04-10 10:00 (-3d) |  |  |  |
| 203 | **Internal Training Management** | 2012-04-06 → 2012-04-03 14:00 (-3d) | 2012-04-10 → 2012-04-06 15:00 (-4d) | 2.75d? → 2.38d? | 1.25d → 1.12d |  |
| 204 | Design Internal Training Management | 2012-04-06 → 2012-04-03 14:00 (-3d) | 2012-04-06 → 2012-04-03 15:00 (-3d) | 0.5d? → 0.12d? | 1.25d → 1.12d | resources Nguyen → Dang |
| 205 | Code Internal Training Management | 2012-04-06 → 2012-04-03 15:00 (-3d) | 2012-04-07 → 2012-04-06 09:00 (-1d) |  | 1.75d → 1.12d |  |
| 206 | Test Internal Training Management | 2012-04-10 → 2012-04-06 09:00 (-4d) | 2012-04-10 → 2012-04-06 15:00 (-4d) |  | 1.25d → 1.12d |  |
| 207 | **Emulation Management** | 2012-04-10 → 2012-04-06 15:00 (-4d) | 2012-04-14 → 2012-04-10 16:00 (-4d) | 3d? → 2.38d? | 1.5d → 1.62d |  |
| 208 | Design Emulation Management | 2012-04-10 → 2012-04-06 15:00 (-4d) | 2012-04-11 → 2012-04-06 16:00 (-5d) | 0.5d? → 0.12d? | 1.5d → 1.62d | resources Nguyen → Dang |
| 209 | Code Emulation Management | 2012-04-11 → 2012-04-07 08:00 (-4d) | 2012-04-13 → 2012-04-10 10:00 (-3d) |  | 1.25d → 1.12d |  |
| 210 | Test Emulation Management | 2012-04-13 → 2012-04-10 10:00 (-3d) | 2012-04-14 → 2012-04-10 16:00 (-4d) |  | 1.5d → 1.12d |  |

| ID | Task | Start | Finish | Duration | Total float | Other |
| --- | --- | --- | --- | --- | --- | --- |
| 211 | **Lecture Probation Management** | 2012-04-13 → 2012-04-10 10:00 (-3d) | 2012-04-17 → 2012-04-13 11:00 (-4d) | 2.75d? → 2.38d? |  |  |
| 212 | Design Lecture Probation Management | 2012-04-13 → 2012-04-10 10:00 (-3d) | 2012-04-13 → 2012-04-10 11:00 (-3d) | 0.5d? → 0.12d? |  | resources Nhung → Dang |
| 213 | Code Lecture Probation Management | 2012-04-14 → 2012-04-10 13:00 (-4d) | 2012-04-17 → 2012-04-11 15:00 (-6d) |  |  |  |
| 214 | Test Lecture Probation Management | 2012-04-17 → 2012-04-11 15:00 (-6d) | 2012-04-17 → 2012-04-13 11:00 (-4d) |  |  |  |
| 215 | **Mobilization Management** | 2012-03-30 → 2012-03-28 13:00 (-2d) | 2012-04-03 → 2012-03-31 14:00 (-3d) | 2.75d? → 2.38d? | 4.5d → 4.12d |  |
| 216 | Design Mobilization Management | 2012-03-30 → 2012-03-28 13:00 (-2d) | 2012-03-30 → 2012-03-28 14:00 (-2d) | 0.5d? → 0.12d? | 4.5d → 4.12d | resources Loc → Dang |
| 217 | Code Mobilization Management | 2012-03-30 → 2012-03-28 14:00 (-2d) | 2012-03-31 → 2012-03-30 16:00 (-1d) |  | 4.5d → 4.12d |  |
| 218 | Test Mobilization Management | 2012-04-03 → 2012-03-31 08:00 (-3d) | 2012-04-03 → 2012-03-31 14:00 (-3d) |  | 4.5d → 3.88d |  |
| 219 | **Penalty Management** | 2012-03-30 → 2012-03-30 09:00 | 2012-04-04 → 2012-04-03 10:00 (-1d) | 3d? → 2.38d? | 1.5d → 0.88d |  |
| 220 | Design Penalty Management | 2012-03-30 → 2012-03-30 09:00 | 2012-03-31 → 2012-03-30 10:00 (-1d) | 0.5d? → 0.12d? | 1.5d → 0.88d | resources Tuong → Dang |
| 221 | Code Penalty Management | 2012-03-31 → 2012-03-30 10:00 (-1d) | 2012-04-03 → 2012-03-31 14:00 (-3d) |  | 1.25d → 0.88d |  |
| 222 | Test Penalty Management | 2012-04-03 → 2012-03-31 14:00 (-3d) | 2012-04-04 → 2012-04-03 10:00 (-1d) |  | 1.5d → 0.88d |  |
| 223 | **Lecture Position Management** | 2012-04-04 → 2012-04-03 10:00 (-1d) | 2012-04-07 → 2012-04-06 11:00 (-1d) | 2.75d? → 2.38d? | 1.5d → 0.88d |  |
| 224 | Design Lecture Position Management | 2012-04-04 → 2012-04-03 10:00 (-1d) | 2012-04-04 → 2012-04-03 11:00 (-1d) | 0.5d? → 0.12d? | 1.5d → 0.88d | resources Tuong → Dang |
| 225 | Code Lecture Position Management | 2012-04-06 → 2012-04-03 13:00 (-3d) | 2012-04-07 → 2012-04-04 15:00 (-3d) |  | 1.25d → 0.88d |  |
| 226 | Test Lecture Position Management | 2012-04-07 → 2012-04-04 15:00 (-3d) | 2012-04-07 → 2012-04-06 11:00 (-1d) |  | 1.5d → 0.88d |  |
| 227 | **Communist Party Management** | 2012-04-10 → 2012-04-07 13:00 (-3d) | 2012-04-14 → 2012-04-11 14:00 (-3d) | 3d? → 2.38d? | 1.5d → 0.88d |  |
| 228 | Design Communist Party Management | 2012-04-10 → 2012-04-07 13:00 (-3d) | 2012-04-11 → 2012-04-07 14:00 (-4d) | 0.5d? → 0.12d? | 1.5d → 0.88d | resources Tuong → Dang |
| 229 | Code Communist Party Management | 2012-04-11 → 2012-04-07 14:00 (-4d) | 2012-04-13 → 2012-04-10 16:00 (-3d) |  | 1.25d → 0.62d |  |
| 230 | Test Communist Party Management | 2012-04-13 → 2012-04-11 08:00 (-2d) | 2012-04-14 → 2012-04-11 14:00 (-3d) |  | 1.5d → 0.38d |  |
| 231 | **Trade Union Management** | 2012-04-07 → 2012-04-06 09:00 (-1d) | 2012-04-13 → 2012-04-10 10:00 (-3d) | 3.25d? → 2.38d? | 3.75d → 3.38d |  |
| 232 | Design Trade Union Management | 2012-04-07 → 2012-04-06 09:00 (-1d) | 2012-04-10 → 2012-04-06 10:00 (-4d) | 0.5d? → 0.12d? | 3.75d → 3.38d | resources Tung → Dang |
| 233 | Code Trade Union Management | 2012-04-10 → 2012-04-06 10:00 (-4d) | 2012-04-11 → 2012-04-07 14:00 (-4d) |  | 4.25d → 3.38d |  |
| 234 | Test Trade Union Management | 2012-04-11 → 2012-04-07 14:00 (-4d) | 2012-04-13 → 2012-04-10 10:00 (-3d) |  | 3.75d → 3.38d |  |
| 235 | **Syllabus Management** | 2012-04-03 → 2012-03-31 14:00 (-3d) | 2012-04-07 → 2012-04-04 15:00 (-3d) | 3d? → 2.38d? | 4.5d → 4.12d |  |
| 236 | Design Syllabus Management | 2012-04-03 → 2012-03-31 14:00 (-3d) | 2012-04-04 → 2012-03-31 15:00 (-4d) | 0.5d? → 0.12d? | 4.5d → 4.12d | resources Loc → Dang |
| 237 | Code Syllabus Management | 2012-04-04 → 2012-03-31 15:00 (-4d) | 2012-04-06 → 2012-04-04 09:00 (-2d) |  | 4.5d → 3.88d |  |
| 238 | Test Syllabus Management | 2012-04-06 → 2012-04-04 09:00 (-2d) | 2012-04-07 → 2012-04-04 15:00 (-3d) |  | 4.5d → 3.88d |  |
| 239 | **Science Research Management** | 2012-04-07 → 2012-04-04 15:00 (-3d) | 2012-04-11 → 2012-04-07 16:00 (-4d) | 2.75d? → 2.38d? | 4.5d → 4.12d |  |
| 240 | Design Science Research Management | 2012-04-07 → 2012-04-04 15:00 (-3d) | 2012-04-07 → 2012-04-04 16:00 (-3d) | 0.5d? → 0.12d? | 4.5d → 4.12d | resources Loc → Dang |
| 241 | Code Science Research Management | 2012-04-10 → 2012-04-06 08:00 (-4d) | 2012-04-11 → 2012-04-07 10:00 (-4d) |  | 4.5d → 3.62d |  |
| 242 | Test Science Research Management | 2012-04-11 → 2012-04-07 10:00 (-4d) | 2012-04-11 → 2012-04-07 16:00 (-4d) |  | 4.5d → 3.88d |  |
| 243 | **Other Management** | 2012-03-30 → 2012-03-28 13:00 (-2d) | 2012-04-03 → 2012-03-31 14:00 (-3d) | 2.75d? → 2.38d? |  |  |
| 244 | Design Other Management | 2012-03-30 → 2012-03-28 13:00 (-2d) | 2012-03-30 → 2012-03-28 14:00 (-2d) | 0.5d? → 0.12d? |  | resources Quyet → Dang |
| 245 | Code Other Management | 2012-03-30 → 2012-03-28 14:00 (-2d) | 2012-03-31 → 2012-03-30 16:00 (-1d) |  |  |  |
| 246 | Test Other Management | 2012-04-03 → 2012-03-31 08:00 (-3d) | 2012-04-03 → 2012-03-31 14:00 (-3d) |  |  |  |
| 247 | **Work Management** | 2012-04-03 → 2012-03-31 14:00 (-3d) | 2012-04-07 → 2012-04-04 15:00 (-3d) | 3d? → 2.38d? |  |  |
| 248 | Design Work Management | 2012-04-03 → 2012-03-31 14:00 (-3d) | 2012-04-04 → 2012-03-31 15:00 (-4d) | 0.5d? → 0.12d? |  | resources Quyet → Dang |
| 249 | Code Work Management | 2012-04-04 → 2012-03-31 15:00 (-4d) | 2012-04-06 → 2012-04-04 09:00 (-2d) |  |  |  |
| 250 | Test Work Management | 2012-04-06 → 2012-04-04 09:00 (-2d) | 2012-04-07 → 2012-04-04 15:00 (-3d) |  |  |  |
| 251 | **Master Thesis Guideline Management** | 2012-04-07 → 2012-04-04 15:00 (-3d) | 2012-04-11 → 2012-04-07 16:00 (-4d) | 2.75d? → 2.38d? |  |  |
| 252 | Design Master Thesis Guideline Management | 2012-04-07 → 2012-04-04 15:00 (-3d) | 2012-04-07 → 2012-04-04 16:00 (-3d) | 0.5d? → 0.12d? |  | resources Quyet → Dang |
| 253 | Code Master Thesis Guideline Management | 2012-04-10 → 2012-04-06 08:00 (-4d) | 2012-04-11 → 2012-04-07 10:00 (-4d) |  |  |  |
| 254 | Test Master Thesis Guideline Management | 2012-04-11 → 2012-04-07 10:00 (-4d) | 2012-04-11 → 2012-04-07 16:00 (-4d) |  |  |  |
| 255 | **Article Management** | 2012-04-13 → 2012-04-10 08:00 (-3d) | 2012-04-17 → 2012-04-13 09:00 (-4d) | 2.75d? → 2.38d? |  |  |
| 256 | Design Article Management | 2012-04-13 → 2012-04-10 08:00 (-3d) | 2012-04-13 → 2012-04-10 09:00 (-3d) | 0.5d? → 0.12d? |  | resources Quyet → Dang |
| 257 | Code Article Management | 2012-04-13 → 2012-04-10 09:00 (-3d) | 2012-04-14 → 2012-04-11 11:00 (-3d) |  |  |  |
| 258 | Test Article Management | 2012-04-17 → 2012-04-11 13:00 (-6d) | 2012-04-17 → 2012-04-13 09:00 (-4d) |  |  |  |
| 259 | **Subject Management** | 2012-03-30 → 2012-03-28 14:00 (-2d) | 2012-04-04 → 2012-03-31 15:00 (-4d) | 3.5d? → 2.38d? |  |  |
| 260 | Design Subject Management | 2012-03-30 → 2012-03-28 14:00 (-2d) | 2012-03-31 → 2012-03-28 15:00 (-3d) | 1d? → 0.12d? |  |  |
| 261 | Code Subject Management | 2012-04-03 → 2012-03-28 15:00 (-6d) | 2012-04-04 → 2012-03-31 09:00 (-4d) |  | 1.25d → 1.5d |  |
| 262 | Test Subject Management | 2012-04-04 → 2012-03-31 09:00 (-4d) | 2012-04-04 → 2012-03-31 15:00 (-4d) |  |  |  |
| 263 | **Income Management** | 2012-04-06 → 2012-03-31 15:00 (-6d) | 2012-04-10 → 2012-04-06 11:00 (-4d) | 2.75d? → 3.25d? |  |  |
| 264 | Design Income Management | 2012-04-06 → 2012-03-31 15:00 (-6d) | 2012-04-06 → 2012-04-03 11:00 (-3d) |  |  |  |
| 265 | Code Income Management | 2012-04-06 → 2012-04-03 13:00 (-3d) | 2012-04-07 → 2012-04-04 15:00 (-3d) |  | 1.75d → 1.25d |  |
| 266 | Test Income Management | 2012-04-10 → 2012-04-04 15:00 (-6d) | 2012-04-10 → 2012-04-06 11:00 (-4d) |  |  |  |
| 267 | **Salary Coefficient Management** | 2012-04-10 → 2012-04-06 13:00 (-4d) | 2012-04-14 → 2012-04-10 15:00 (-4d) | 3d? → 2.5d? | 1.5d → 1.25d |  |
| 268 | Design Salary Coefficient Management | 2012-04-10 → 2012-04-06 13:00 (-4d) | 2012-04-11 → 2012-04-06 15:00 (-5d) | 0.5d? → 0.25d? | 1.5d → 1.25d |  |
| 269 | Code Salary Coefficient Management | 2012-04-11 → 2012-04-06 15:00 (-5d) | 2012-04-13 → 2012-04-10 09:00 (-3d) |  |  |  |
| 270 | Test Salary Coefficient Management | 2012-04-13 → 2012-04-10 09:00 (-3d) | 2012-04-14 → 2012-04-10 15:00 (-4d) |  | 1.5d → 1.25d |  |
| 271 | Integrate | 2012-04-17 → 2012-04-13 09:00 (-4d) | 2012-04-18 → 2012-04-13 15:00 (-5d) |  |  |  |
| 272 | Testing | 2012-04-18 → 2012-04-13 15:00 (-5d) | 2012-04-18 → 2012-04-14 11:00 (-4d) |  |  |  |
| 273 | **Increment 3: Report** | 2012-04-20 → 2012-04-14 13:00 (-6d) | 2012-05-05 → 2012-05-01 15:00 (-4d) | 10.25d → 10.5d |  |  |
| 274 | **Report Management** | 2012-04-20 → 2012-04-14 13:00 (-6d) | 2012-05-01 → 2012-04-27 09:00 (-4d) | 7.25d → 7.75d |  |  |
| 275 | Design Report | 2012-04-20 → 2012-04-14 13:00 (-6d) | 2012-04-21 → 2012-04-17 15:00 (-4d) |  |  | resources Loc → Dang |
| 276 | Code Report | 2012-04-21 → 2012-04-17 15:00 (-4d) | 2012-04-28 → 2012-04-24 15:00 (-4d) |  |  |  |
| 277 | Test Report | 2012-04-28 → 2012-04-24 15:00 (-4d) | 2012-05-01 → 2012-04-27 09:00 (-4d) |  |  |  |
| 278 | Integrate | 2012-05-01 → 2012-04-27 09:00 (-4d) | 2012-05-02 → 2012-04-28 11:00 (-4d) |  |  |  |
| 279 | Test | 2012-05-04 → 2012-04-28 13:00 (-6d) | 2012-05-05 → 2012-05-01 15:00 (-4d) |  |  |  |
| 280 | Conduct System test | 2012-05-05 → 2012-05-01 15:00 (-4d) | 2012-05-09 → 2012-05-05 11:00 (-4d) |  |  |  |

| ID | Task | Start | Finish | Other |
| --- | --- | --- | --- | --- |
| 281 | Conduct Acceptance test | 2012-05-11 → 2012-05-05 13:00 (-6d) | 2012-05-15 → 2012-05-11 09:00 (-4d) |  |
| 282 | Translate Concept Doc | 2012-01-21 → 2012-01-21 10:00 | 2012-02-14 → 2012-02-14 14:30 |  |
| 283 | Reflection | 2012-05-15 → 2012-05-11 09:00 (-4d) | 2012-05-19 → 2012-05-15 15:00 (-4d) | was named Deployment; constraint finish no earlier than 2012-03-07 → finish no earlier than 2012-03-07 17:00 |
| 288 | Deliver to customer | 2012-05-19 → 2012-05-15 15:00 (-4d) | 2012-05-26 → 2012-05-22 15:00 (-4d) |  |
| 289 | Maintaining | 2012-05-26 → 2012-05-22 15:00 (-4d) | 2012-05-29 → 2012-05-25 09:00 (-4d) |  |

## Version 4 (data date 2012-03-09, saved 2012-05-18)

Last finish stays 2012-05-25.

Added:

| ID | Task | Duration | Start | Finish | Predecessors | Resources |
| --- | --- | --- | --- | --- | --- | --- |
| 140 | Update use case in SRS | 15d | 2011-12-03 08:00 | 2011-12-17 17:00 | 113, 139 | Loc |

Removed: 284 Update Manage Doc; 285 Update SRS Doc; 286 Update ContOps; 287 Update

Changed:

| ID | Task | Start | Finish | Duration | Total float | Predecessors | Other |
| --- | --- | --- | --- | --- | --- | --- | --- |
| 134 | **Testing** |  | 2012-02-15 09:00 → 2012-03-03 10:30 (+17d) | 14.06d → 25.5d | 12.69d → 1d |  |  |
| 135 | **Design test case** |  | 2012-02-15 09:00 → 2012-03-03 10:30 (+17d) | 14.06d → 25.5d | 12.69d → 1d |  |  |
| 136 | Acceptance test case |  | 2012-01-27 08:30 → 2012-02-17 08:30 (+21d) | 1d → 10d | 23.5d → 1d |  |  |
| 137 | System test case | 2012-02-11 15:00 → 2012-02-17 08:30 (+6d) | 2012-02-15 09:00 → 2012-03-03 10:30 (+17d) | 1d → 7d | 12.69d → 1d |  |  |
| 175 | **Increment 2: Training Management** |  |  |  |  | 145 → 145, 140 |  |
| 278 | Test Report |  |  |  |  |  | resources Dang → Tung |
| 280 | Test |  |  |  |  |  | resources Dang; Tung → Tung |
| 283 | Translate Concept Doc |  | 2012-02-14 14:30 → 2012-03-22 14:00 (+37d) | 10d → 26d | 55.19d → 30d |  |  |
