# HRM Detail Plan_Curent

How a schedule from MS Project changed from version to version. A marks actual dates.

## Version 1 (data date 2012-03-09, saved 2012-05-11)

Note of the change: Update current status

| ID | WBS | Task | Duration | Start | Finish | Predecessors | Complete | Total float | Constraint |
| --- | --- | --- | --- | --- | --- | --- | --- | --- | --- |
| 1 | 1 | **Human Resource Management** | 147.06d? | 2011-09-27 08:00 A | 2012-05-25 09:00 |  | 99% | 0d |  |
| 2 |  | Kick off meeting | 1d | 2011-09-27 08:00 A | 2011-09-28 15:00 A |  | 100% |  | start no earlier than 2011-09-27 08:00 |
| 3 | 1.2 | **Start Up** | 3d? | 2011-09-28 08:00 A | 2011-10-01 15:30 A | 2 | 100% |  |  |
| 4 | 1.2.1 | **Research process** | 1.75d | 2011-09-28 08:00 A | 2011-09-30 14:30 A | 2 | 100% |  |  |
| 5 | 1.2.1.1 | **Requirement Process** | 1.75d | 2011-09-28 08:00 A | 2011-09-30 14:30 A | 2 | 100% |  |  |
| 6 |  | Research phases in process | 1d | 2011-09-28 08:00 A | 2011-09-30 14:30 A | 2 | 100% |  |  |
| 7 |  | Research tool and document templates | 1d | 2011-09-28 15:00 A | 2011-09-30 14:30 A | 2 | 100% |  |  |
| 8 | 1.2.1.2 | **Architect process** | 1.75d | 2011-09-28 08:00 A | 2011-09-30 14:30 A | 2 | 100% |  |  |
| 9 |  | Research phases in process | 1d | 2011-09-28 08:00 A | 2011-09-30 14:30 A | 2 | 100% |  |  |
| 10 |  | Research tool and document templates | 1d | 2011-09-28 08:00 A | 2011-09-30 14:30 A | 2 | 100% |  |  |
| 11 | 1.2.1.3 | **Detail design process** | 1.75d | 2011-09-28 08:00 A | 2011-09-30 14:30 A | 2 | 100% |  |  |
| 12 |  | Research phases in process | 1d | 2011-09-28 08:00 A | 2011-09-30 14:30 A | 2 | 100% |  |  |
| 13 |  | Research tool and document templates | 1d | 2011-09-28 08:00 A | 2011-09-30 14:30 A | 2 | 100% |  |  |
| 14 |  | Testing process | 1d | 2011-09-28 08:00 A | 2011-09-29 15:30 A | 2 | 100% |  |  |
| 15 |  | Research Process Management: Risk, Measure, Change | 1d | 2011-09-28 08:00 A | 2011-09-29 15:30 A | 2 | 100% |  |  |
| 16 | 1.2.2 | **Develop Project Plan** | 1.44d? | 2011-09-30 08:00 A | 2011-10-01 15:30 A | 5, 8, 11, 14, 15 | 100% |  |  |
| 17 | 1.2.2.1 | **Requirement Process** | 1.44d | 2011-09-30 08:00 A | 2011-10-01 15:30 A | 5 | 100% |  |  |
| 18 |  | Draw process | 1d | 2011-09-30 08:00 A | 2011-10-01 15:30 A | 7 | 100% |  |  |
| 19 |  | Describe stage in process | 1d | 2011-09-30 08:00 A | 2011-10-01 15:30 A | 6 | 100% |  |  |
| 20 | 1.2.2.2 | **Architect process** | 1.44d | 2011-09-30 08:00 A | 2011-10-01 15:30 A | 8 | 100% |  |  |
| 21 |  | Draw process | 1d | 2011-09-30 08:00 A | 2011-10-01 15:30 A | 9 | 100% |  |  |
| 22 |  | Describe stage in process | 1d | 2011-09-30 08:00 A | 2011-10-01 15:30 A | 10 | 100% |  |  |
| 23 | 1.2.2.3 | **Detail design process** | 1.25d | 2011-09-30 14:30 A | 2011-10-01 15:30 A | 11 | 100% |  |  |
| 24 |  | Draw process | 0.31d | 2011-09-30 14:30 A | 2011-09-30 17:00 A | 13 | 100% |  |  |
| 25 |  | Describe stage in process | 1d | 2011-09-30 14:30 A | 2011-10-01 15:30 A | 12 | 100% |  |  |
| 26 |  | Testing process | 1d | 2011-09-30 14:30 A | 2011-10-01 15:30 A | 14 | 100% |  |  |
| 27 |  | Doc Process Management: Risk, Measurement, Change | 1d? | 2011-09-30 14:30 A | 2011-10-01 15:30 A | 15 | 100% |  |  |
| 28 | 1.3 | **Requirement Analysis** | 68.44d? | 2011-10-04 08:00 A | 2012-01-24 13:30 A | 3 | 100% |  |  |
| 29 | 1.3.1 | **Conference with cus 1** | 2.19d? | 2011-10-04 08:00 A | 2011-10-06 15:00 A | 3 | 100% |  |  |
| 30 | 1.3.1.1 | **Prepare 1** | 0.25d? | 2011-10-04 08:00 A | 2011-10-04 10:00 A | 3 | 100% |  |  |
| 31 |  | C1: Research HRM processes | 0.25d? | 2011-10-04 08:00 A | 2011-10-04 10:00 A | 3 | 100% |  |  |
| 32 |  | C1: Research business, role | 0.25d? | 2011-10-04 08:00 A | 2011-10-04 10:00 A | 3 | 100% |  |  |
| 33 |  | C1: Prepare questions to ask customer | 0.25d? | 2011-10-04 08:00 A | 2011-10-04 10:00 A | 3 | 100% |  |  |
| 34 |  | C1: Send mail for customer | 0.25d? | 2011-10-04 08:00 A | 2011-10-04 10:00 A | 31, 32, 33 | 100% |  |  |
| 35 | 1.3.1.2 | **Elicitate requirement 1** | 0.69d? | 2011-10-04 08:00 A | 2011-10-04 15:31 A | 30 | 100% |  |  |
| 36 |  | C1: Write down meeting 1 | 0.44d? | 2011-10-04 08:00 A | 2011-10-04 15:31 A | 30 | 100% |  |  |
| 37 |  | C1: Support write down meeting 1 | 0.44d? | 2011-10-04 08:00 A | 2011-10-04 15:31 A | 30 | 100% |  |  |
| 38 |  | C1: Manage meeting 1 | 0.44d? | 2011-10-04 08:00 A | 2011-10-04 13:31 A | 30 | 100% |  |  |
| 39 |  | C1: Attending conference 1 | 0.44d? | 2011-10-04 08:00 A | 2011-10-04 13:31 A | 30 | 100% |  |  |
| 40 | 1.3.1.3 | **Analyze requirement 1** | 2.19d? | 2011-10-04 08:00 A | 2011-10-06 15:00 A | 35 | 100% |  |  |
| 41 |  | C1: Doc ConsOpt: Introduction | 0.25d? | 2011-10-04 08:00 A | 2011-10-05 14:30 A | 35 | 100% |  |  |
| 42 |  | C1: Doc ConsOpt: Current System & Reason for improvement | 0.25d | 2011-10-04 08:00 A | 2011-10-05 14:30 A | 35 | 100% |  |  |
| 43 |  | C1: Doc Qui trinh nghiep vu tong quat | 1d | 2011-10-04 08:00 A | 2011-10-06 15:00 A | 35 | 100% |  |  |
| 44 |  | C1: Guide doc Concept | 1d? | 2011-10-04 08:00 A | 2011-10-06 15:00 A | 35 | 100% |  |  |
| 45 |  | C1: Review document | 1d | 2011-10-04 08:00 A | 2011-10-06 15:00 A | 35 | 100% |  |  |
| 46 |  | C1: Fix error in document | 1d | 2011-10-04 08:00 A | 2011-10-06 15:00 A | 35 | 100% |  |  |
| 47 | 1.3.2 | **Conference with cus 2** | 14.44d? | 2011-10-04 08:00 A | 2011-10-27 09:00 A | 30 | 100% |  |  |
| 48 | 1.3.2.1 | **Prepare 2** | 0.63d? | 2011-10-04 08:00 A | 2011-10-04 15:02 A | 30, 35 | 100% |  |  |
| 49 |  | C2: Đọc và phân tích biểu mẫu Sơ yếu lí lịch | 0.25d? | 2011-10-04 08:00 A | 2011-10-04 14:00 A | 30 | 100% |  |  |
| 50 |  | C2: Thu thập và chuẩn bị các câu hỏi về Tuyển dụng và làm mới HSNS | 0.25d? | 2011-10-04 08:00 A | 2011-10-04 14:00 A | 30 | 100% |  |  |
| 51 |  | C2: Send mail for customer | 0.13d? | 2011-10-04 08:00 A | 2011-10-04 15:02 A | 49, 50 | 100% |  |  |
| 52 | 1.3.2.2 | **Elicitate Requirement 2** | 0.5d? | 2011-10-06 08:00 A | 2011-10-06 14:00 A | 48, 40 | 100% |  |  |
| 53 |  | C2: Write down meeting 2 | 0.5d? | 2011-10-06 08:00 A | 2011-10-06 14:00 A | 48 | 100% |  |  |
| 54 |  | C2: Support write down meeting 2 | 0.5d? | 2011-10-06 08:00 A | 2011-10-06 14:00 A | 48 | 100% |  |  |
| 55 |  | C2: Manage meeting 2 | 0.5d? | 2011-10-06 08:00 A | 2011-10-06 14:00 A | 48 | 100% |  |  |
| 56 |  | C2: Attending conference 2 | 0.5d? | 2011-10-06 08:00 A | 2011-10-06 14:00 A |  | 100% |  |  |
| 57 | 1.3.2.3 | **Analyze requirement** | 11.88d | 2011-10-07 08:00 A | 2011-10-27 09:00 A | 52 | 100% |  |  |
| 58 |  | C2: Doc Mô hình phân rã chức năng HSNS | 4d | 2011-10-07 08:00 A | 2011-10-18 09:30 A | 52 | 100% |  |  |
| 59 |  | C2: Draw process qui trinh nghiep vu tong quat | 2d | 2011-10-07 08:00 A | 2011-10-13 09:00 A | 52 | 100% |  |  |
| 60 |  | C2: Phân tích hệ thống dự kiến | 4d | 2011-10-07 08:00 A | 2011-10-18 09:30 A | 52 | 100% |  |  |
| 61 |  | C2: Doc Information Catalog: Thông tin chung | 2d | 2011-10-13 08:00 A | 2011-10-18 09:30 A | 59 | 100% |  |  |
| 62 |  | C2: Review document | 2d | 2011-10-18 08:00 A | 2011-10-21 16:00 A | 58, 59, 60, 61 | 100% |  |  |
| 63 |  | C2: Fix error in document | 2d | 2011-10-21 08:00 A | 2011-10-27 09:00 A | 62 | 100% |  |  |
| 64 | 1.3.3 | **Conference with cus 3** | 9.25d? | 2011-10-27 08:00 A | 2011-11-10 16:00 A |  | 100% |  |  |
| 65 | 1.3.3.1 | **Prepare 3** | 1.75d? | 2011-10-27 08:00 A | 2011-10-29 08:02 A | 48, 52, 57 | 100% |  |  |
| 66 |  | C3: Research HRM processes | 1d? | 2011-10-27 08:00 A | 2011-10-28 15:00 A |  | 100% |  |  |
| 67 |  | C3: Research business, role | 1d? | 2011-10-27 08:00 A | 2011-10-28 15:00 A |  | 100% |  |  |
| 68 |  | C3: Prepare questions to ask customer | 1d? | 2011-10-27 09:00 A | 2011-10-28 16:00 A |  | 100% |  |  |
| 69 |  | C3: Send mail for customer | 0.13d? | 2011-10-28 08:00 A | 2011-10-29 08:02 A | 66, 67, 68 | 100% |  |  |
| 70 | 1.3.3.2 | **Elicitate Requirement 3** | 0.5d? | 2011-10-29 08:00 A | 2011-10-29 14:00 A | 65, 57 | 100% |  |  |

| ID | WBS | Task | Duration | Start | Finish | Predecessors | Complete | Constraint |
| --- | --- | --- | --- | --- | --- | --- | --- | --- |
| 71 |  | C3: Write down meeting 3 | 0.5d? | 2011-10-29 08:00 A | 2011-10-29 14:00 A |  | 100% |  |
| 72 |  | C3: Support write down meeting 3 | 0.5d? | 2011-10-29 08:00 A | 2011-10-29 14:00 A |  | 100% |  |
| 73 |  | C3: Manage meeting 3 | 0.5d? | 2011-10-29 08:00 A | 2011-10-29 14:00 A |  | 100% |  |
| 74 |  | C3: Attending conference 3 | 0.5d? | 2011-10-29 08:00 A | 2011-10-29 14:00 A |  | 100% |  |
| 75 | 1.3.3.3 | **Analyze requirement** | 7.5d | 2011-10-29 08:00 A | 2011-11-10 16:00 A | 70 | 100% |  |
| 76 |  | C3: Doc Information Category: Thông tin mở rộng | 2d | 2011-10-29 14:00 A | 2011-11-03 16:00 A |  | 100% |  |
| 77 |  | C3: Doc Mo hinh phan ra chuc nang HSNS | 4d | 2011-10-29 08:00 A | 2011-11-08 10:30 A |  | 100% |  |
| 78 |  | C3: Scenerio | 4d | 2011-10-29 08:00 A | 2011-11-08 10:30 A |  | 100% |  |
| 79 |  | C3: Processes | 2d | 2011-11-04 08:00 A | 2011-11-09 13:30 A | 76 | 100% |  |
| 80 |  | C3: Effect | 4d | 2011-10-29 08:00 A | 2011-11-08 10:30 A |  | 100% |  |
| 81 |  | C3: Review document | 0.5d | 2011-11-09 08:00 A | 2011-11-10 10:00 A | 76, 77, 78, 79, 80 | 100% |  |
| 82 |  | C3: Fix error in document | 0.5d | 2011-11-10 08:00 A | 2011-11-10 16:00 A | 81 | 100% |  |
| 83 |  | Send Concept Operation to customer | 0.25d | 2011-11-11 08:00 A | 2011-11-11 15:00 A | 77, 78, 79, 80, 81, 82 | 100% | start no earlier than 2011-11-10 08:00 |
| 84 |  | C3: Update Information Category | 26d | 2011-11-11 08:00 A | 2012-01-11 15:30 A | 83 | 100% |  |
| 85 |  | C3: Update Process | 26d | 2011-11-11 08:00 A | 2012-01-11 15:30 A | 83 | 100% |  |
| 86 |  | C3: Review and fix Concept | 26d | 2011-11-11 08:00 A | 2012-01-11 15:30 A | 83 | 100% |  |
| 87 | 1.3.8 | **Conference with cus 4 (review)** | 6.12d? | 2012-01-12 08:00 A | 2012-01-21 09:00 A | 83, 70, 64, 84, 85, 86 | 100% |  |
| 88 | 1.3.8.1 | **Prepare 4** | 1.13d? | 2012-01-12 08:00 A | 2012-01-13 14:02 A | 70, 64 | 100% |  |
| 89 |  | C4: Research HRM processes | 0.75d? | 2012-01-12 08:00 A | 2012-01-12 16:00 A |  | 100% |  |
| 90 |  | C4: Research business, role | 0.75d? | 2012-01-12 08:00 A | 2012-01-12 16:00 A |  | 100% |  |
| 91 |  | C4: Prepare questions to ask customer | 0.75d? | 2012-01-12 08:00 A | 2012-01-12 16:00 A |  | 100% |  |
| 92 |  | C4: Send mail for customer | 0.13d? | 2012-01-13 08:00 A | 2012-01-13 14:02 A | 89, 90, 91 | 100% |  |
| 93 | 1.3.8.2 | **Elicitate Requirement 4** | 0.88d? | 2012-01-13 08:00 A | 2012-01-14 09:00 A | 88, 83, 75 | 100% |  |
| 94 |  | C4: Write down meeting 4 | 0.5d? | 2012-01-13 14:00 A | 2012-01-14 09:00 A |  | 100% |  |
| 95 |  | C4: Support write down meeting 4 | 0.5d? | 2012-01-13 08:00 A | 2012-01-13 17:00 A |  | 100% |  |
| 96 |  | C4: Manage meeting 4 | 0.5d? | 2012-01-13 08:00 A | 2012-01-13 17:00 A |  | 100% |  |
| 97 |  | C4: Attending conference 4 | 0.5d? | 2012-01-13 08:00 A | 2012-01-13 17:00 A |  | 100% |  |
| 98 | 1.3.8.3 | **Analyze requirement** | 4.38d? | 2012-01-14 08:00 A | 2012-01-21 09:00 A | 93 | 100% |  |
| 99 |  | Update Information Catgegories | 1d? | 2012-01-14 08:00 A | 2012-01-17 10:30 A |  | 100% |  |
| 100 |  | Update Processes | 1d? | 2012-01-14 08:00 A | 2012-01-17 10:30 A |  | 100% |  |
| 101 |  | C4: Review document | 1d? | 2012-01-17 08:00 A | 2012-01-19 11:00 A | 99, 100 | 100% |  |
| 102 |  | C4: Fix error in document | 1d? | 2012-01-19 08:00 A | 2012-01-21 09:00 A | 101 | 100% |  |
| 103 |  | Update Plan | 1d | 2012-01-21 08:00 A | 2012-01-24 13:30 A | 87 | 100% |  |
| 104 | 1.3.10 | **Develop SRS** | 40.69d | 2011-11-11 08:00 A | 2012-01-17 17:00 A | 64, 83 | 100% |  |
| 105 | 1.3.10.1 | **Document Software Requirement Specification (Draft version)** | 4.34d | 2011-11-11 08:00 A | 2011-11-18 13:45 A |  | 100% |  |
| 106 | 1.3.10.1.1 | **Develop use case specification** | 3.5d | 2011-11-11 08:00 A | 2011-11-17 10:00 A |  | 100% |  |
| 107 |  | Draw use cases | 2.5d | 2011-11-11 08:00 A | 2011-11-17 10:00 A |  | 100% |  |
| 108 |  | Draw activity diagram for use cases | 2.5d | 2011-11-11 08:00 A | 2011-11-17 10:00 A |  | 100% |  |
| 109 |  | Descripe use case | 2.5d | 2011-11-11 08:00 A | 2011-11-17 10:00 A |  | 100% |  |
| 110 |  | Monitoring tasks in SRS | 2.63d | 2011-11-11 08:00 A | 2011-11-17 13:02 A |  | 100% |  |
| 111 |  | Review SRS | 5.59d | 2011-11-11 08:00 A | 2011-11-18 13:45 A |  | 100% |  |
| 112 |  | Review | 0.5d | 2011-11-19 08:00 A | 2011-11-22 09:15 A | 106, 111, 107, 108, 109, 110 | 100% |  |
| 113 | 1.3.10.3 | **Update SRS** | 5.91d | 2011-11-22 08:00 A | 2011-12-01 08:45 A | 112 | 100% |  |
| 114 |  | Update use case | 2d | 2011-11-22 08:00 A | 2011-11-25 14:30 A |  | 100% |  |
| 115 |  | Bussiness Rule | 2d | 2011-11-25 08:00 A | 2011-12-01 08:45 A | 114 | 100% |  |
| 116 |  | Functional Requirement | 2d | 2011-11-22 08:00 A | 2011-11-25 14:30 A |  | 100% |  |
| 117 |  | Software Requirement Specification (Final version) | 2d | 2011-11-22 08:00 A | 2011-11-25 14:30 A |  | 100% | finish no earlier than 2011-11-01 17:00 |
| 118 |  | Develop interfaces | 7d | 2011-12-01 08:00 A | 2011-12-16 15:45 A | 113 | 100% | start no earlier than 2011-11-29 08:00 |
| 119 |  | Upadate interfaces | 7d | 2011-12-31 13:30 A | 2012-01-17 17:00 A | 118 | 100% | finish no earlier than 2012-01-17 17:00 |
| 120 |  | Update Plan | 1d | 2012-01-24 08:00 A | 2012-01-26 11:00 A | 103, 104 | 100% |  |
| 121 | 1.5 | **Architect Design Analysis** | 60.75d | 2011-11-04 08:00 A | 2012-02-11 14:00 A | 76 | 100% |  |
| 122 | 1.5.1 | **Develop architecture driver document (ADD)** | 46.5d | 2011-11-04 08:00 A | 2012-01-19 16:00 A |  | 100% |  |
| 123 |  | Discover architecture drivers | 10d | 2011-11-04 08:00 A | 2011-11-26 14:00 A |  | 100% |  |
| 124 |  | Document ADD(Draft version) | 10d | 2011-11-26 08:00 A | 2011-12-21 13:30 A | 123 | 100% |  |
| 125 |  | Review | 3d | 2011-12-21 08:00 A | 2011-12-28 13:30 A | 124 | 100% |  |
| 126 |  | Document ADD(Final version) | 10d | 2011-12-28 08:00 A | 2012-01-19 16:00 A | 125 | 100% |  |
| 127 | 1.5.2 | **Develop architecture design** | 14d | 2012-01-20 08:00 A | 2012-02-11 14:00 A |  | 100% |  |
| 128 |  | Research about new pattern | 2d | 2012-01-20 08:00 A | 2012-01-25 13:30 A | 122 | 100% | finish no earlier than 2011-11-13 17:00 |
| 129 |  | Document AD (Draft version) | 5d | 2012-01-25 08:00 A | 2012-02-04 14:00 A | 128 | 100% |  |
| 130 |  | Review | 1d | 2012-02-04 08:00 A | 2012-02-08 13:30 A | 129 | 100% | finish no earlier than 2011-11-20 17:00 |
| 131 |  | Document AD (Final version) | 2d | 2012-02-08 08:00 A | 2012-02-11 14:00 A | 130 | 100% | finish no earlier than 2011-12-31 17:00 |
| 132 |  | Design Database | 7d | 2012-02-11 08:00 A | 2012-02-29 13:30 A | 121 | 100% |  |
| 133 |  | Update Plan | 1d? | 2012-02-11 08:00 A | 2012-02-15 13:30 A | 121, 120 | 100% |  |
| 134 | 1.8 | **Testing** | 25.94d | 2012-01-24 08:00 A | 2012-03-03 09:30 A | 28 | 100% |  |
| 135 | 1.8.1 | **Design test case** | 25.94d | 2012-01-24 08:00 A | 2012-03-03 09:30 A |  | 100% |  |
| 136 |  | Acceptance test case | 10d | 2012-01-24 08:00 A | 2012-02-15 15:30 A | 28 | 100% |  |
| 137 |  | System test case | 7d | 2012-02-15 08:00 A | 2012-03-03 09:30 A | 121, 136 | 100% |  |
| 138 | 1.9 | **Training Code** | 17.81d | 2011-11-03 15:30 A | 2011-12-02 17:00 A | 70 | 100% |  |
| 139 |  | ID generate | 7d | 2011-11-03 15:30 A | 2011-12-02 17:00 A |  | 100% | finish no earlier than 2011-12-02 17:00 |
| 140 |  | Update use case in SRS | 1d | 2011-12-03 08:00 A | 2011-12-03 17:00 A | 113, 139 | 100% |  |

| ID | WBS | Task | Duration | Start | Finish | Predecessors | Complete | Constraint |
| --- | --- | --- | --- | --- | --- | --- | --- | --- |
| 141 | 1.11 | **Manage Catalog** | 59.25d | 2011-12-03 08:00 A | 2012-03-09 17:00 A | 138 | 100% |  |
| 142 |  | Programming: Manage Catalog | 40d | 2011-12-03 08:00 A | 2012-03-06 10:30 A | 139 | 100% |  |
| 143 |  | Test Manage Catalog | 2d | 2012-03-06 08:00 A | 2012-03-09 17:00 A | 142, 137 | 100% |  |
| 144 | 1.12 | **Increment 1: Detail Information Management** | 14.25d? | 2012-03-10 08:00 A | 2012-03-31 16:00 A | 141, 138, 132 | 100% |  |
| 145 | 1.12.1 | **Detail Information Management** | 7.25d | 2012-03-10 08:00 A | 2012-03-21 14:00 A |  | 100% |  |
| 146 |  | Design Detail Information Management | 2d | 2012-03-10 08:00 A | 2012-03-14 14:00 A | 143 | 100% | start no earlier than 2012-02-13 08:00 |
| 147 |  | Code Detail Information Management | 2d | 2012-03-14 08:00 A | 2012-03-20 10:00 A | 146 | 100% |  |
| 148 |  | Test Detail Information Management | 1d | 2012-03-20 08:00 A | 2012-03-21 14:00 A | 147 | 100% |  |
| 149 | 1.12.2 | **Employee Code Setting** | 2.38d | 2012-03-21 14:00 A | 2012-03-24 15:00 A |  | 100% |  |
| 150 |  | Design Employee Code Setting | 0.13d | 2012-03-21 14:00 A | 2012-03-21 15:02 A | 145 | 100% |  |
| 151 |  | Code Employee Code Setting | 1d | 2012-03-21 15:02 A | 2012-03-24 09:02 A | 147, 150 | 100% |  |
| 152 |  | Test Employee Code Setting | 0.5d | 2012-03-24 08:00 A | 2012-03-24 15:00 A | 151 | 100% |  |
| 153 | 1.12.3 | **Column Setting** | 2.38d? | 2012-03-23 10:00 A | 2012-03-27 11:00 A |  | 100% |  |
| 154 |  | Design Column Setting | 0.13d? | 2012-03-23 10:00 A | 2012-03-23 13:02 A | 149SS+1d | 100% |  |
| 155 |  | Code Column Setting | 1d? | 2012-03-23 13:00 A | 2012-03-24 15:00 A | 154 | 100% |  |
| 156 |  | Test Column Setting | 0.5d? | 2012-03-24 15:00 A | 2012-03-27 11:00 A | 155 | 100% |  |
| 157 | 1.12.4 | **Certificate Management** | 2.62d | 2012-03-24 10:00 A | 2012-03-28 15:00 A |  | 100% |  |
| 158 |  | Design Certificate Management | 0.13d | 2012-03-24 10:00 A | 2012-03-24 13:02 A | 153SS+1d | 100% |  |
| 159 |  | Code Certificate Management | 1d | 2012-03-24 15:00 A | 2012-03-28 09:00 A | 155, 158 | 100% |  |
| 160 |  | Test Certificate Management | 0.5d | 2012-03-28 09:00 A | 2012-03-28 15:00 A | 159 | 100% |  |
| 161 | 1.12.5 | **Supported People Management** | 2.38d? | 2012-03-21 14:00 A | 2012-03-24 15:00 A |  | 100% |  |
| 162 |  | Design Supported People Management | 0.13d? | 2012-03-21 14:00 A | 2012-03-21 15:02 A | 145 | 100% |  |
| 163 |  | Code Supported People Management | 1d? | 2012-03-21 15:00 A | 2012-03-24 09:00 A | 162 | 100% |  |
| 164 |  | Test Supported People Management | 0.5d? | 2012-03-24 09:00 A | 2012-03-24 15:00 A | 163 | 100% |  |
| 165 | 1.12.6 | **Family Relationship Management** | 4.12d? | 2012-03-21 14:00 A | 2012-03-28 09:00 A |  | 100% |  |
| 166 |  | Design Family Relationship Management | 0.13d | 2012-03-21 14:00 A | 2012-03-21 15:02 A | 145 | 100% |  |
| 167 |  | Code Family Relationship Management | 2d | 2012-03-21 15:00 A | 2012-03-27 11:00 A | 166 | 100% |  |
| 168 |  | Test Family Relationship Management | 0.5d? | 2012-03-27 13:00 A | 2012-03-28 09:00 A | 167 | 100% |  |
| 169 | 1.12.7 | **Staff History** | 2.38d? | 2012-03-24 15:00 A | 2012-03-28 16:00 A |  | 100% |  |
| 170 |  | Design Staff History | 0.13d? | 2012-03-24 15:00 A | 2012-03-27 08:02 A | 164 | 100% |  |
| 171 |  | Code Staff History | 1d? | 2012-03-27 08:00 A | 2012-03-28 10:00 A | 170 | 100% |  |
| 172 |  | Test Staff History | 0.5d? | 2012-03-28 10:00 A | 2012-03-28 16:00 A | 171 | 100% |  |
| 173 |  | Integrate | 0.5d | 2012-03-30 08:00 A | 2012-03-30 14:00 A | 145, 149, 153, 157, 161, 165, 169 | 100% |  |
| 174 |  | Testing | 1d | 2012-03-30 14:00 A | 2012-03-31 16:00 A | 173 | 100% |  |
| 175 | 1.13 | **Increment 2: Training Management** | 13.62d? | 2012-03-24 10:00 A | 2012-04-14 11:00 A | 145, 140 | 100% |  |
| 176 | 1.13.1 | **Reward Management** | 2.38d? | 2012-03-24 10:00 A | 2012-03-28 11:00 A |  | 100% |  |
| 177 |  | Design Reward Management | 0.13d? | 2012-03-24 10:00 A | 2012-03-24 13:02 A | 145FS+2d | 100% |  |
| 178 |  | Code Reward Management | 1d? | 2012-03-24 13:00 A | 2012-03-27 15:00 A | 177 | 100% |  |
| 179 |  | Test Reward Management | 0.5d? | 2012-03-27 15:00 A | 2012-03-28 11:00 A | 178 | 100% |  |
| 180 | 1.13.2 | **Staff Internship Management** | 2.38d? | 2012-03-24 10:00 A | 2012-03-28 11:00 A |  | 100% |  |
| 181 |  | Design Staff Internship Management | 0.13d? | 2012-03-24 10:00 A | 2012-03-24 13:02 A | 145FS+2d | 100% |  |
| 182 |  | Code Staff Internship Management | 1d? | 2012-03-24 13:00 A | 2012-03-27 15:00 A | 181 | 100% |  |
| 183 |  | Test Staff Internship Management | 0.5d? | 2012-03-27 15:00 A | 2012-03-28 11:00 A | 182 | 100% |  |
| 184 | 1.13.3 | **Training Result Management** | 2.38d? | 2012-03-24 10:00 A | 2012-03-28 11:00 A |  | 100% |  |
| 185 |  | Design Training Result Management | 0.13d? | 2012-03-24 10:00 A | 2012-03-24 13:02 A | 145FS+2d | 100% |  |
| 186 |  | Code Training Result Management | 1d? | 2012-03-24 13:00 A | 2012-03-27 15:00 A | 185 | 100% |  |
| 187 |  | Test Training Result Management | 0.5d? | 2012-03-27 15:00 A | 2012-03-28 11:00 A | 186 | 100% |  |
| 188 | 1.13.4 | **Facilitate Management** | 2.38d? | 2012-03-24 13:02 A | 2012-03-28 14:02 A |  | 100% |  |
| 189 |  | Design Facilitate Management | 0.12d? | 2012-03-24 13:02 A | 2012-03-24 14:02 A | 158 | 100% |  |
| 190 |  | Code Facilitate Management | 1d? | 2012-03-24 14:02 A | 2012-03-28 08:02 A | 189 | 100% |  |
| 191 |  | Test Facilitate Management | 0.5d? | 2012-03-28 08:02 A | 2012-03-28 14:02 A | 190 | 100% |  |
| 192 | 1.13.5 | **Union Management** | 2.38d? | 2012-04-03 08:00 A | 2012-04-06 09:00 A |  | 100% |  |
| 193 |  | Design Union Management | 0.13d? | 2012-04-03 08:00 A | 2012-04-03 09:02 A | 144 | 100% |  |
| 194 |  | Code Union Management | 1d? | 2012-04-03 09:00 A | 2012-04-04 11:00 A | 193 | 100% |  |
| 195 |  | Test Union Management | 0.5d? | 2012-04-04 13:00 A | 2012-04-06 09:00 A | 194 | 100% |  |
| 196 | 1.13.6 | **Task NoteBook Management** | 2.38d? | 2012-04-03 08:00 A | 2012-04-06 09:00 A |  | 100% |  |
| 197 |  | Design Task Note Book Management | 0.13d? | 2012-04-03 08:00 A | 2012-04-03 09:02 A | 144 | 100% |  |
| 198 |  | Code Task Note Book Management | 1d? | 2012-04-03 09:00 A | 2012-04-04 11:00 A | 197 | 100% |  |
| 199 |  | Test Task Note Book Management | 0.5d? | 2012-04-04 13:00 A | 2012-04-06 09:00 A | 198 | 100% |  |
| 200 | 1.13.7 | **Training Course Management** | 2.38d | 2012-04-06 09:00 A | 2012-04-10 10:00 A |  | 100% |  |
| 201 |  | Design Training Course Management | 0.13d | 2012-04-06 09:00 A | 2012-04-06 10:02 A | 196 | 100% | start no earlier than 2012-02-28 08:00 |
| 202 |  | Code Training Course Management | 1d | 2012-04-06 10:00 A | 2012-04-07 14:00 A | 201 | 100% |  |
| 203 |  | Test Training Course Management | 0.5d | 2012-04-07 14:00 A | 2012-04-10 10:00 A | 202 | 100% |  |
| 204 | 1.13.8 | **Internal Training Management** | 2.38d? | 2012-04-03 14:00 A | 2012-04-06 15:00 A |  | 100% |  |
| 205 |  | Design Internal Training Management | 0.13d? | 2012-04-03 14:00 A | 2012-04-03 15:02 A | 144FS+1d | 100% |  |
| 206 |  | Code Internal Training Management | 1d? | 2012-04-03 15:00 A | 2012-04-06 09:00 A | 205 | 100% |  |
| 207 |  | Test Internal Training Management | 0.5d? | 2012-04-06 09:00 A | 2012-04-06 15:00 A | 206 | 100% |  |
| 208 | 1.13.9 | **Emulation Management** | 2.38d? | 2012-04-06 15:00 A | 2012-04-10 16:00 A |  | 100% |  |
| 209 |  | Design Emulation Management | 0.13d? | 2012-04-06 15:00 A | 2012-04-07 08:02 A | 204 | 100% |  |
| 210 |  | Code Emulation Management | 1d? | 2012-04-07 08:00 A | 2012-04-10 10:00 A | 209 | 100% |  |

| ID | WBS | Task | Duration | Start | Finish | Predecessors | Complete |
| --- | --- | --- | --- | --- | --- | --- | --- |
| 211 |  | Test Emulation Management | 0.5d? | 2012-04-10 10:00 A | 2012-04-10 16:00 A | 210 | 100% |
| 212 | 1.13.10 | **Lecture Probation Management** | 2.38d? | 2012-04-10 10:00 A | 2012-04-13 11:00 A |  | 100% |
| 213 |  | Design Lecture Probation Management | 0.13d? | 2012-04-10 10:00 A | 2012-04-10 13:02 A | 200 | 100% |
| 214 |  | Code Lecture Probation Management | 1d? | 2012-04-10 13:00 A | 2012-04-11 15:00 A | 213 | 100% |
| 215 |  | Test Lecture Probation Management | 0.5d? | 2012-04-11 15:00 A | 2012-04-13 11:00 A | 214 | 100% |
| 216 | 1.13.11 | **Mobilization Management** | 2.38d? | 2012-03-28 13:00 A | 2012-03-31 14:00 A |  | 100% |
| 217 |  | Design Mobilization Management | 0.13d? | 2012-03-28 13:00 A | 2012-03-28 14:02 A | 180 | 100% |
| 218 |  | Code Mobilization Management | 1d? | 2012-03-28 14:00 A | 2012-03-30 16:00 A | 217 | 100% |
| 219 |  | Test Mobilization Management | 0.5d? | 2012-03-31 08:00 A | 2012-03-31 14:00 A | 218 | 100% |
| 220 | 1.13.12 | **Penalty Management** | 2.38d? | 2012-03-30 09:00 A | 2012-04-03 10:00 A |  | 100% |
| 221 |  | Design Penalty Management | 0.13d? | 2012-03-30 09:00 A | 2012-03-30 10:02 A | 176FS+1d | 100% |
| 222 |  | Code Penalty Management | 1d? | 2012-03-30 10:00 A | 2012-03-31 14:00 A | 221 | 100% |
| 223 |  | Test Penalty Management | 0.5d? | 2012-03-31 14:00 A | 2012-04-03 10:00 A | 222 | 100% |
| 224 | 1.13.13 | **Lecture Position Management** | 2.38d? | 2012-04-03 10:00 A | 2012-04-06 11:00 A | 220 | 100% |
| 225 |  | Design Lecture Position Management | 0.13d? | 2012-04-03 10:00 A | 2012-04-03 13:02 A | 220 | 100% |
| 226 |  | Code Lecture Position Management | 1d? | 2012-04-03 13:00 A | 2012-04-04 15:00 A | 225 | 100% |
| 227 |  | Test Lecture Position Management | 0.5d? | 2012-04-04 15:00 A | 2012-04-06 11:00 A | 226 | 100% |
| 228 | 1.13.14 | **Communist Party Management** | 2.38d? | 2012-04-07 13:00 A | 2012-04-11 14:00 A |  | 100% |
| 229 |  | Design Communist Party Management | 0.13d? | 2012-04-07 13:00 A | 2012-04-07 14:02 A | 224FS+1d | 100% |
| 230 |  | Code Communist Party Management | 1d? | 2012-04-07 14:00 A | 2012-04-10 16:00 A | 229 | 100% |
| 231 |  | Test Communist Party Management | 0.5d? | 2012-04-11 08:00 A | 2012-04-11 14:00 A | 230 | 100% |
| 232 | 1.13.15 | **Trade Union Management** | 2.38d? | 2012-04-06 09:00 A | 2012-04-10 10:00 A | 192 | 100% |
| 233 |  | Design Trade Union Management | 0.13d? | 2012-04-06 09:00 A | 2012-04-06 10:02 A | 192 | 100% |
| 234 |  | Code Trade Union Management | 1d? | 2012-04-06 10:00 A | 2012-04-07 14:00 A | 233 | 100% |
| 235 |  | Test Trade Union Management | 0.5d? | 2012-04-07 14:00 A | 2012-04-10 10:00 A | 234 | 100% |
| 236 | 1.13.16 | **Syllabus Management** | 2.38d? | 2012-03-31 14:00 A | 2012-04-04 15:00 A |  | 100% |
| 237 |  | Design Syllabus Management | 0.13d? | 2012-03-31 14:00 A | 2012-03-31 15:02 A | 216 | 100% |
| 238 |  | Code Syllabus Management | 1d? | 2012-03-31 15:00 A | 2012-04-04 09:00 A | 237 | 100% |
| 239 |  | Test Syllabus Management | 0.5d? | 2012-04-04 09:00 A | 2012-04-04 15:00 A | 238 | 100% |
| 240 | 1.13.17 | **Science Research Management** | 2.38d? | 2012-04-04 15:00 A | 2012-04-07 16:00 A | 236 | 100% |
| 241 |  | Design Science Research Management | 0.13d? | 2012-04-04 15:00 A | 2012-04-06 08:02 A | 236 | 100% |
| 242 |  | Code Science Research Management | 1d? | 2012-04-06 08:00 A | 2012-04-07 10:00 A | 241 | 100% |
| 243 |  | Test Science Research Management | 0.5d? | 2012-04-07 10:00 A | 2012-04-07 16:00 A | 242 | 100% |
| 244 | 1.13.18 | **Other Management** | 2.38d? | 2012-03-28 13:00 A | 2012-03-31 14:00 A |  | 100% |
| 245 |  | Design Other Management | 0.13d? | 2012-03-28 13:00 A | 2012-03-28 14:02 A | 184 | 100% |
| 246 |  | Code Other Management | 1d? | 2012-03-28 14:00 A | 2012-03-30 16:00 A | 245 | 100% |
| 247 |  | Test Other Management | 0.5d? | 2012-03-31 08:00 A | 2012-03-31 14:00 A | 246 | 100% |
| 248 | 1.13.19 | **Work Management** | 2.38d? | 2012-03-31 14:00 A | 2012-04-04 15:00 A |  | 100% |
| 249 |  | Design Work Management | 0.13d? | 2012-03-31 14:00 A | 2012-03-31 15:02 A | 244 | 100% |
| 250 |  | Code Work Management | 1d? | 2012-03-31 15:00 A | 2012-04-04 09:00 A | 249 | 100% |
| 251 |  | Test Work Management | 0.5d? | 2012-04-04 09:00 A | 2012-04-04 15:00 A | 250 | 100% |
| 252 | 1.13.20 | **Master Thesis Guideline Management** | 2.38d? | 2012-04-04 15:00 A | 2012-04-07 16:00 A |  | 100% |
| 253 |  | Design Master Thesis Guideline Management | 0.13d? | 2012-04-04 15:00 A | 2012-04-06 08:02 A | 248 | 100% |
| 254 |  | Code Master Thesis Guideline Management | 1d? | 2012-04-06 08:00 A | 2012-04-07 10:00 A | 253 | 100% |
| 255 |  | Test Master Thesis Guideline Management | 0.5d? | 2012-04-07 10:00 A | 2012-04-07 16:00 A | 254 | 100% |
| 256 | 1.13.21 | **Article Management** | 2.38d? | 2012-04-10 08:00 A | 2012-04-13 09:00 A |  | 100% |
| 257 |  | Design Article Management | 0.13d? | 2012-04-10 08:00 A | 2012-04-10 09:02 A | 252 | 100% |
| 258 |  | Code Article Management | 1d? | 2012-04-10 09:00 A | 2012-04-11 11:00 A | 257 | 100% |
| 259 |  | Test Article Management | 0.5d? | 2012-04-11 13:00 A | 2012-04-13 09:00 A | 258 | 100% |
| 260 | 1.13.22 | **Subject Management** | 2.38d? | 2012-03-28 14:02 A | 2012-03-31 15:02 A |  | 100% |
| 261 |  | Design Subject Management | 0.13d? | 2012-03-28 14:02 A | 2012-03-28 15:04 A | 188 | 100% |
| 262 |  | Code Subject Management | 1d? | 2012-03-28 15:02 A | 2012-03-31 09:02 A | 261 | 100% |
| 263 |  | Test Subject Management | 0.5d? | 2012-03-31 09:02 A | 2012-03-31 15:02 A | 262 | 100% |
| 264 | 1.13.23 | **Income Management** | 3.25d? | 2012-03-31 15:02 A | 2012-04-06 13:02 A |  | 100% |
| 265 |  | Design Income Management | 0.5d? | 2012-03-31 15:02 A | 2012-04-03 13:02 A | 260 | 100% |
| 266 |  | Code Income Management | 1d? | 2012-04-03 13:02 A | 2012-04-04 15:02 A | 265 | 100% |
| 267 |  | Test Income Management | 0.5d? | 2012-04-04 15:02 A | 2012-04-06 13:02 A | 266 | 100% |
| 268 | 1.13.24 | **Salary Coefficient Management** | 2.5d? | 2012-04-06 13:02 A | 2012-04-10 15:02 A |  | 100% |
| 269 |  | Design Salary Coefficient Management | 0.25d? | 2012-04-06 13:02 A | 2012-04-06 15:02 A | 264 | 100% |
| 270 |  | Code Salary Coefficient Management | 1d? | 2012-04-06 15:02 A | 2012-04-10 09:02 A | 269 | 100% |
| 271 |  | Test Salary Coefficient Management | 0.5d? | 2012-04-10 09:02 A | 2012-04-10 15:02 A | 270 | 100% |
| 272 |  | Integrate | 0.5d? | 2012-04-13 09:00 A | 2012-04-13 15:00 A | 165, 188, 208, 228, 256, 264, 268 | 100% |
| 273 |  | Testing | 0.5d? | 2012-04-13 15:00 A | 2012-04-14 11:00 A | 272 | 100% |
| 274 | 1.14 | **Increment 3: Report** | 10.5d | 2012-04-14 13:00 A | 2012-05-01 15:00 A | 144 | 100% |
| 275 | 1.14.1 | **Report Management** | 9d | 2012-04-14 13:00 A | 2012-04-28 11:00 A |  | 100% |
| 276 |  | Design Report | 1d | 2012-04-14 13:00 A | 2012-04-17 15:00 A | 175 | 100% |
| 277 |  | Code Report | 5d | 2012-04-17 15:00 A | 2012-04-28 11:00 A | 259, 273, 276 | 100% |
| 278 |  | Test Report | 1d | 2012-04-24 15:00 A | 2012-04-27 09:00 A | 277 | 100% |
| 279 |  | Integrate | 1d | 2012-04-27 09:00 A | 2012-04-28 11:00 A | 278 | 100% |
| 280 |  | Test | 1d | 2012-04-28 13:00 A | 2012-05-01 15:00 A | 279 | 100% |

| ID | Task | Duration | Start | Finish | Predecessors | Complete | Total float | Constraint |
| --- | --- | --- | --- | --- | --- | --- | --- | --- |
| 281 | Conduct System test | 2d | 2012-05-01 15:00 A | 2012-05-05 11:00 A | 274 | 100% |  |  |
| 282 | Conduct Acceptance test | 2d | 2012-05-05 13:00 A | 2012-05-11 09:00 | 281 | 95% | 0d |  |
| 283 | Translate Concept Doc | 26d | 2012-01-21 09:00 A | 2012-03-22 11:00 A | 87 | 100% |  |  |
| 284 | Reflection | 2d | 2012-05-11 09:00 | 2012-05-15 15:00 | 282, 283, 133 |  | 0d | finish no earlier than 2012-03-07 17:00 |
| 285 | Deliver to customer | 3d | 2012-05-15 15:00 | 2012-05-22 15:00 | 284 |  | 0d |  |
| 286 | Maintaining | 1d | 2012-05-22 15:00 | 2012-05-25 09:00 | 285 |  | 0d |  |

## Version 2 (data date 2012-03-09, saved 2012-05-20)

Note of the change: Update Complete Project

Last finish 2012-05-25 → 2012-05-23 (-2d). Complete tasks 209 → 212.

Changed:

| ID | Task | Start | Finish | Duration | Complete | Total float |
| --- | --- | --- | --- | --- | --- | --- |
| 1 | **Human Resource Management** |  | 2012-05-25 09:00 → 2012-05-23 17:00 (-2d) | 147.06d? → 145.81d? |  |  |
| 282 | Conduct Acceptance test |  | 2012-05-11 09:00 → 2012-05-15 15:00 (+4d) | 2d → 4d | 95% → 48% | 0d → 5.62d |
| 284 | Reflection | 2012-05-11 09:00 → 2012-05-15 08:00 A (+4d) | 2012-05-15 15:00 → 2012-05-19 11:00 A (+4d) |  | 0% → 100% | 0d → none |
| 285 | Deliver to customer | 2012-05-15 15:00 → 2012-05-19 08:00 A (+4d) | 2012-05-22 15:00 → 2012-05-20 17:00 A (-2d) | 3d → 0.38d | 0% → 100% | 0d → none |
| 286 | Maintaining | 2012-05-22 15:00 → 2012-05-22 08:00 A | 2012-05-25 09:00 → 2012-05-23 17:00 A (-2d) | 1d → 1.5d | 0% → 100% | 0d → none |
